# Casos Uso

Schedule from MS Project, 2010-05-06 to 2010-09-01, costs in $.
Hexacta

## Calendars

- Standard: Mon-Fri 08:00-12:00, 13:00-17:00; Sat-Sun off.

## Resources

| Resource | Rate |
| --- | --- |
| Programador Jr 1 | 18.75 |
| Programador Jr 2 | 18.75 |
| Programador Sr 1 | 31.25 |
| Programador Sr 2 | 31.25 |
| Tester | 18.75 |
| IT 1 | 25 |
| Arquitecto | 43.75 |
| Prog SSr 1 |  |
| Prog SSr 2 |  |

## Schedule

| ID | WBS | Task | Duration | Start | Finish | Predecessors | Total slack | Free slack | Constraint | Resources | Work | Cost |
| --- | --- | --- | --- | --- | --- | --- | --- | --- | --- | --- | --- | --- |
| 1 | 1 | Integracion con el Sistema STARS (Lectura Datos) | 4d | 2010-06-02 | 2010-06-07 | 200 | 18d | 0d |  | Programador Sr 1; Programador Sr 2 | 64h | 2,000 |
| 2 | 2 | Modulo Seguridad que Oculta Info Llamado | 1.5d | 2010-06-08 | 2010-06-09 | 1 | 36.5d |  |  | Programador Sr 2; Programador Sr 1 | 24h | 750 |
| 3 | 3 | **(GEN01) Identificacion y Autenticacion** | 3d | 2010-06-08 | 2010-06-10 | 1 | 54d | 0d |  |  | 40h |  |
| 4 | 3.1 | Autenticacion | 2d | 2010-06-08 | 2010-06-09 |  | 29d |  |  | Prog SSr 1 | 16h |  |
| 5 | 3.2 | Interfaz Inicio Sesion | 3d | 2010-06-08 | 2010-06-10 |  | 28d |  |  | Prog SSr 2 | 24h |  |
| 6 | 4 | **(GEN02) Gestion General de Registros** | 6.5d | 2010-06-09 | 2010-06-17 | 1 | 54d |  |  |  | 48h | 450 |
| 7 | 4.1 | ABM Registro | 1d | 2010-06-10 | 2010-06-14 |  | 57.5d |  | finish no earlier than 2010-06-10 | Programador Jr 1 | 8h | 150 |
| 8 | 4.2 | Buscar registro | 1d | 2010-06-11 | 2010-06-11 |  | 58d |  | start no earlier than 2010-06-09 | Programador Jr 1 | 8h | 150 |
| 9 | 4.3 | Copiar registro | 1d | 2010-06-09 | 2010-06-10 |  | 59.5d |  | start no earlier than 2010-06-09 | Programador Jr 1 | 8h | 150 |
| 10 | 4.4 | Interfaz ABM Registro | 3d | 2010-06-15 | 2010-06-17 |  | 30d |  |  | Prog SSr 2 | 24h |  |
| 11 | 5 | **(USR01) Determinacion del servicio de atencion** | 3d | 2010-07-29 | 2010-08-02 | 74, 31 | 15d | 0d |  |  | 32h | 600 |
| 12 | 5.1 | Capturar la Comunicación???? | 1d | 2010-07-29 | 2010-07-29 |  | 17d |  | start no earlier than 2010-07-28 | Programador Jr 1 | 8h | 150 |
| 13 | 5.2 | Determinar el tipo de servicio | 1d | 2010-07-30 | 2010-07-30 |  | 16d |  | start no earlier than 2010-07-30 | Programador Jr 1 | 8h | 150 |
| 14 | 5.3 | Lista de Espera | 1d | 2010-08-02 | 2010-08-02 |  | 15d |  | start no earlier than 2010-08-02 | Programador Jr 1 | 8h | 150 |
| 15 | 5.4 | Determinar conjunto de operadores adecuados al tipo de solicitud | 1d | 2010-07-29 | 2010-07-29 |  | 17d |  | start no earlier than 2010-07-28 | Programador Jr 2 | 8h | 150 |
| 16 | 6 | **(USR02) Agenda** | 22d | 2010-06-23 | 2010-07-22 | 3, 71 | 27d | 0d |  |  | 88h | 750 |
| 17 | 6.1 | Selección de una agenda | 1d | 2010-07-02 | 2010-07-02 |  | 41d |  | start no earlier than 2010-07-02 | Programador Jr 1 | 8h | 150 |
| 18 | 6.2 | ABM citas sobre la agenda | 1d | 2010-06-30 | 2010-07-01 |  | 42.5d |  | start no earlier than 2010-06-30 | Programador Jr 1 | 8h | 150 |
| 19 | 6.3 | Interfaz de la Agenda | 2d | 2010-06-24 | 2010-06-25 |  | 46d |  |  | Programador Jr 2 | 16h | 300 |
| 20 | 6.4 | Integracion con Stars - Llamada desde Agenda | 6d | 2010-07-14 | 2010-07-22 |  | 27d |  | start no earlier than 2010-07-14 | Prog SSr 1; Prog SSr 2 | 48h |  |
| 21 | 6.5 | Asignar pacientes a cita | 1d | 2010-06-23 | 2010-06-23 |  | 48d |  |  | Programador Jr 2 | 8h | 150 |
| 22 | 7 | (USR03) Rellamada | 2d | 2010-07-21 | 2010-07-22 | 31, 56 | 28d |  | start no earlier than 2010-07-21 | Prog SSr 2 | 16h |  |
| 23 | 8 | **(USR04) Consulta** | 5d | 2010-06-08 | 2010-06-14 | 1 | 23d | 0d |  |  | 48h | 300 |
| 24 | 8.1 | **Tratar Consulta** | 0.5d | 2010-06-08 | 2010-06-08 |  | 27.5d |  |  |  | 8h | 150 |
| 25 | 8.1.1 | Ajornar Consulta | 0.5d | 2010-06-08 | 2010-06-08 |  | 25.5d |  |  | Programador Jr 1 | 4h | 75 |
| 26 | 8.1.2 | Transferir consulta | 0.5d | 2010-06-08 | 2010-06-08 |  | 25.5d |  |  | Programador Jr 2 | 4h | 75 |
| 27 | 8.2 | Modulo Envio de Correo | 2d | 2010-06-10 | 2010-06-11 |  | 21d |  |  | Prog SSr 1 | 16h |  |
| 28 | 8.3 | Modulo Envio SMS | 2d | 2010-06-11 | 2010-06-14 |  | 20d |  |  | Prog SSr 2 | 16h |  |
| 29 | 8.4 | Inclusion en Campaña de Seguimiento | 1d | 2010-06-08 | 2010-06-09 |  | 24.5d |  |  | Programador Jr 1 | 8h | 150 |
| 30 | 9 | (USR05) Consejo Salud | 2d | 2010-07-19 | 2010-07-20 | 61, 67 | 18.5d |  |  | Prog SSr 1 | 16h |  |

| ID | WBS | Task | Duration | Start | Finish | Predecessors | Total slack | Free slack | Constraint | Resources | Work | Cost |
| --- | --- | --- | --- | --- | --- | --- | --- | --- | --- | --- | --- | --- |
| 31 | 10 | **(USR06) Gestionar Consulta pendiente** | 1d | 2010-07-19 | 2010-07-19 | 23 | 24d | 1d |  |  | 8h |  |
| 32 | 10.1 | Priorizacion de la Lista de Consultas | 1d | 2010-07-19 | 2010-07-19 |  | 3.5d |  |  | Prog SSr 2 | 8h |  |
| 33 | 11 | **(USR07) Programacion de cita previa** | 2d | 2010-08-31 | 2010-09-01 | 67, 74 | 0d |  |  |  | 16h |  |
| 34 | 11.1 | Realizar Citación (Interface con Sistema de citación AP) | 2d | 2010-08-31 | 2010-09-01 |  | 0d |  |  | Prog SSr 1 | 16h |  |
| 35 | 12 | **(USR08) Gestiones sobre la TSI** | 7.5d | 2010-08-05 | 2010-08-16 | 74, 67, 23, 1 | -18.5d | 0d |  |  | 32h | 600 |
| 36 | 12.1 | Verificacion Documentacion Necesaria | 1d | 2010-08-05 | 2010-08-05 |  | -12d | 0d | start no earlier than 2010-06-29 | Programador Jr 1 | 8h | 150 |
| 37 | 12.2 | Enviar Gestion (Interface con sistema RCA) | 1d | 2010-08-11 | 2010-08-11 |  | -16d | 0d | start no earlier than 2010-08-11 | Programador Jr 1 | 8h | 150 |
| 38 | 12.3 | Cierre automatico de la consulta por paso de tiempo | 1d | 2010-08-10 | 2010-08-10 |  | -15d | 0d | start no earlier than 2010-08-10 | Programador Jr 1 | 8h | 150 |
| 39 | 12.4 | Guardar LOG gestion TSI????? | 1d | 2010-08-13 | 2010-08-16 |  | -18.5d | 0d |  | Programador Jr 1 | 8h | 150 |
| 40 | 13 | **(USR09) Servicio de traduccion** | 7.5d | 2010-06-29 | 2010-07-08 | 67 | 39d |  |  |  | 56h | 1,750 |
| 41 | 13.1 | Contactar Servicio Externo de Traduccion | 2d | 2010-07-05 | 2010-07-06 |  | 41d |  | start no earlier than 2010-07-05 | Programador Sr 2 | 16h | 500 |
| 42 | 13.2 | Enlace Comunicacion Multiconferencia | 3d | 2010-06-29 | 2010-07-02 |  | 43.5d |  | start no earlier than 2010-06-29 | Programador Sr 2 | 24h | 750 |
| 43 | 13.3 | Modulo monitorización de servicio | 2d | 2010-07-07 | 2010-07-08 |  | 39d |  | start no earlier than 2010-07-07 | Programador Sr 2 | 16h | 500 |
| 44 | 14 | **(USR10) Informacion Sanitaria General** | 1d | 2010-08-05 | 2010-08-05 | 67, 74, 170 | 19d |  |  |  | 8h | 150 |
| 45 | 14.1 | Guardar Informacion Ciudadano | 1d | 2010-08-05 | 2010-08-05 |  | 19d |  |  | Programador Jr 2 | 8h | 150 |
| 46 | 15 | **(USR11) Seguimiento de Patologias** | 7d | 2010-07-23 | 2010-08-02 | 16, 31 | 22d |  |  |  | 40h | 750 |
| 47 | 15.1 | Buscar Campañas Abiertas | 1d | 2010-07-28 | 2010-07-28 |  | 25d |  | start no earlier than 2010-07-28 | Programador Jr 2 | 8h | 150 |
| 48 | 15.2 | **Gestionar Seguimiento** | 7d | 2010-07-23 | 2010-08-02 |  | 22d |  |  |  | 24h | 450 |
| 49 | 15.2.1 | Visualizar Historial Pacientes | 2d | 2010-07-23 | 2010-07-26 |  | 27d |  | start no earlier than 2010-07-19 | Programador Jr 2 | 16h | 300 |
| 50 | 15.2.2 | Llamada al Paciente | 1d | 2010-08-02 | 2010-08-02 |  | 22d |  | start no earlier than 2010-08-02 | Programador Jr 2 | 8h | 150 |
| 51 | 15.3 | Desligar paciente de campaña | 1d | 2010-07-27 | 2010-07-27 |  | 26d |  | start no earlier than 2010-07-27 | Programador Jr 2 | 8h | 150 |
| 52 | 16 | **(USR12) Encuestas** | 32d | 2010-06-07 | 2010-07-20 | 130 | 31d |  |  |  | 48h | 600 |
| 53 | 16.1 | Interfaz de Encuestas | 3d | 2010-06-24 | 2010-06-29 |  | 46.5d |  | start no earlier than 2010-06-07 | Programador Jr 1 | 24h | 450 |
| 54 | 16.2 | Contacto con Encuestado | 2d | 2010-06-07 | 2010-07-20 |  | 10d |  |  | Prog SSr 2 | 16h |  |
| 55 | 16.3 | ABM Formulario De Encuesta | 1d | 2010-06-07 | 2010-06-07 |  | 62d |  |  | Programador Jr 2 | 8h | 150 |

| ID | WBS | Task | Duration | Start | Finish | Predecessors | Total slack | Free slack | Constraint | Resources | Work | Cost |
| --- | --- | --- | --- | --- | --- | --- | --- | --- | --- | --- | --- | --- |
| 56 | 17 | **(USR13) Buscar Consultas** | 6d | 2010-06-28 | 2010-07-05 | 71 | 40d | 11d |  |  | 40h | 750 |
| 57 | 17.1 | **Operativo de Busqueda** | 6d | 2010-06-28 | 2010-07-05 |  | 40d |  |  |  | 40h | 750 |
| 58 | 17.1.1 | Buscar según distintos criterios | 3d | 2010-06-28 | 2010-06-30 |  | 43d |  |  | Programador Jr 2 | 24h | 450 |
| 59 | 17.1.2 | Filtrar resultados de la busqueda según permisos del usuario | 1d | 2010-07-01 | 2010-07-01 |  | 42d |  |  | Programador Jr 2 | 8h | 150 |
| 60 | 17.1.3 | Acotar resultados si los mismos sobrepasan el parametro configurable "n" | 1d | 2010-07-05 | 2010-07-05 |  | 40d |  |  | Programador Jr 2 | 8h | 150 |
| 61 | 18 | **(USR14) Hacer Uso de Documentos** | 9d | 2010-07-05 | 2010-07-16 | 23 | 11d | 0d |  |  | 72h | 1,350 |
| 62 | 18.1 | Creación y uso de Guias Interrogatorio | 2d | 2010-07-05 | 2010-07-07 |  | 18d |  |  | Programador Jr 1 | 16h | 300 |
| 63 | 18.2 | Creación y uso Fichas Tematicas | 2d | 2010-07-07 | 2010-07-09 |  | 16d |  |  | Programador Jr 1 | 16h | 300 |
| 64 | 18.3 | Creación y uso de Recursos | 2d | 2010-07-09 | 2010-07-13 |  | 14d |  |  | Programador Jr 1 | 16h | 300 |
| 65 | 18.4 | Búsqueda y selección de documentos | 2d | 2010-07-13 | 2010-07-15 |  | 12d |  |  | Programador Jr 1 | 16h | 300 |
| 66 | 18.5 | Apertura documentos | 1d | 2010-07-15 | 2010-07-16 |  | 11d |  |  | Programador Jr 1 | 8h | 150 |
| 67 | 19 | **(USR15) Cerrar consulta y dar respuesta al ciudadano** | 8.5d | 2010-06-15 | 2010-06-25 | 23 | 16.5d | 2d |  |  | 32h | 400 |
| 68 | 19.1 | Clasificar Finalizacion de Consulta | 2d | 2010-06-15 | 2010-06-16 |  | 21d |  |  | Prog SSr 1 | 16h |  |
| 69 | 19.2 | Adición de motivo de cierre a la consulta | 1d | 2010-06-15 | 2010-06-16 |  | 21.5d |  |  | Programador Jr 2 | 8h | 150 |
| 70 | 19.3 | Creación de clasificaciones ad-hoc | 1d | 2010-06-24 | 2010-06-25 |  | 14.5d |  | start no earlier than 2010-06-24 | Programador Sr 1 | 8h | 250 |
| 71 | 20 | **(USR16) Visualizar Consulta** | 4.5d | 2010-06-16 | 2010-06-22 | 23 | 46d | 0d |  |  | 32h | 600 |
| 72 | 20.1 | Mostrar datos generales de la consulta | 2d | 2010-06-21 | 2010-06-22 |  | 46d |  | start no earlier than 2010-06-21 | Programador Jr 2 | 16h | 300 |
| 73 | 20.2 | Mostrar datos según el documento elegido | 2d | 2010-06-16 | 2010-06-18 |  | 48.5d |  | start no earlier than 2010-06-16 | Programador Jr 2 | 16h | 300 |
| 74 | 21 | **(USR17) Crear/Transferir Consulta** | 4d | 2010-07-23 | 2010-07-28 | 23 | -7d | 0d |  |  | 32h |  |
| 75 | 21.1 | Crear Consulta | 2d | 2010-07-23 | 2010-07-26 |  | -7d | 0d | start no earlier than 2010-07-23 | Prog SSr 1 | 16h |  |
| 76 | 21.2 | Copiar consulta | 1d | 2010-07-27 | 2010-07-27 |  | -8d | 0d | start no earlier than 2010-07-27 | Prog SSr 1 | 8h |  |
| 77 | 21.3 | **Transferir Consulta** | 1d | 2010-07-28 | 2010-07-28 |  | -7d | 0d |  |  | 8h |  |
| 78 | 21.3.1 | Localizar a otro operador del mismo perfil | 1d | 2010-07-28 | 2010-07-28 |  | -9d | 0d | start no earlier than 2010-07-28 | Prog SSr 1 | 8h |  |
| 79 | 22 | **(ADM01) Mantenimiento del Entorno, clasif y prioridades** | 15.5d | 2010-06-02 | 2010-06-23 | 200 | 19.5d | 0d |  |  | 136h | 3,250 |
| 80 | 22.1 | Módulo de edición de parametros grales de la aplicación | 4d | 2010-06-11 | 2010-06-23 |  | 19.5d |  |  | Programador Sr 2 | 32h | 1,000 |
| 81 | 22.2 | Módulo edición listas de clasificaciones (Códigos internos) | 3d | 2010-06-10 | 2010-06-15 |  | 25.5d |  |  | Programador Sr 1 | 24h | 750 |

| ID | WBS | Task | Duration | Start | Finish | Predecessors | Total slack | Free slack | Constraint | Resources | Work | Cost |
| --- | --- | --- | --- | --- | --- | --- | --- | --- | --- | --- | --- | --- |
| 82 | 22.3 | **Módulo mantenimiento de la lista de espera** | 2d | 2010-06-04 | 2010-06-07 |  | 31d |  |  |  | 16h | 150 |
| 83 | 22.3.1 | ABM de la lista de espera | 1d | 2010-06-07 | 2010-06-07 |  | 31d |  |  | Programador Jr 1 | 8h | 150 |
| 84 | 22.3.2 | Módulo de gestión de prioridades sobre la lista de espera | 1d | 2010-06-04 | 2010-06-04 |  | 32d |  |  | Prog SSr 2 | 8h |  |
| 85 | 22.4 | **Módulo mantenimiento de lineas de servicio** | 2d | 2010-06-02 | 2010-06-03 |  | 33d |  |  |  | 16h | 300 |
| 86 | 22.4.1 | ABM lineas de servicio | 1d | 2010-06-02 | 2010-06-02 |  | 34d |  |  | Programador Jr 2 | 8h | 150 |
| 87 | 22.4.2 | ABM servicios para una linea seleccionada | 1d | 2010-06-03 | 2010-06-03 |  | 33d |  |  | Programador Jr 2 | 8h | 150 |
| 88 | 22.5 | **Módulo mantenimiento agendas** | 14.5d | 2010-06-02 | 2010-06-22 |  | 20.5d |  |  |  | 24h | 300 |
| 89 | 22.5.1 | Asignar operadores a agenda | 1d | 2010-06-04 | 2010-06-04 |  | 32d |  |  | Prog SSr 1 | 8h |  |
| 90 | 22.5.2 | ABM de usuarios de la agenda | 1d | 2010-06-21 | 2010-06-22 |  | 20.5d |  | start no earlier than 2010-06-21 | Programador Jr 1 | 8h | 150 |
| 91 | 22.5.3 | ABM citas de la agenda | 1d | 2010-06-02 | 2010-06-02 |  | 34d |  |  | Programador Jr 1 | 8h | 150 |
| 92 | 22.6 | **Módulo mantenimiento BBDD** | 2d | 2010-06-09 | 2010-06-11 |  | 27.5d |  |  |  | 24h | 750 |
| 93 | 22.6.1 | Módulo comprobación de formato de archivo | 1d | 2010-06-09 | 2010-06-10 |  | 28.5d |  |  | Programador Sr 1 | 8h | 250 |
| 94 | 22.6.2 | Módulo actualización de BBDD | 2d | 2010-06-09 | 2010-06-11 |  | 27.5d |  |  | Programador Sr 2 | 16h | 500 |
| 95 | 23 | **(ADM02) Extraccion de estadisticas y listados** | 16d | 2010-07-01 | 2010-07-22 | 79 | 24d | 0d |  |  | 56h | 1,250 |
| 96 | 23.1 | Listados De Administración | 2d | 2010-07-21 | 2010-07-22 |  | 24d |  |  | Prog SSr 1 | 16h |  |
| 97 | 23.2 | **Listados Comunes** | 5d | 2010-07-01 | 2010-07-07 |  | 35d |  |  |  | 40h | 1,250 |
| 98 | 23.2.1 | Detalle de estado de finalización consulta/acción | 1d | 2010-07-05 | 2010-07-05 |  | 16.5d |  | start no earlier than 2010-07-01 | Programador Sr 1 | 8h | 250 |
| 99 | 23.2.2 | Listado de clasificaciones | 1d | 2010-07-02 | 2010-07-02 |  | 17.5d |  | start no earlier than 2010-07-01 | Programador Sr 1 | 8h | 250 |
| 100 | 23.2.3 | Listados de incidencias en las comunicaciones | 1d | 2010-07-06 | 2010-07-06 |  | 15.5d |  | start no earlier than 2010-07-01 | Programador Sr 1 | 8h | 250 |
| 101 | 23.2.4 | Ratios por usuario | 1d | 2010-07-07 | 2010-07-07 |  | 14.5d |  | start no earlier than 2010-07-01 | Programador Sr 1 | 8h | 250 |
| 102 | 23.2.5 | Finales de servicio | 1d | 2010-07-01 | 2010-07-01 |  | 18.5d |  | start no earlier than 2010-07-01 | Programador Sr 1 | 8h | 250 |
| 103 | 24 | **(ADM03) Mantenimiento de documentos** | 15.5d | 2010-07-23 | 2010-08-13 | 111 | 12.5d | 0d |  |  | 48h | 1,500 |
| 104 | 24.1 | Creación y edición de documentos | 2d | 2010-08-06 | 2010-08-13 | 108, 109, 110 | 11.5d |  |  | Programador Sr 2 | 16h | 500 |
| 105 | 24.2 | Borrado de documentos | 1d | 2010-07-28 | 2010-08-03 |  | 10d |  |  | Programador Sr 2 | 8h | 250 |
| 106 | 24.3 | Clasificación de documentos | 1d | 2010-07-23 | 2010-07-23 |  | 26d |  |  | Programador Sr 2 | 8h | 250 |
| 107 | 24.4 | Búsqueda de documentos | 2d | 2010-07-26 | 2010-07-28 |  | 14d |  |  | Programador Sr 2 | 16h | 500 |
| 108 | 25 | (ADM04) Mantenimiento de Recursos | 2d | 2010-07-16 | 2010-07-21 | 61 | 11d | 0d |  | Programador Sr 2 | 16h | 500 |
| 109 | 26 | (ADM05) Mantenimiento de guias de interrogatorio | 2d | 2010-07-27 | 2010-08-03 | 111, 61 | 4d | 2d |  | Programador Sr 2 | 16h | 500 |
| 110 | 27 | (ADM06) Mantenimiento de Fichas tematicas | 2d | 2010-08-04 | 2010-08-05 | 111, 61 | 11.5d | 0d |  | Programador Sr 2 | 16h | 500 |

| ID | WBS | Task | Duration | Start | Finish | Predecessors | Total slack | Free slack | Constraint | Resources | Work | Cost |
| --- | --- | --- | --- | --- | --- | --- | --- | --- | --- | --- | --- | --- |
| 111 | 28 | **(ADM07) Mantenimiento de relaciones sobre guias de interrogatorio y fichas tematicas** | 1d | 2010-07-22 | 2010-07-22 | 108 | 11d | 0d |  |  | 16h | 300 |
| 112 | 28.1 | Adición de documentos a fichas temáticas | 1d | 2010-07-22 | 2010-07-22 |  | 11d |  | start no earlier than 2010-07-06 | Programador Jr 2 | 8h | 150 |
| 113 | 28.2 | Adición de documentos a guias de interrogatorio | 1d | 2010-07-22 | 2010-07-22 |  | 11d |  | start no earlier than 2010-07-22 | Programador Jr 1 | 8h | 150 |
| 114 | 29 | **(ADM08) Mantenimiento de encuestas** | 1d | 2010-06-04 | 2010-06-04 | 130 | 63d |  |  |  | 16h | 300 |
| 115 | 29.1 | **Mantenimiento Indice de Encuestas** | 1d | 2010-06-04 | 2010-06-04 |  | 63d |  |  |  |  |  |
| 116 | 29.1.1 | Mantener Ediciones | 1d | 2010-06-04 | 2010-06-04 |  | 63d |  |  |  |  |  |
| 117 | 29.1.2 | Cierre de ediciones | 1d | 2010-06-04 | 2010-06-04 |  | 63d |  |  |  |  |  |
| 118 | 29.2 | Asignación de formulario a encuesta | 1d | 2010-06-04 | 2010-06-04 |  | 63d |  | start no earlier than 2010-06-04 | Programador Jr 2 | 8h | 150 |
| 119 | 29.3 | Asignación de operadores a encuesta | 1d | 2010-06-04 | 2010-06-04 |  | 63d |  | start no earlier than 2010-06-04 | Programador Jr 1 | 8h | 150 |
| 120 | 29.4 | **Asignación lista de encuestados** | 1d | 2010-06-04 | 2010-06-04 |  | 63d |  |  |  |  |  |
| 121 | 29.4.1 | Alta, baja de encuestados | 1d | 2010-06-04 | 2010-06-04 |  | 63d |  |  |  |  |  |
| 122 | 29.4.2 | Asignación automática en base a un archivo de texto | 1d | 2010-06-04 | 2010-06-04 |  | 63d |  |  |  |  |  |
| 123 | 29.5 | Publicar Encuestas | 1d | 2010-06-04 | 2010-06-04 |  | 63d |  |  |  |  |  |
| 124 | 30 | **(ADM09) Mantenimiento de seguimiento de patologias** | 4d | 2010-06-23 | 2010-06-29 | 79 | 44.5d | 17.5d |  |  | 40h | 1,250 |
| 125 | 30.1 | Mantenimiento Indice de campañas de seguimiento | 1d | 2010-06-23 | 2010-06-24 |  | 47.5d |  | start no earlier than 2010-06-21 | Programador Sr 1 | 8h | 250 |
| 126 | 30.2 | Asignación de formulario a campaña de seguimiento | 1d | 2010-06-25 | 2010-06-28 |  | 25d |  | start no earlier than 2010-06-25 | Programador Sr 1 | 8h | 250 |
| 127 | 30.3 | Asignación de operadores a campaña de seguimiento | 1d | 2010-06-28 | 2010-06-29 |  | 24d |  | start no earlier than 2010-06-28 | Programador Sr 1 | 8h | 250 |
| 128 | 30.4 | Asignación de listas de pacientes | 1d | 2010-06-24 | 2010-06-25 |  | 46.5d |  | start no earlier than 2010-06-24 | Programador Sr 2 | 8h | 250 |
| 129 | 30.5 | Activación/ Desactivación de campañas | 1d | 2010-06-25 | 2010-06-28 |  | 25d |  | start no earlier than 2010-06-25 | Programador Sr 2 | 8h | 250 |
| 130 | 31 | **(ADM10) Creacion de formularios de encuesta y seguimiento** | 2d | 2010-06-02 | 2010-06-03 | 200 | 32d | 0d |  |  | 32h |  |
| 131 | 31.1 | Mantener Indice de Encuesta | 2d | 2010-06-02 | 2010-06-03 |  | 35d |  |  | Prog SSr 2 | 16h |  |
| 132 | 31.2 | Crear y Editar Encuestas | 2d | 2010-06-02 | 2010-06-03 |  | 35d |  |  | Prog SSr 1 | 16h |  |
| 133 | 32 | **(ADM11) Mantenimiento de usuarios, perfiles y permisos** | 4d | 2010-06-10 | 2010-06-16 | 1 | 37.5d | 0d |  |  |  |  |
| 134 | 32.1 | Mantenimiento Opciones Funcionales | 2d | 2010-06-14 | 2010-06-15 |  | 38d |  |  |  |  |  |

| ID | WBS | Task | Duration | Start | Finish | Predecessors | Total slack |
| --- | --- | --- | --- | --- | --- | --- | --- |
| 135 | 32.2 | **Mantener Perfiles Trabajo** | 3d | 2010-06-10 | 2010-06-15 |  | 38.5d |
| 136 | 32.2.1 | Alta, modificación de perfiles | 1d | 2010-06-14 | 2010-06-15 |  | 38.5d |
| 137 | 32.2.2 | ABM de opciones funcionales a perfil | 1d | 2010-06-10 | 2010-06-11 |  | 40.5d |
| 138 | 32.2.3 | Adición de responsabilidades a opciones funcionales | 1d | 2010-06-11 | 2010-06-14 |  | 39.5d |
| 139 | 32.3 | **Mantener Usuarios** | 3d | 2010-06-11 | 2010-06-16 |  | 37.5d |
| 140 | 32.3.1 | Creación/gestion de usuarios | 1d | 2010-06-11 | 2010-06-14 |  | 39.5d |
| 141 | 32.3.2 | Asiganción de perfil a usuario | 1d | 2010-06-14 | 2010-06-15 |  | 38.5d |
| 142 | 32.3.3 | Asignación de agendas a usuario | 1d | 2010-06-15 | 2010-06-16 |  | 37.5d |
| 143 | 33 | **(ADM12) Listado de acciones proactivas** | 2d | 2010-07-23 | 2010-07-26 | 95, 124 | 27d |
| 144 | 33.1 | Módulo de elaboraciónde informes de estado de campaña de seguimiento | 2d | 2010-07-23 | 2010-07-26 |  | 27d |
| 145 | 33.2 | Módulo de elaboración de informes de estado de encuesta | 2d | 2010-07-23 | 2010-07-26 |  | 27d |
| 146 | 33.3 | Módulo de elaboración de informes de ediciones de encuestas | 2d | 2010-07-23 | 2010-07-26 |  | 27d |
| 147 | 33.4 | Módulo de elaboración de listados de campañas de seguimiento | 2d | 2010-07-23 | 2010-07-26 |  | 27d |
| 148 | 33.5 | Módulo de elaboración de listados de información de encuestas | 2d | 2010-07-23 | 2010-07-26 |  | 27d |
| 149 | 34 | **(ADM13) Listados de documentos** | 1d | 2010-08-13 | 2010-08-16 | 95, 103 | 12.5d |
| 150 | 34.1 | Elaboración de listado de configuración | 1d | 2010-08-13 | 2010-08-16 |  | 12.5d |
| 151 | 34.2 | Elaboración de listado de uso | 1d | 2010-08-13 | 2010-08-16 |  | 12.5d |
| 152 | 34.3 | Elaboración de listado de asociaciones | 1d | 2010-08-13 | 2010-08-16 |  | 12.5d |
| 153 | 35 | **(ADM14) Listado sobre consultas** | 1d | 2010-07-23 | 2010-07-23 | 95, 23 | 28d |
| 154 | 35.1 | Módulo de obtención de listados de consulta por ciudadano | 1d | 2010-07-23 | 2010-07-23 |  | 28d |
| 155 | 35.2 | Módulo de obtención de listados de consultas con cierre principal | 1d | 2010-07-23 | 2010-07-23 |  | 28d |
| 156 | 35.3 | Módulo de obtención de listados de consulta con cierre secundario | 1d | 2010-07-23 | 2010-07-23 |  | 28d |
| 157 | 35.4 | Módulo de obtención de listados de consulta por motivo de cierre | 1d | 2010-07-23 | 2010-07-23 |  | 28d |
| 158 | 35.5 | Módulo de obtención de listado de resumen de consultas por servicio | 1d | 2010-07-23 | 2010-07-23 |  | 28d |
| 159 | 35.6 | Módulo de obtención de listado de consultas por área geográfica | 1d | 2010-07-23 | 2010-07-23 |  | 28d |
| 160 | 35.7 | Módulo de obtención de listado de consultas por usuario | 1d | 2010-07-23 | 2010-07-23 |  | 28d |
| 161 | 35.8 | Módulo de obtención de listado de consultas pendientes | 1d | 2010-07-23 | 2010-07-23 |  | 28d |

| ID | WBS | Task | Duration | Start | Finish | Predecessors | Total slack | Free slack | Constraint | Resources | Work | Cost |
| --- | --- | --- | --- | --- | --- | --- | --- | --- | --- | --- | --- | --- |
| 162 | 36 | **(ADM15) Mantener Asignaciones TSI** | 5d | 2010-07-23 | 2010-07-29 | 79, 35 | -2d | 0d |  |  |  |  |
| 163 | 36.1 | **Módulo de envío de datos a CatSalut** | 3d | 2010-07-23 | 2010-07-27 |  |  |  |  |  |  |  |
| 164 | 36.1.1 | Recolección de datos de operaciones TSI pendientes | 1d | 2010-07-23 | 2010-07-23 |  | 2d |  |  |  |  |  |
| 165 | 36.1.2 | Migración de los datos a archivo TXT | 2d | 2010-07-23 | 2010-07-26 |  | 1d |  |  |  |  |  |
| 166 | 36.1.3 | Interface de comunicación con CatSalut | 5d | 2010-07-23 | 2010-07-29 |  | -2d | 0d |  |  |  |  |
| 167 | 37 | **(ADM16) Asignar documentos a acciones** | 1d | 2010-08-13 | 2010-08-16 | 103 | 12.5d |  |  |  |  |  |
| 168 | 37.1 | Creación/eliminación de asociaciones | 1d | 2010-08-13 | 2010-08-16 |  | 12.5d |  |  |  |  |  |
| 169 | 37.2 | Cadicidad de asociaciones | 1d | 2010-08-13 | 2010-08-16 |  | 12.5d |  |  |  |  |  |
| 170 | 38 | **(INT01) Direcciones de farmacias, CAP y otra informacion breve** | 2d | 2010-08-03 | 2010-08-04 | 11, 61, 79 | 15d | 0d |  |  |  |  |
| 171 | 38.1 | Trabajo con listas de resultados | 2d | 2010-08-03 | 2010-08-04 |  | 15d |  |  |  |  |  |
| 172 | 39 | **(SIS01) Trazabilidad y registro de uso** | 11.5d | 2010-06-14 | 2010-06-29 | 1 | 46.5d |  |  |  | 104h | 3,000 |
| 173 | 39.1 | Control Acceso a Consultas | 2d | 2010-06-15 | 2010-06-17 |  | 44d |  |  | Programador Sr 1 | 16h | 500 |
| 174 | 39.2 | Control Acceso a Encuestas | 2d | 2010-06-21 | 2010-06-23 |  | 49.5d |  | start no earlier than 2010-06-21 | Programador Sr 1 | 16h | 500 |
| 175 | 39.3 | Control General Acceso al Sistema | 2d | 2010-06-17 | 2010-06-21 |  | 42d |  |  | Programador Sr 1 | 16h | 500 |
| 176 | 39.4 | Control Acceso a Campañas de Seguimiento | 2d | 2010-06-17 | 2010-06-18 |  | 42.5d |  |  | Programador Sr 2 | 16h | 500 |
| 177 | 39.5 | Control Acceso a Documentos | 2d | 2010-06-23 | 2010-06-29 |  | 36d |  |  | Programador Sr 2 | 16h | 500 |
| 178 | 39.6 | Control Acceso a Recursos Internos | 2d | 2010-06-16 | 2010-06-22 |  | 27.5d |  |  | Programador Sr 2 | 16h | 500 |
| 179 | 39.7 | Historial de Consultas | 1d | 2010-06-14 | 2010-06-14 |  | 36.5d |  | start no earlier than 2010-06-14 | Prog SSr 1 | 8h |  |
| 180 | 40 | **(ISC01) Transferir info, comunicacion a STARS** | 3d | 2010-06-21 | 2010-06-23 | 1 | 50d |  |  |  | 48h |  |
| 181 | 40.1 | Recibir información del sistema de comunicaciones | 3d | 2010-06-21 | 2010-06-23 |  | 26d |  |  | Prog SSr 1; Prog SSr 2 | 48h |  |
| 182 | 41 | **(ISC02) Iniciar llamada desde STARS** | 3d | 2010-06-28 | 2010-06-30 | 1 | 45d |  |  |  | 48h |  |
| 183 | 41.1 | Lanzamiento de petición de comunicación | 3d | 2010-06-28 | 2010-06-30 |  | 21d |  |  | Prog SSr 1; Prog SSr 2 | 48h |  |
| 184 | 42 | **(ISC03) Informacion encuesta** | 1d | 2010-06-04 | 2010-06-04 | 130 | 63d |  |  |  |  |  |
| 185 | 42.1 | Activación actividad de encuesta | 1d | 2010-06-04 | 2010-06-04 |  | 63d |  |  |  |  |  |
| 186 | 43 | ABM Consultas | 1d | 2010-06-29 | 2010-06-30 | 23 | 45.5d |  | start no earlier than 2010-06-29 | Programador Jr 1 | 8h | 150 |
| 187 | 44 | ABM Usuarios | 1d | 2010-06-11 | 2010-06-11 | 3 | 55d | 0d |  |  |  |  |
| 188 | 45 | Proteccion de Acceso | 3d | 2010-06-14 | 2010-06-16 | 187 | 55d |  |  |  |  |  |
| 189 | 46 | ABM Fichas / Guias / Recursos | 3d | 2010-07-22 | 2010-07-26 | 108 | 27d |  |  |  |  |  |
| 190 | 47 | ABM Cuestionarios | 1d | 2010-06-04 | 2010-06-04 | 130 | 63d |  |  |  |  |  |
| 191 | 48 | Interfaz General | 13d | 2010-06-17 | 2010-07-13 | 1 | 15.5d |  |  | Prog SSr 1; Prog SSr 2 | 192h |  |
| 192 | 49 | Interfaz Para Usuario Avanzado | 5d | 2010-06-23 | 2010-06-30 | 79 | 45.5d |  |  |  |  |  |
| 193 | 50 | Interfaz de Listados para ADM02 | 5d | 2010-07-23 | 2010-07-29 | 95 | 24d |  |  |  |  |  |
| 194 | 51 | Interfaz Mantenimiento Usuarios y Perfiles | 5d | 2010-06-16 | 2010-06-23 | 133 | 50.5d |  |  |  |  |  |
| 195 | 52 | Interfaz Direcciones INT01 | 5d | 2010-08-05 | 2010-08-11 | 170 | 15d |  |  |  |  |  |
| 196 | 53 | ABM Enfermedades / Centros Salud | 2d | 2010-08-05 | 2010-08-06 | 170 | 18d |  |  |  |  |  |
| 197 | 54 | Listado de Usuarios y Perfiles | 1d | 2010-07-12 | 2010-07-12 | 133 | 37d |  |  |  |  |  |
| 198 | 55 | Interface con sistema de comunicaciones (ISC01, ISC02, ISC03) | 9d | 2010-06-08 | 2010-06-21 | 1 | 52.5d |  |  | Programador Jr 1; Programador Jr 2 | 80h | 1,500 |
| 200 | 56 | Arquitectura General / Configuracion Ambientes | 15d | 2010-05-12 | 2010-06-01 | 205 | 17d | 0d |  | Arquitecto | 120h | 5,250 |

| ID | WBS | Task | Duration | Start | Finish | Predecessors | Total slack | Free slack | Constraint | Resources | Work | Cost |
| --- | --- | --- | --- | --- | --- | --- | --- | --- | --- | --- | --- | --- |
| 201 | 57 | **Tareas IT Sobre Nuestra Empresa** | 24d | 2010-05-06 | 2010-06-08 |  | 27d |  |  |  | 160h | 3,600 |
| 202 | 57.1 | Compra Equipos Necesarios | 1.5d | 2010-05-06 | 2010-05-07 |  | 81d | 0d | start no earlier than 2010-05-06 | Programador Jr 1; Programador Jr 2 | 24h | 450 |
| 203 | 57.2 | **Infraestructura** | 9d | 2010-05-06 | 2010-05-18 |  | 27d | 12d |  |  | 72h | 1,800 |
| 204 | 57.2.1 | Preparacion de Ambientes en servidores | 1d | 2010-05-06 | 2010-05-06 |  | 57d |  | start no earlier than 2010-05-06 | IT 1 | 8h | 200 |
| 205 | 57.2.2 | Instalacion y Configuracion de Servidor DEV | 3d | 2010-05-07 | 2010-05-11 |  | 18d | 0d |  | IT 1 | 24h | 600 |
| 206 | 57.2.3 | Instalacion y Configuracion de Servidores de Usos Multiples | 5d | 2010-05-12 | 2010-05-18 |  | 49d |  | start no earlier than 2010-05-11 | IT 1 | 40h | 1,000 |
| 207 | 57.3 | **Redes** | 3d | 2010-06-04 | 2010-06-08 | 203 | 61d |  |  |  | 24h | 600 |
| 208 | 57.3.1 | Configuracion del FW | 3d | 2010-06-04 | 2010-06-08 |  | 37d |  | start no earlier than 2010-06-04 | IT 1 | 24h | 600 |
| 209 | 57.4 | Instalacion de pcs nuevos usuarios | 2.5d | 2010-05-07 | 2010-05-11 | 202 | 81d |  | start no earlier than 2010-05-07 | Programador Jr 1; Programador Jr 2 | 40h | 750 |
