# Casos Uso

Schedule from MS Project, 2010-05-06 to 2010-05-26.
Hexacta

## Calendars

- Standard: Mon-Fri 08:00-12:00, 13:00-17:00; Sat-Sun off.

## Resources

| Resource |
| --- |
| Usr |
| Prog Jr 1 |
| Porg Jr 2 |
| Prog Sr 1 |
| Prog Sr 2 |
| Tester |
| Arquitecto |

## Schedule

| ID | WBS | Task | Duration | Start | Finish | Predecessors | Total slack | Free slack |
| --- | --- | --- | --- | --- | --- | --- | --- | --- |
| 1 | 1 | Integracion con el Sistema STARS (Lectura Datos) | 5d | 2010-05-06 | 2010-05-12 |  | 1d | 0d |
| 2 | 2 | Modulo Seguridad que Oculta Info Llamado | 3d | 2010-05-06 | 2010-05-10 |  | 23d |  |
| 3 | 3 | **(GEN01) Identificacion y Autenticacion** | 3d | 2010-05-07 | 2010-05-11 | 198 | 5d | 0d |
| 4 | 3.1 | Autenticacion | 1d | 2010-05-07 | 2010-05-07 |  | 4d |  |
| 5 | 3.2 | Interfaz Inicio Sesion | 3d | 2010-05-07 | 2010-05-11 |  | 2d |  |
| 6 | 4 | **(GEN02) Gestion General de Registros** | 3d | 2010-05-06 | 2010-05-10 |  | 12d |  |
| 7 | 4.1 | ABM Registro | 1d | 2010-05-06 | 2010-05-06 |  | 25d |  |
| 8 | 4.2 | Buscar registro | 1d | 2010-05-06 | 2010-05-06 |  | 25d |  |
| 9 | 4.3 | Copiar registro | 1d | 2010-05-06 | 2010-05-06 |  | 25d |  |
| 10 | 4.4 | Interfaz ABM Registro | 3d | 2010-05-06 | 2010-05-10 |  | 23d |  |
| 11 | 5 | **(USR01) Determinacion del servicio de atencion** | 2d | 2010-05-13 | 2010-05-14 | 1, 3 | 4d | 0d |
| 12 | 5.1 | Capturar la Comunicación???? | 2d | 2010-05-13 | 2010-05-14 |  | 1d |  |
| 13 | 5.2 | Determinar el tipo de servicio | 1d | 2010-05-13 | 2010-05-13 |  | 2d |  |
| 14 | 5.3 | Lista de Espera | 1d | 2010-05-13 | 2010-05-13 |  | 2d |  |
| 15 | 5.4 | Determinar conjunto de operadores adecuados al tipo de solicitud | 1d | 2010-05-13 | 2010-05-13 |  | 2d |  |
| 16 | 6 | **(USR02) Agenda** | 3d | 2010-05-12 | 2010-05-14 | 3, 71 | 5d | 0d |
| 17 | 6.1 | Selección de una agenda | 0.5h | 2010-05-13 | 2010-05-13 | 18 | 17.94d |  |
| 18 | 6.2 | ABM citas sobre la agenda | 1d | 2010-05-12 | 2010-05-12 |  | 17.94d | 0d |
| 19 | 6.3 | Interfaz de la Agenda | 2d | 2010-05-12 | 2010-05-13 |  | 17d |  |
| 20 | 6.4 | Integracion con Stars - Llamada desde Agenda | 3d | 2010-05-12 | 2010-05-14 |  | 16d |  |
| 21 | 6.5 | Asignar pacientes a cita | 0.5h | 2010-05-12 | 2010-05-12 |  | 18.94d |  |
| 22 | 7 | (USR03) Rellamada | 1d | 2010-05-10 | 2010-05-10 | 31, 56 | 12d |  |
| 23 | 8 | **(USR04) Consulta** | 2d | 2010-05-17 | 2010-05-18 | 11, 61, 67, 31, 74, 71 | 4d | 0d |
| 24 | 8.1 | **Tratar Consulta** | 0.06d | 2010-05-17 | 2010-05-17 | 61, 67 | 5.94d |  |
| 25 | 8.1.1 | Ajornar Consulta | 0.5h | 2010-05-17 | 2010-05-17 |  | 2.94d |  |
| 26 | 8.1.2 | Transferir consulta | 0.5h | 2010-05-17 | 2010-05-17 |  | 2.94d |  |
| 27 | 8.2 | Modulo Envio de Correo | 2d | 2010-05-17 | 2010-05-18 |  | 1d |  |
| 28 | 8.3 | Modulo Envio SMS | 2d | 2010-05-17 | 2010-05-18 |  | 1d |  |
| 29 | 8.4 | Inclusion en Campaña de Seguimiento | 1d | 2010-05-17 | 2010-05-17 |  | 2d |  |
| 30 | 9 | (USR05) Consejo Salud | 1d | 2010-05-10 | 2010-05-10 | 61, 67 | 12d |  |

| ID | WBS | Task | Duration | Start | Finish | Predecessors | Total slack | Free slack |
| --- | --- | --- | --- | --- | --- | --- | --- | --- |
| 31 | 10 | **(USR06) Gestionar Consulta pendiente** | 1d | 2010-05-06 | 2010-05-06 |  | 10d | 1d |
| 32 | 10.1 | Priorizacion de la Lista de Consultas | 1d | 2010-05-06 | 2010-05-06 |  | 7d |  |
| 33 | 11 | **(USR07) Programacion de cita previa** | 1d | 2010-05-10 | 2010-05-10 | 67, 74 | 12d |  |
| 34 | 11.1 | Realizar Citación (Interface con Sistema de citación AP) | 1d | 2010-05-10 | 2010-05-10 |  | 23d |  |
| 35 | 12 | **(USR08) Gestiones sobre la TSI** | 0.06d | 2010-05-19 | 2010-05-19 | 31, 74, 67, 23 | 5.94d |  |
| 36 | 12.1 | Verificacion Documentacion Necesaria | 0.5h | 2010-05-19 | 2010-05-19 |  | 16.94d |  |
| 37 | 12.2 | Enviar Gestion (Interface con sistema RCA) | 0.5h | 2010-05-19 | 2010-05-19 |  | 16.94d |  |
| 38 | 12.3 | Cierre automatico de la consulta por paso de tiempo | 0.5h | 2010-05-19 | 2010-05-19 |  | 16.94d |  |
| 39 | 12.4 | Guardar LOG gestion TSI????? | 0.5h | 2010-05-19 | 2010-05-19 |  | 16.94d |  |
| 40 | 13 | **(USR09) Servicio de traduccion** | 2d | 2010-05-19 | 2010-05-20 | 23, 67 | 4d |  |
| 41 | 13.1 | Contactar Servicio Externo de Traduccion | 1d | 2010-05-19 | 2010-05-19 |  | 16d |  |
| 42 | 13.2 | Enlace Comunicacion Multiconferencia | 2d | 2010-05-19 | 2010-05-20 |  | 15d |  |
| 43 | 13.3 | Modulo monitorización de servicio | 2d | 2010-05-19 | 2010-05-20 |  | 15d |  |
| 44 | 14 | **(USR10) Informacion Sanitaria General** | 1d | 2010-05-20 | 2010-05-20 | 67, 74, 170, 23 | 4d |  |
| 45 | 14.1 | Guardar Informacion Ciudadano | 1d | 2010-05-20 | 2010-05-20 |  | 15d |  |
| 46 | 15 | **(USR11) Seguimiento de Patologias** | 1d | 2010-05-17 | 2010-05-17 | 16, 31 | 5d | 0d |
| 47 | 15.1 | Buscar Campañas Abiertas | 0.5d | 2010-05-17 | 2010-05-17 |  | 16.5d |  |
| 48 | 15.2 | **Gestionar Seguimiento** | 0.06d | 2010-05-17 | 2010-05-17 |  | 5.94d |  |
| 49 | 15.2.1 | Visualizar Historial Pacientes | 0.5h | 2010-05-17 | 2010-05-17 |  | 16.94d |  |
| 50 | 15.2.2 | Llamada al Paciente | 0.5h | 2010-05-17 | 2010-05-17 |  | 16.94d |  |
| 51 | 15.3 | Desligar paciente de campaña | 1d | 2010-05-17 | 2010-05-17 |  | 16d |  |
| 52 | 16 | **(USR12) Encuestas** | 3d | 2010-05-06 | 2010-05-10 |  | 10d | 0d |
| 53 | 16.1 | Interfaz de Encuestas | 3d | 2010-05-06 | 2010-05-10 |  | 21d |  |
| 54 | 16.2 | Contacto con Encuestado | 1d | 2010-05-06 | 2010-05-06 |  | 23d |  |
| 55 | 16.3 | ABM Formulario De Encuesta | 1d | 2010-05-06 | 2010-05-06 |  | 23d |  |

| ID | WBS | Task | Duration | Start | Finish | Predecessors | Total slack | Free slack |
| --- | --- | --- | --- | --- | --- | --- | --- | --- |
| 56 | 17 | **(USR13) Buscar Consultas** | 1d | 2010-05-07 | 2010-05-07 | 71 | 12d | 0d |
| 57 | 17.1 | **Operativo de Busqueda** | 1d | 2010-05-07 | 2010-05-07 |  | 12d |  |
| 58 | 17.1.1 | Buscar según distintos criterios | 1d | 2010-05-07 | 2010-05-07 |  | 23d |  |
| 59 | 17.1.2 | Filtrar resultados de la busqueda según permisos del usuario | 0.5h | 2010-05-07 | 2010-05-07 |  | 23.94d |  |
| 60 | 17.1.3 | Acotar resultados si los mismos sobrepasan el parametro configurable "n" | 0.5h | 2010-05-07 | 2010-05-07 |  | 23.94d |  |
| 61 | 18 | **(USR14) Hacer Uso de Documentos** | 2d | 2010-05-06 | 2010-05-07 |  | 9d | 0d |
| 62 | 18.1 | Creación y uso de Guias Interrogatorio | 2d | 2010-05-06 | 2010-05-07 |  | 6d |  |
| 63 | 18.2 | Creación y uso Fichas Tematicas | 2d | 2010-05-06 | 2010-05-07 |  | 6d |  |
| 64 | 18.3 | Creación y uso de Recursos | 2d | 2010-05-06 | 2010-05-07 |  | 6d |  |
| 65 | 18.4 | Búsqueda y selección de documentos | 2d | 2010-05-06 | 2010-05-07 |  | 6d |  |
| 66 | 18.5 | Apertura documentos | 1d | 2010-05-06 | 2010-05-06 |  | 7d |  |
| 67 | 19 | **(USR15) Cerrar consulta y dar respuesta al ciudadano** | 1d | 2010-05-06 | 2010-05-06 |  | 10d | 1d |
| 68 | 19.1 | Clasificar Finalizacion de Consulta | 0.5h | 2010-05-06 | 2010-05-06 |  | 7.94d |  |
| 69 | 19.2 | Adición de motivo de cierre a la consulta | 0.5h | 2010-05-06 | 2010-05-06 |  | 7.94d |  |
| 70 | 19.3 | Creación de clasificaciones ad-hoc | 1d | 2010-05-06 | 2010-05-06 |  | 7d |  |
| 71 | 20 | **(USR16) Visualizar Consulta** | 1d | 2010-05-06 | 2010-05-06 |  | 8d | 0d |
| 72 | 20.1 | Mostrar datos generales de la consulta | 1d | 2010-05-06 | 2010-05-06 |  | 7d |  |
| 73 | 20.2 | Mostrar datos según el documento elegido | 1d | 2010-05-06 | 2010-05-06 |  | 7d |  |
| 74 | 21 | **(USR17) Crear/Transferir Consulta** | 2d | 2010-05-06 | 2010-05-07 |  | 9d | 0d |
| 75 | 21.1 | Crear Consulta | 2d | 2010-05-06 | 2010-05-07 |  | 6d |  |
| 76 | 21.2 | Copiar consulta | 1d | 2010-05-06 | 2010-05-06 |  | 7d |  |
| 77 | 21.3 | **Transferir Consulta** | 1d | 2010-05-06 | 2010-05-06 |  | 10d |  |
| 78 | 21.3.1 | Localizar a otro operador del mismo perfil | 1d | 2010-05-06 | 2010-05-06 |  | 7d |  |
| 79 | 22 | **(ADM01) Mantenimiento del Entorno, clasif y prioridades** | 3d | 2010-05-13 | 2010-05-17 | 192 | 2d | 0d |
| 80 | 22.1 | Módulo de edición de parametros grales de la aplicación | 3d | 2010-05-13 | 2010-05-17 |  | 13d |  |
| 81 | 22.2 | Módulo edición listas de clasificaciones (Códigos internos) | 3d | 2010-05-13 | 2010-05-17 |  | 13d |  |

| ID | WBS | Task | Duration | Start | Finish | Predecessors | Total slack | Free slack |
| --- | --- | --- | --- | --- | --- | --- | --- | --- |
| 82 | 22.3 | **Módulo mantenimiento de la lista de espera** | 1d | 2010-05-13 | 2010-05-13 |  | 4d |  |
| 83 | 22.3.1 | ABM de la lista de espera | 1d | 2010-05-13 | 2010-05-13 |  | 15d |  |
| 84 | 22.3.2 | Módulo de gestión de prioridades sobre la lista de espera | 1d | 2010-05-13 | 2010-05-13 |  | 15d |  |
| 85 | 22.4 | **Módulo mantenimiento de lineas de servicio** | 1d | 2010-05-13 | 2010-05-13 |  | 4d |  |
| 86 | 22.4.1 | ABM lineas de servicio | 1d | 2010-05-13 | 2010-05-13 |  | 15d |  |
| 87 | 22.4.2 | ABM servicios para una linea seleccionada | 1d | 2010-05-13 | 2010-05-13 |  | 15d |  |
| 88 | 22.5 | **Módulo mantenimiento agendas** | 1d | 2010-05-13 | 2010-05-13 |  | 4d |  |
| 89 | 22.5.1 | Asignar operadores a agenda | 1d | 2010-05-13 | 2010-05-13 |  | 15d |  |
| 90 | 22.5.2 | ABM de usuarios de la agenda | 1d | 2010-05-13 | 2010-05-13 |  | 15d |  |
| 91 | 22.5.3 | ABM citas de la agenda | 1d | 2010-05-13 | 2010-05-13 |  | 15d |  |
| 92 | 22.6 | **Módulo mantenimiento BBDD** | 2d | 2010-05-13 | 2010-05-14 |  | 3d |  |
| 93 | 22.6.1 | Módulo comprobación de formato de archivo | 1d | 2010-05-13 | 2010-05-13 |  | 15d |  |
| 94 | 22.6.2 | Módulo actualización de BBDD | 2d | 2010-05-13 | 2010-05-14 |  | 14d |  |
| 95 | 23 | **(ADM02) Extraccion de estadisticas y listados** | 2d | 2010-05-13 | 2010-05-14 | 143, 149, 153, 193 | 8d |  |
| 96 | 23.1 | Listados De Administración | 2d | 2010-05-13 | 2010-05-14 |  | 19d |  |
| 97 | 23.2 | **Listados Comunes** | 1d | 2010-05-13 | 2010-05-13 |  | 9d |  |
| 98 | 23.2.1 | Detalle de estado de finalización consulta/acción | 1d | 2010-05-13 | 2010-05-13 |  | 20d |  |
| 99 | 23.2.2 | Listado de clasificaciones | 1d | 2010-05-13 | 2010-05-13 |  | 20d |  |
| 100 | 23.2.3 | Listados de incidencias en las comunicaciones | 1d | 2010-05-13 | 2010-05-13 |  | 20d |  |
| 101 | 23.2.4 | Ratios por usuario | 1d | 2010-05-13 | 2010-05-13 |  | 20d |  |
| 102 | 23.2.5 | Finales de servicio | 1d | 2010-05-13 | 2010-05-13 |  | 20d |  |
| 103 | 24 | **(ADM03) Mantenimiento de documentos** | 4d | 2010-05-12 | 2010-05-17 | 149, 167, 111 | 7d |  |
| 104 | 24.1 | Creación y edición de documentos | 2d | 2010-05-14 | 2010-05-17 | 108, 109, 110 | 18d |  |
| 105 | 24.2 | Borrado de documentos | 1d | 2010-05-12 | 2010-05-12 |  | 21d |  |
| 106 | 24.3 | Clasificación de documentos | 1d | 2010-05-12 | 2010-05-12 |  | 21d |  |
| 107 | 24.4 | Búsqueda de documentos | 2d | 2010-05-12 | 2010-05-13 |  | 20d |  |
| 108 | 25 | (ADM04) Mantenimiento de Recursos | 2d | 2010-05-11 | 2010-05-12 | 189 | 19d | 1d |
| 109 | 26 | (ADM05) Mantenimiento de guias de interrogatorio | 2d | 2010-05-12 | 2010-05-13 | 111, 189 | 7d | 0d |
| 110 | 27 | (ADM06) Mantenimiento de Fichas tematicas | 2d | 2010-05-12 | 2010-05-13 | 111, 189 | 7d | 0d |

| ID | WBS | Task | Duration | Start | Finish | Predecessors | Total slack | Free slack |
| --- | --- | --- | --- | --- | --- | --- | --- | --- |
| 111 | 28 | **(ADM07) Mantenimiento de relaciones sobre guias de interrogatorio y fichas tematicas** | 1d | 2010-05-11 | 2010-05-11 | 189 | 7d | 0d |
| 112 | 28.1 | Adición de documentos a fichas temáticas | 1d | 2010-05-11 | 2010-05-11 |  | 18d |  |
| 113 | 28.2 | Adición de documentos a guias de interrogatorio | 1d | 2010-05-11 | 2010-05-11 |  | 18d |  |
| 114 | 29 | **(ADM08) Mantenimiento de encuestas** | 1d | 2010-05-06 | 2010-05-06 |  | 14d |  |
| 115 | 29.1 | **Mantenimiento Indice de Encuestas** | 1d | 2010-05-06 | 2010-05-06 |  | 14d |  |
| 116 | 29.1.1 | Mantener Ediciones | 1d | 2010-05-06 | 2010-05-06 |  | 25d |  |
| 117 | 29.1.2 | Cierre de ediciones | 1d | 2010-05-06 | 2010-05-06 |  | 25d |  |
| 118 | 29.2 | Asignación de formulario a encuesta | 1d | 2010-05-06 | 2010-05-06 |  | 25d |  |
| 119 | 29.3 | Asignación de operadores a encuesta | 1d | 2010-05-06 | 2010-05-06 |  | 25d |  |
| 120 | 29.4 | **Asignación lista de encuestados** | 1d | 2010-05-06 | 2010-05-06 |  | 14d |  |
| 121 | 29.4.1 | Alta, baja de encuestados | 1d | 2010-05-06 | 2010-05-06 |  | 25d |  |
| 122 | 29.4.2 | Asignación automática en base a un archivo de texto | 1d | 2010-05-06 | 2010-05-06 |  | 25d |  |
| 123 | 29.5 | Publicar Encuestas | 1d | 2010-05-06 | 2010-05-06 |  | 25d |  |
| 124 | 30 | **(ADM09) Mantenimiento de seguimiento de patologias** | 1d | 2010-05-06 | 2010-05-06 |  | 14d |  |
| 125 | 30.1 | Mantenimiento Indice de campañas de seguimiento | 1d | 2010-05-06 | 2010-05-06 |  | 25d |  |
| 126 | 30.2 | Asignación de formulario a campaña de seguimiento | 0.5h | 2010-05-06 | 2010-05-06 |  | 25.94d |  |
| 127 | 30.3 | Asignación de operadores a campaña de seguimiento | 0.5h | 2010-05-06 | 2010-05-06 |  | 25.94d |  |
| 128 | 30.4 | Asignación de listas de pacientes | 0.5h | 2010-05-06 | 2010-05-06 |  | 25.94d |  |
| 129 | 30.5 | Activación/ Desactivación de campañas | 0.5h | 2010-05-06 | 2010-05-06 |  | 25.94d |  |
| 130 | 31 | **(ADM10) Creacion de formularios de encuesta y seguimiento** | 1d | 2010-05-07 | 2010-05-07 | 190 | 13d |  |
| 131 | 31.1 | Mantener Indice de Encuesta | 1d | 2010-05-07 | 2010-05-07 |  | 24d |  |
| 132 | 31.2 | Crear y Editar Encuestas | 1d | 2010-05-07 | 2010-05-07 |  | 24d |  |
| 133 | 32 | **(ADM11) Mantenimiento de usuarios, perfiles y permisos** | 1d | 2010-05-13 | 2010-05-13 | 194 | 7d | 0d |
| 134 | 32.1 | Mantenimiento Opciones Funcionales | 1d | 2010-05-13 | 2010-05-13 |  | 18d |  |

| ID | WBS | Task | Duration | Start | Finish | Total slack | Free slack |
| --- | --- | --- | --- | --- | --- | --- | --- |
| 135 | 32.2 | **Mantener Perfiles Trabajo** | 1d | 2010-05-13 | 2010-05-13 | 7d |  |
| 136 | 32.2.1 | Alta, modificación de perfiles | 1d | 2010-05-13 | 2010-05-13 | 18d |  |
| 137 | 32.2.2 | ABM de opciones funcionales a perfil | 1d | 2010-05-13 | 2010-05-13 | 18d |  |
| 138 | 32.2.3 | Adición de responsabilidades a opciones funcionales | 0.5h | 2010-05-13 | 2010-05-13 | 18.94d |  |
| 139 | 32.3 | **Mantener Usuarios** | 1d | 2010-05-13 | 2010-05-13 | 7d |  |
| 140 | 32.3.1 | Creación/gestion de usuarios | 1d | 2010-05-13 | 2010-05-13 | 18d |  |
| 141 | 32.3.2 | Asiganción de perfil a usuario | 0.5h | 2010-05-13 | 2010-05-13 | 18.94d |  |
| 142 | 32.3.3 | Asignación de agendas a usuario | 1d | 2010-05-13 | 2010-05-13 | 18d |  |
| 143 | 33 | **(ADM12) Listado de acciones proactivas** | 2d | 2010-05-06 | 2010-05-07 | 11d | 3d |
| 144 | 33.1 | Módulo de elaboraciónde informes de estado de campaña de seguimiento | 2d | 2010-05-06 | 2010-05-07 | 22d |  |
| 145 | 33.2 | Módulo de elaboración de informes de estado de encuesta | 2d | 2010-05-06 | 2010-05-07 | 22d |  |
| 146 | 33.3 | Módulo de elaboración de informes de ediciones de encuestas | 2d | 2010-05-06 | 2010-05-07 | 22d |  |
| 147 | 33.4 | Módulo de elaboración de listados de campañas de seguimiento | 2d | 2010-05-06 | 2010-05-07 | 22d |  |
| 148 | 33.5 | Módulo de elaboración de listados de información de encuestas | 2d | 2010-05-06 | 2010-05-07 | 22d |  |
| 149 | 34 | **(ADM13) Listados de documentos** | 1d | 2010-05-06 | 2010-05-06 | 12d | 3d |
| 150 | 34.1 | Elaboración de listado de configuración | 1d | 2010-05-06 | 2010-05-06 | 23d |  |
| 151 | 34.2 | Elaboración de listado de uso | 1d | 2010-05-06 | 2010-05-06 | 23d |  |
| 152 | 34.3 | Elaboración de listado de asociaciones | 1d | 2010-05-06 | 2010-05-06 | 23d |  |
| 153 | 35 | **(ADM14) Listado sobre consultas** | 1d | 2010-05-06 | 2010-05-06 | 12d | 4d |
| 154 | 35.1 | Módulo de obtención de listados de consulta por ciudadano | 1d | 2010-05-06 | 2010-05-06 | 23d |  |
| 155 | 35.2 | Módulo de obtención de listados de consultas con cierre principal | 1d | 2010-05-06 | 2010-05-06 | 23d |  |
| 156 | 35.3 | Módulo de obtención de listados de consulta con cierre secundario | 1d | 2010-05-06 | 2010-05-06 | 23d |  |
| 157 | 35.4 | Módulo de obtención de listados de consulta por motivo de cierre | 1d | 2010-05-06 | 2010-05-06 | 23d |  |
| 158 | 35.5 | Módulo de obtención de listado de resumen de consultas por servicio | 1d | 2010-05-06 | 2010-05-06 | 23d |  |
| 159 | 35.6 | Módulo de obtención de listado de consultas por área geográfica | 1d | 2010-05-06 | 2010-05-06 | 23d |  |
| 160 | 35.7 | Módulo de obtención de listado de consultas por usuario | 1d | 2010-05-06 | 2010-05-06 | 23d |  |
| 161 | 35.8 | Módulo de obtención de listado de consultas pendientes | 1d | 2010-05-06 | 2010-05-06 | 23d |  |

| ID | WBS | Task | Duration | Start | Finish | Predecessors | Total slack | Free slack |
| --- | --- | --- | --- | --- | --- | --- | --- | --- |
| 162 | 36 | **(ADM15) Mantener Asignaciones TSI** | 5d | 2010-05-18 | 2010-05-24 | 79 | 2d |  |
| 163 | 36.1 | **Módulo de envío de datos a CatSalut** | 5d | 2010-05-18 | 2010-05-24 |  | 2d |  |
| 164 | 36.1.1 | Recolección de datos de operaciones TSI pendientes | 1d | 2010-05-18 | 2010-05-18 |  | 17d |  |
| 165 | 36.1.2 | Migración de los datos a archivo TXT | 2d | 2010-05-18 | 2010-05-19 |  | 16d |  |
| 166 | 36.1.3 | Interface de comunicación con CatSalut | 5d | 2010-05-18 | 2010-05-24 |  | 13d |  |
| 167 | 37 | **(ADM16) Asignar documentos a acciones** | 1d | 2010-05-06 | 2010-05-06 |  | 12d | 3d |
| 168 | 37.1 | Creación/eliminación de asociaciones | 1d | 2010-05-06 | 2010-05-06 |  | 23d |  |
| 169 | 37.2 | Caducidad de asociaciones | 1d | 2010-05-06 | 2010-05-06 |  | 23d |  |
| 170 | 38 | **(INT01) Direcciones de farmacias, CAP y otra informacion breve** | 2d | 2010-05-18 | 2010-05-19 | 11, 195, 61, 79 | 4d | 0d |
| 171 | 38.1 | Trabajo con listas de resultados | 2d | 2010-05-18 | 2010-05-19 |  | 15d |  |
| 172 | 39 | **(SIS01) Trazabilidad y registro de uso** | 11d | 2010-05-06 | 2010-05-20 |  | 4d |  |
| 173 | 39.1 | Control Acceso a Consultas | 2d | 2010-05-19 | 2010-05-20 | 23 | 15d |  |
| 174 | 39.2 | Control Acceso a Encuestas | 2d | 2010-05-11 | 2010-05-12 | 52 | 21d |  |
| 175 | 39.3 | Control General Acceso al Sistema | 2d | 2010-05-14 | 2010-05-17 | 133 | 18d |  |
| 176 | 39.4 | Control Acceso a Campañas de Seguimiento | 2d | 2010-05-18 | 2010-05-19 | 46 | 16d |  |
| 177 | 39.5 | Control Acceso a Documentos | 2d | 2010-05-10 | 2010-05-11 | 61 | 22d |  |
| 178 | 39.6 | Control Acceso a Recursos Internos | 2d | 2010-05-06 | 2010-05-07 |  | 24d |  |
| 179 | 39.7 | Historial de Consultas | 1d | 2010-05-06 | 2010-05-06 |  | 25d |  |
| 180 | 40 | **(ISC01) Transferir info, comunicacion a STARS** | 3d | 2010-05-06 | 2010-05-10 |  | 12d |  |
| 181 | 40.1 | Recibir información del sistema de comunicaciones | 3d | 2010-05-06 | 2010-05-10 |  | 23d |  |
| 182 | 41 | **(ISC02) Iniciar llamada desde STARS** | 3d | 2010-05-06 | 2010-05-10 |  | 12d |  |
| 183 | 41.1 | Lanzamiento de petición de comunicación | 3d | 2010-05-06 | 2010-05-10 |  | 23d |  |
| 184 | 42 | **(ISC03) Informacion encuesta** | 1d | 2010-05-06 | 2010-05-06 |  | 14d |  |
| 185 | 42.1 | Activación actividad de encuesta | 1d | 2010-05-06 | 2010-05-06 |  | 25d |  |
| 186 | 43 | ABM Consultas | 1d | 2010-05-06 | 2010-05-06 |  | 25d |  |
| 187 | 44 | ABM Usuarios | 1d | 2010-05-06 | 2010-05-06 |  | 22d | 0d |
| 188 | 45 | Proteccion de Acceso | 3d | 2010-05-07 | 2010-05-11 | 187 | 22d |  |
| 189 | 46 | ABM Fichas / Guias / Recursos | 3d | 2010-05-06 | 2010-05-10 |  | 18d | 0d |
| 190 | 47 | ABM Cuestionarios | 1d | 2010-05-06 | 2010-05-06 |  | 24d | 0d |
| 191 | 48 | Interfaz General | 10d | 2010-05-06 | 2010-05-19 |  | 16d |  |
| 192 | 49 | Interfaz Para Usuario Avanzado | 5d | 2010-05-06 | 2010-05-12 |  | 13d | 0d |
| 193 | 50 | Interfaz de Listados para ADM02 | 5d | 2010-05-06 | 2010-05-12 |  | 19d | 0d |
| 194 | 51 | Interfaz Mantenimiento Usuarios y Perfiles | 5d | 2010-05-06 | 2010-05-12 |  | 18d | 0d |
| 195 | 52 | Interfaz Direcciones INT01 | 5d | 2010-05-06 | 2010-05-12 |  | 18d | 3d |
| 196 | 53 | ABM Enfermedades / Centros Salud | 2d | 2010-05-06 | 2010-05-07 |  | 24d |  |
| 197 | 54 | Listados Iniciales | 1d | 2010-05-06 | 2010-05-06 |  | 25d |  |
| 198 | 55 | Listado de Usuarios y Perfiles | 1d | 2010-05-06 | 2010-05-06 |  | 2d | 0d |
| 199 | 56 | Interface con sistema de comunicaciones (ISC01, ISC02, ISC03) | 5d | 2010-05-06 | 2010-05-12 |  | 21d |  |
| 200 | 57 | Arquitectura General / Configuracion de Ambientes | 15d | 2010-05-06 | 2010-05-26 |  | 0d |  |

| ID | WBS | Task | Duration | Start | Finish | Total slack |
| --- | --- | --- | --- | --- | --- | --- |
| 201 | 58 | **Tareas IT Sobre Nuestra Empresa** | 5d | 2010-05-06 | 2010-05-12 | 10d |
| 202 | 58.1 | Compra Equipos Necesarios | 3d | 2010-05-06 | 2010-05-10 | 23d |
| 203 | 58.2 | **Infraestructura** | 5d | 2010-05-06 | 2010-05-12 | 10d |
| 204 | 58.2.1 | Preparacion de ambiente en servidores | 1d | 2010-05-06 | 2010-05-06 | 25d |
| 205 | 58.2.2 | Instalacion y configuracion de Servidor Dev | 3d | 2010-05-06 | 2010-05-10 | 23d |
| 206 | 58.2.3 | Instalacion y Configuracion de Servidor Usos Multiples | 5d | 2010-05-06 | 2010-05-12 | 21d |
| 207 | 58.2.4 | **Redes** | 3d | 2010-05-06 | 2010-05-10 | 12d |
| 208 | 58.2.4.1 | Configuracion del FW | 3d | 2010-05-06 | 2010-05-10 | 23d |
| 209 | 58.3 | Instalacion de las pcs de usuario | 5d | 2010-05-06 | 2010-05-12 | 21d |
