# Casos Uso

Schedule from MS Project, 2010-05-06 to 2010-06-10.
Hexacta

## Calendars

- Standard: Mon-Fri 08:00-12:00, 13:00-17:00; Sat-Sun off.

## Resources

| Resource |
| --- |
| Usr |
| Prog Jr 1 |
| Porg Jr 2 |
| Prog Sr 1 |
| Prog Sr 2 |
| Tester |
| Arquitecto |

## Schedule

| ID | WBS | Task | Duration | Start | Finish | Predecessors | Total slack | Free slack |
| --- | --- | --- | --- | --- | --- | --- | --- | --- |
| 1 | 1 | Integracion con el Sistema STARS (Lectura Datos) | 5d | 2010-05-06 | 2010-05-12 |  | 3d | 0d |
| 2 | 2 | Modulo Seguridad que Oculta Info Llamado | 3d | 2010-05-06 | 2010-05-10 |  | 5d |  |
| 3 | 3 | **(GEN01) Identificacion y Autenticacion** | 4d | 2010-05-07 | 2010-05-12 | 199 |  |  |
| 4 | 3.1 | Autenticacion | 1d | 2010-05-07 | 2010-05-07 |  | 3d |  |
| 5 | 3.2 | Interfaz Inicio Sesion | 3d | 2010-05-07 | 2010-05-11 |  | 1d |  |
| 6 | 4 | **(GEN02) Gestion General de Registros** | 6d | 2010-05-06 | 2010-05-13 |  |  |  |
| 7 | 4.1 | ABM Registro | 1d | 2010-05-06 | 2010-05-06 |  | 5d |  |
| 8 | 4.2 | Buscar registro | 1d | 2010-05-06 | 2010-05-06 |  | 5d |  |
| 9 | 4.3 | Copiar registro | 1d | 2010-05-06 | 2010-05-06 |  | 5d |  |
| 10 | 4.4 | Interfaz ABM Registro | 3d | 2010-05-06 | 2010-05-10 |  | 3d |  |
| 11 | 5 | **(USR01) Determinacion del servicio de atencion** | 5d | 2010-05-13 | 2010-05-19 | 1, 3 |  |  |
| 12 | 5.1 | Capturar la Comunicación???? | 2d | 2010-05-13 | 2010-05-14 |  | 3d |  |
| 13 | 5.2 | Determinar el tipo de servicio | 1d | 2010-05-13 | 2010-05-13 |  | 4d |  |
| 14 | 5.3 | Lista de Espera | 1d | 2010-05-13 | 2010-05-13 |  | 4d |  |
| 15 | 5.4 | Determinar conjunto de operadores adecuados al tipo de solicitud | 1d | 2010-05-13 | 2010-05-13 |  | 4d |  |
| 16 | 6 | **(USR02) Agenda** | 7d | 2010-05-13 | 2010-05-21 | 3, 71 |  |  |
| 17 | 6.1 | Selección de una agenda | 0.5h | 2010-05-14 | 2010-05-14 | 18 | 5.94d |  |
| 18 | 6.2 | ABM citas sobre la agenda | 1d | 2010-05-13 | 2010-05-13 |  | 5.94d | 0d |
| 19 | 6.3 | Interfaz de la Agenda | 2d | 2010-05-13 | 2010-05-14 |  | 5d |  |
| 20 | 6.4 | Integracion con Stars - Llamada desde Agenda | 3d | 2010-05-13 | 2010-05-17 |  | 4d |  |
| 21 | 6.5 | Asignar pacientes a cita | 0.5h | 2010-05-13 | 2010-05-13 |  | 6.94d |  |
| 22 | 7 | (USR03) Rellamada | 1d | 2010-05-11 | 2010-05-11 | 31, 56 | 22d |  |
| 23 | 8 | **(USR04) Consulta** | 6d | 2010-05-20 | 2010-05-27 | 11, 61, 67, 31, 74, 71 |  |  |
| 24 | 8.1 | **Tratar Consulta** | 1d | 2010-05-20 | 2010-05-20 | 61, 67 |  |  |
| 25 | 8.1.1 | Ajornar Consulta | 0.5h | 2010-05-20 | 2010-05-20 |  | 0.94d |  |
| 26 | 8.1.2 | Transferir consulta | 0.5h | 2010-05-20 | 2010-05-20 |  | 0.94d |  |
| 27 | 8.2 | Modulo Envio de Correo | 2d | 2010-05-20 | 2010-05-21 |  | 4d |  |
| 28 | 8.3 | Modulo Envio SMS | 2d | 2010-05-20 | 2010-05-21 |  | 4d |  |
| 29 | 8.4 | Inclusion en Campaña de Seguimiento | 1d | 2010-05-20 | 2010-05-20 |  | 5d |  |
| 30 | 9 | (USR05) Consejo Salud | 1d | 2010-05-28 | 2010-05-28 | 61, 67, 23 | 9d |  |

| ID | WBS | Task | Duration | Start | Finish | Predecessors | Total slack |
| --- | --- | --- | --- | --- | --- | --- | --- |
| 31 | 10 | **(USR06) Gestionar Consulta pendiente** | 1d | 2010-05-06 | 2010-05-06 |  |  |
| 32 | 10.1 | Priorizacion de la Lista de Consultas | 1d | 2010-05-06 | 2010-05-06 |  | 0d |
| 33 | 11 | **(USR07) Programacion de cita previa** | 1d | 2010-05-07 | 2010-05-07 | 67, 74 |  |
| 34 | 11.1 | Realizar Citación (Interface con Sistema de citación AP) | 1d | 2010-05-07 | 2010-05-07 |  | 0d |
| 35 | 12 | **(USR08) Gestiones sobre la TSI** | 2d | 2010-05-28 | 2010-05-31 | 31, 74, 67, 23 |  |
| 36 | 12.1 | Verificacion Documentacion Necesaria | 0.5h | 2010-05-28 | 2010-05-28 |  | 1.94d |
| 37 | 12.2 | Enviar Gestion (Interface con sistema RCA) | 0.5h | 2010-05-28 | 2010-05-28 |  | 1.94d |
| 38 | 12.3 | Cierre automatico de la consulta por paso de tiempo | 0.5h | 2010-05-28 | 2010-05-28 |  | 1.94d |
| 39 | 12.4 | Guardar LOG gestion TSI????? | 0.5h | 2010-05-28 | 2010-05-28 |  | 1.94d |
| 40 | 13 | **(USR09) Servicio de traduccion** | 5d | 2010-05-28 | 2010-06-03 | 23, 67 |  |
| 41 | 13.1 | Contactar Servicio Externo de Traduccion | 1d | 2010-05-28 | 2010-05-28 |  | 4d |
| 42 | 13.2 | Enlace Comunicacion Multiconferencia | 2d | 2010-05-28 | 2010-05-31 |  | 3d |
| 43 | 13.3 | Modulo monitorización de servicio | 2d | 2010-05-28 | 2010-05-31 |  | 3d |
| 44 | 14 | **(USR10) Informacion Sanitaria General** | 1d | 2010-05-28 | 2010-05-28 | 67, 74, 170, 23 |  |
| 45 | 14.1 | Guardar Informacion Ciudadano | 1d | 2010-05-28 | 2010-05-28 |  | 0d |
| 46 | 15 | **(USR11) Seguimiento de Patologias** | 2.5d | 2010-05-24 | 2010-05-26 | 16, 31 |  |
| 47 | 15.1 | Buscar Campañas Abiertas | 0.5d | 2010-05-24 | 2010-05-24 |  | 2d |
| 48 | 15.2 | **Gestionar Seguimiento** | 1d | 2010-05-24 | 2010-05-24 |  |  |
| 49 | 15.2.1 | Visualizar Historial Pacientes | 0.5h | 2010-05-24 | 2010-05-24 |  | 0.94d |
| 50 | 15.2.2 | Llamada al Paciente | 0.5h | 2010-05-24 | 2010-05-24 |  | 0.94d |
| 51 | 15.3 | Desligar paciente de campaña | 1d | 2010-05-24 | 2010-05-24 |  | 1.5d |
| 52 | 16 | **(USR12) Encuestas** | 5d | 2010-05-06 | 2010-05-12 |  |  |
| 53 | 16.1 | Interfaz de Encuestas | 3d | 2010-05-06 | 2010-05-10 |  | 2d |
| 54 | 16.2 | Contacto con Encuestado | 1d | 2010-05-06 | 2010-05-06 |  | 4d |
| 55 | 16.3 | ABM Formulario De Encuesta | 1d | 2010-05-06 | 2010-05-06 |  | 4d |

| ID | WBS | Task | Duration | Start | Finish | Predecessors | Total slack |
| --- | --- | --- | --- | --- | --- | --- | --- |
| 56 | 17 | **(USR13) Buscar Consultas** | 2d | 2010-05-07 | 2010-05-10 | 71 | 0d |
| 57 | 17.1 | **Operativo de Busqueda** | 2d | 2010-05-07 | 2010-05-10 |  |  |
| 58 | 17.1.1 | Buscar según distintos criterios | 1d | 2010-05-07 | 2010-05-07 |  | 1d |
| 59 | 17.1.2 | Filtrar resultados de la busqueda según permisos del usuario | 0.5h | 2010-05-07 | 2010-05-07 |  | 1.94d |
| 60 | 17.1.3 | Acotar resultados si los mismos sobrepasan el parametro configurable "n" | 0.5h | 2010-05-07 | 2010-05-07 |  | 1.94d |
| 61 | 18 | **(USR14) Hacer Uso de Documentos** | 9d | 2010-05-06 | 2010-05-18 |  |  |
| 62 | 18.1 | Creación y uso de Guias Interrogatorio | 2d | 2010-05-06 | 2010-05-07 |  | 7d |
| 63 | 18.2 | Creación y uso Fichas Tematicas | 2d | 2010-05-06 | 2010-05-07 |  | 7d |
| 64 | 18.3 | Creación y uso de Recursos | 2d | 2010-05-06 | 2010-05-07 |  | 7d |
| 65 | 18.4 | Búsqueda y selección de documentos | 2d | 2010-05-06 | 2010-05-07 |  | 7d |
| 66 | 18.5 | Apertura documentos | 1d | 2010-05-06 | 2010-05-06 |  | 8d |
| 67 | 19 | **(USR15) Cerrar consulta y dar respuesta al ciudadano** | 2d | 2010-05-06 | 2010-05-07 |  |  |
| 68 | 19.1 | Clasificar Finalizacion de Consulta | 0.5h | 2010-05-06 | 2010-05-06 |  | 1.94d |
| 69 | 19.2 | Adición de motivo de cierre a la consulta | 0.5h | 2010-05-06 | 2010-05-06 |  | 1.94d |
| 70 | 19.3 | Creación de clasificaciones ad-hoc | 1d | 2010-05-06 | 2010-05-06 |  | 1d |
| 71 | 20 | **(USR16) Visualizar Consulta** | 2d | 2010-05-06 | 2010-05-07 |  |  |
| 72 | 20.1 | Mostrar datos generales de la consulta | 1d | 2010-05-06 | 2010-05-06 |  | 1d |
| 73 | 20.2 | Mostrar datos según el documento elegido | 1d | 2010-05-06 | 2010-05-06 |  | 1d |
| 74 | 21 | **(USR17) Crear/Transferir Consulta** | 4d | 2010-05-06 | 2010-05-11 |  |  |
| 75 | 21.1 | Crear Consulta | 2d | 2010-05-06 | 2010-05-07 |  | 2d |
| 76 | 21.2 | Copiar consulta | 1d | 2010-05-06 | 2010-05-06 |  | 3d |
| 77 | 21.3 | **Transferir Consulta** | 1d | 2010-05-06 | 2010-05-06 |  |  |
| 78 | 21.3.1 | Localizar a otro operador del mismo perfil | 1d | 2010-05-06 | 2010-05-06 |  | 0d |
| 79 | 22 | **(ADM01) Mantenimiento del Entorno, clasif y prioridades** | 17d | 2010-05-07 | 2010-05-31 | 193 |  |
| 80 | 22.1 | Módulo de edición de parametros grales de la aplicación | 3d | 2010-05-07 | 2010-05-11 |  | 14d |
| 81 | 22.2 | Módulo edición listas de clasificaciones (Códigos internos) | 3d | 2010-05-07 | 2010-05-11 |  | 14d |

| ID | WBS | Task | Duration | Start | Finish | Predecessors | Total slack | Free slack |
| --- | --- | --- | --- | --- | --- | --- | --- | --- |
| 82 | 22.3 | **Módulo mantenimiento de la lista de espera** | 2d | 2010-05-07 | 2010-05-10 |  |  |  |
| 83 | 22.3.1 | ABM de la lista de espera | 1d | 2010-05-07 | 2010-05-07 |  | 1d |  |
| 84 | 22.3.2 | Módulo de gestión de prioridades sobre la lista de espera | 1d | 2010-05-07 | 2010-05-07 |  | 1d |  |
| 85 | 22.4 | **Módulo mantenimiento de lineas de servicio** | 2d | 2010-05-07 | 2010-05-10 |  |  |  |
| 86 | 22.4.1 | ABM lineas de servicio | 1d | 2010-05-07 | 2010-05-07 |  | 1d |  |
| 87 | 22.4.2 | ABM servicios para una linea seleccionada | 1d | 2010-05-07 | 2010-05-07 |  | 1d |  |
| 88 | 22.5 | **Módulo mantenimiento agendas** | 4d | 2010-05-07 | 2010-05-12 |  |  |  |
| 89 | 22.5.1 | Asignar operadores a agenda | 1d | 2010-05-07 | 2010-05-07 |  | 3d |  |
| 90 | 22.5.2 | ABM de usuarios de la agenda | 1d | 2010-05-07 | 2010-05-07 |  | 3d |  |
| 91 | 22.5.3 | ABM citas de la agenda | 1d | 2010-05-07 | 2010-05-07 |  | 3d |  |
| 92 | 22.6 | **Módulo mantenimiento BBDD** | 3d | 2010-05-07 | 2010-05-11 |  |  |  |
| 93 | 22.6.1 | Módulo comprobación de formato de archivo | 1d | 2010-05-07 | 2010-05-07 |  | 2d |  |
| 94 | 22.6.2 | Módulo actualización de BBDD | 2d | 2010-05-07 | 2010-05-10 |  | 1d |  |
| 95 | 23 | **(ADM02) Extraccion de estadisticas y listados** | 7d | 2010-05-07 | 2010-05-17 | 143, 149, 153, 194 |  |  |
| 96 | 23.1 | Listados De Administración | 2d | 2010-05-07 | 2010-05-10 |  | 5d |  |
| 97 | 23.2 | **Listados Comunes** | 5d | 2010-05-07 | 2010-05-13 |  |  |  |
| 98 | 23.2.1 | Detalle de estado de finalización consulta/acción | 1d | 2010-05-07 | 2010-05-07 |  | 4d |  |
| 99 | 23.2.2 | Listado de clasificaciones | 1d | 2010-05-07 | 2010-05-07 |  | 4d |  |
| 100 | 23.2.3 | Listados de incidencias en las comunicaciones | 1d | 2010-05-07 | 2010-05-07 |  | 4d |  |
| 101 | 23.2.4 | Ratios por usuario | 1d | 2010-05-07 | 2010-05-07 |  | 4d |  |
| 102 | 23.2.5 | Finales de servicio | 1d | 2010-05-07 | 2010-05-07 |  | 4d |  |
| 103 | 24 | **(ADM03) Mantenimiento de documentos** | 6d | 2010-05-10 | 2010-05-17 | 149, 167, 111 |  |  |
| 104 | 24.1 | Creación y edición de documentos | 2d | 2010-05-13 | 2010-05-14 | 108, 109, 110 | 1d |  |
| 105 | 24.2 | Borrado de documentos | 1d | 2010-05-10 | 2010-05-10 |  | 5d |  |
| 106 | 24.3 | Clasificación de documentos | 1d | 2010-05-10 | 2010-05-10 |  | 5d |  |
| 107 | 24.4 | Búsqueda de documentos | 2d | 2010-05-10 | 2010-05-11 |  | 4d |  |
| 108 | 25 | (ADM04) Mantenimiento de Recursos | 2d | 2010-05-11 | 2010-05-12 | 190 | 1d | 0d |
| 109 | 26 | (ADM05) Mantenimiento de guias de interrogatorio | 2d | 2010-05-11 | 2010-05-12 | 111, 190 | 1d | 0d |
| 110 | 27 | (ADM06) Mantenimiento de Fichas tematicas | 2d | 2010-05-11 | 2010-05-12 | 111, 190 | 1d | 0d |

| ID | WBS | Task | Duration | Start | Finish | Predecessors | Total slack |
| --- | --- | --- | --- | --- | --- | --- | --- |
| 111 | 28 | **(ADM07) Mantenimiento de relaciones sobre guias de interrogatorio y fichas tematicas** | 2d | 2010-05-07 | 2010-05-10 | 190 |  |
| 112 | 28.1 | Adición de documentos a fichas temáticas | 1d | 2010-05-07 | 2010-05-07 |  | 1d |
| 113 | 28.2 | Adición de documentos a guias de interrogatorio | 1d | 2010-05-07 | 2010-05-07 |  | 1d |
| 114 | 29 | **(ADM08) Mantenimiento de encuestas** | 7d | 2010-05-06 | 2010-05-14 |  |  |
| 115 | 29.1 | **Mantenimiento Indice de Encuestas** | 2d | 2010-05-06 | 2010-05-07 |  |  |
| 116 | 29.1.1 | Mantener Ediciones | 1d | 2010-05-06 | 2010-05-06 |  | 1d |
| 117 | 29.1.2 | Cierre de ediciones | 1d | 2010-05-06 | 2010-05-06 |  | 1d |
| 118 | 29.2 | Asignación de formulario a encuesta | 1d | 2010-05-06 | 2010-05-06 |  | 6d |
| 119 | 29.3 | Asignación de operadores a encuesta | 1d | 2010-05-06 | 2010-05-06 |  | 6d |
| 120 | 29.4 | **Asignación lista de encuestados** | 2d | 2010-05-06 | 2010-05-07 |  |  |
| 121 | 29.4.1 | Alta, baja de encuestados | 1d | 2010-05-06 | 2010-05-06 |  | 1d |
| 122 | 29.4.2 | Asignación automática en base a un archivo de texto | 1d | 2010-05-06 | 2010-05-06 |  | 1d |
| 123 | 29.5 | Publicar Encuestas | 1d | 2010-05-06 | 2010-05-06 |  | 6d |
| 124 | 30 | **(ADM09) Mantenimiento de seguimiento de patologias** | 3d | 2010-05-06 | 2010-05-10 |  |  |
| 125 | 30.1 | Mantenimiento Indice de campañas de seguimiento | 1d | 2010-05-06 | 2010-05-06 |  | 2d |
| 126 | 30.2 | Asignación de formulario a campaña de seguimiento | 0.5h | 2010-05-06 | 2010-05-06 |  | 2.94d |
| 127 | 30.3 | Asignación de operadores a campaña de seguimiento | 0.5h | 2010-05-06 | 2010-05-06 |  | 2.94d |
| 128 | 30.4 | Asignación de listas de pacientes | 0.5h | 2010-05-06 | 2010-05-06 |  | 2.94d |
| 129 | 30.5 | Activación/ Desactivación de campañas | 0.5h | 2010-05-06 | 2010-05-06 |  | 2.94d |
| 130 | 31 | **(ADM10) Creacion de formularios de encuesta y seguimiento** | 2d | 2010-05-07 | 2010-05-10 | 191 |  |
| 131 | 31.1 | Mantener Indice de Encuesta | 1d | 2010-05-07 | 2010-05-07 |  | 1d |
| 132 | 31.2 | Crear y Editar Encuestas | 1d | 2010-05-07 | 2010-05-07 |  | 1d |
| 133 | 32 | **(ADM11) Mantenimiento de usuarios, perfiles y permisos** | 6d | 2010-05-07 | 2010-05-14 | 195 |  |
| 134 | 32.1 | Mantenimiento Opciones Funcionales | 1d | 2010-05-07 | 2010-05-07 |  | 5d |

| ID | WBS | Task | Duration | Start | Finish | Total slack |
| --- | --- | --- | --- | --- | --- | --- |
| 135 | 32.2 | **Mantener Perfiles Trabajo** | 2.5d | 2010-05-07 | 2010-05-11 |  |
| 136 | 32.2.1 | Alta, modificación de perfiles | 1d | 2010-05-07 | 2010-05-07 | 1.5d |
| 137 | 32.2.2 | ABM de opciones funcionales a perfil | 1d | 2010-05-07 | 2010-05-07 | 1.5d |
| 138 | 32.2.3 | Adición de responsabilidades a opciones funcionales | 0.5h | 2010-05-07 | 2010-05-07 | 2.44d |
| 139 | 32.3 | **Mantener Usuarios** | 2.5d | 2010-05-07 | 2010-05-11 |  |
| 140 | 32.3.1 | Creación/gestion de usuarios | 1d | 2010-05-07 | 2010-05-07 | 1.5d |
| 141 | 32.3.2 | Asiganción de perfil a usuario | 0.5h | 2010-05-07 | 2010-05-07 | 2.44d |
| 142 | 32.3.3 | Asignación de agendas a usuario | 1d | 2010-05-07 | 2010-05-07 | 1.5d |
| 143 | 33 | **(ADM12) Listado de acciones proactivas** | 10d | 2010-05-06 | 2010-05-19 |  |
| 144 | 33.1 | Módulo de elaboraciónde informes de estado de campaña de seguimiento | 2d | 2010-05-06 | 2010-05-07 | 8d |
| 145 | 33.2 | Módulo de elaboración de informes de estado de encuesta | 2d | 2010-05-06 | 2010-05-07 | 8d |
| 146 | 33.3 | Módulo de elaboración de informes de ediciones de encuestas | 2d | 2010-05-06 | 2010-05-07 | 8d |
| 147 | 33.4 | Módulo de elaboración de listados de campañas de seguimiento | 2d | 2010-05-06 | 2010-05-07 | 8d |
| 148 | 33.5 | Módulo de elaboración de listados de información de encuestas | 2d | 2010-05-06 | 2010-05-07 | 8d |
| 149 | 34 | **(ADM13) Listados de documentos** | 3d | 2010-05-06 | 2010-05-10 |  |
| 150 | 34.1 | Elaboración de listado de configuración | 1d | 2010-05-06 | 2010-05-06 | 2d |
| 151 | 34.2 | Elaboración de listado de uso | 1d | 2010-05-06 | 2010-05-06 | 2d |
| 152 | 34.3 | Elaboración de listado de asociaciones | 1d | 2010-05-06 | 2010-05-06 | 2d |
| 153 | 35 | **(ADM14) Listado sobre consultas** | 8d | 2010-05-06 | 2010-05-17 |  |
| 154 | 35.1 | Módulo de obtención de listados de consulta por ciudadano | 1d | 2010-05-06 | 2010-05-06 | 7d |
| 155 | 35.2 | Módulo de obtención de listados de consultas con cierre principal | 1d | 2010-05-06 | 2010-05-06 | 7d |
| 156 | 35.3 | Módulo de obtención de listados de consulta con cierre secundario | 1d | 2010-05-06 | 2010-05-06 | 7d |
| 157 | 35.4 | Módulo de obtención de listados de consulta por motivo de cierre | 1d | 2010-05-06 | 2010-05-06 | 7d |
| 158 | 35.5 | Módulo de obtención de listado de resumen de consultas por servicio | 1d | 2010-05-06 | 2010-05-06 | 7d |
| 159 | 35.6 | Módulo de obtención de listado de consultas por área geográfica | 1d | 2010-05-06 | 2010-05-06 | 7d |
| 160 | 35.7 | Módulo de obtención de listado de consultas por usuario | 1d | 2010-05-06 | 2010-05-06 | 7d |
| 161 | 35.8 | Módulo de obtención de listado de consultas pendientes | 1d | 2010-05-06 | 2010-05-06 | 7d |

| ID | WBS | Task | Duration | Start | Finish | Predecessors | Total slack | Free slack |
| --- | --- | --- | --- | --- | --- | --- | --- | --- |
| 162 | 36 | **(ADM15) Mantener Asignaciones TSI** | 8d | 2010-06-01 | 2010-06-10 | 79 | 0d |  |
| 163 | 36.1 | **Módulo de envío de datos a CatSalut** | 8d | 2010-06-01 | 2010-06-10 |  |  |  |
| 164 | 36.1.1 | Recolección de datos de operaciones TSI pendientes | 1d | 2010-06-01 | 2010-06-01 |  | 7d |  |
| 165 | 36.1.2 | Migración de los datos a archivo TXT | 2d | 2010-06-01 | 2010-06-02 |  | 6d |  |
| 166 | 36.1.3 | Interface de comunicación con CatSalut | 5d | 2010-06-01 | 2010-06-07 |  | 3d |  |
| 167 | 37 | **(ADM16) Asignar documentos a acciones** | 2d | 2010-05-06 | 2010-05-07 |  |  |  |
| 168 | 37.1 | Creación/eliminación de asociaciones | 1d | 2010-05-06 | 2010-05-06 |  | 1d |  |
| 169 | 37.2 | Caducidad de asociaciones | 1d | 2010-05-06 | 2010-05-06 |  | 1d |  |
| 170 | 38 | **(INT01) Direcciones de farmacias, CAP y otra informacion breve** | 2d | 2010-06-01 | 2010-06-02 | 11, 196, 61, 79 | -4d | 0d |
| 171 | 38.1 | Trabajo con listas de resultados | 2d | 2010-06-01 | 2010-06-02 |  | -4d | 0d |
| 172 | 39 | **(SIS01) Trazabilidad y registro de uso** | 13d | 2010-05-06 | 2010-05-24 |  |  |  |
| 173 | 39.1 | Control Acceso a Consultas | 2d | 2010-05-28 | 2010-05-31 | 23 | -5d | 0d |
| 174 | 39.2 | Control Acceso a Encuestas | 2d | 2010-05-13 | 2010-05-14 | 52 | 6d |  |
| 175 | 39.3 | Control General Acceso al Sistema | 2d | 2010-05-17 | 2010-05-18 | 133 | 4d |  |
| 176 | 39.4 | Control Acceso a Campañas de Seguimiento | 2d | 2010-05-26 | 2010-05-28 | 46 | -3.5d | 0d |
| 177 | 39.5 | Control Acceso a Documentos | 2d | 2010-05-19 | 2010-05-20 | 61 | 2d |  |
| 178 | 39.6 | Control Acceso a Recursos Internos | 2d | 2010-05-06 | 2010-05-07 |  | 11d |  |
| 179 | 39.7 | Historial de Consultas | 1d | 2010-05-06 | 2010-05-06 |  | 12d |  |
| 180 | 40 | **(ISC01) Transferir info, comunicacion a STARS** | 3d | 2010-05-06 | 2010-05-10 |  | 23d |  |
| 181 | 40.1 | Recibir información del sistema de comunicaciones | 3d | 2010-05-06 | 2010-05-10 |  | 23d |  |
| 182 | 41 | **(ISC02) Iniciar llamada desde STARS** | 3d | 2010-05-06 | 2010-05-10 |  | 23d |  |
| 183 | 41.1 | Lanzamiento de petición de comunicación | 3d | 2010-05-06 | 2010-05-10 |  | 23d |  |
| 184 | 42 | **(ISC03) Informacion encuesta** | 1d | 2010-05-06 | 2010-05-06 |  | 25d |  |
| 185 | 42.1 | Activación actividad de encuesta | 1d | 2010-05-06 | 2010-05-06 |  | 25d |  |
| 187 | 43 | ABM Consultas | 1d | 2010-05-06 | 2010-05-06 |  | 25d |  |
| 188 | 44 | ABM Usuarios | 1d | 2010-05-06 | 2010-05-06 |  | 22d | 0d |
| 189 | 45 | Proteccion de Acceso | 3d | 2010-05-07 | 2010-05-11 | 188 | 22d |  |
| 190 | 46 | ABM Fichas / Guias / Recursos | 3d | 2010-05-06 | 2010-05-10 |  | -1d | 0d |
| 191 | 47 | ABM Cuestionarios | 1d | 2010-05-06 | 2010-05-06 |  | 1d | 0d |
| 192 | 48 | Interfaz General | 10d | 2010-05-06 | 2010-05-19 |  | 16d |  |
| 193 | 49 | Interfaz Para Usuario Avanzado | 5d | 2010-05-06 | 2010-05-12 |  | -4d | 0d |
| 194 | 50 | Interfaz de Listados para ADM02 | 5d | 2010-05-06 | 2010-05-12 |  | -4d | 0d |
| 195 | 51 | Interfaz Mantenimiento Usuarios y Perfiles | 5d | 2010-05-06 | 2010-05-12 |  | -4d | 0d |
| 196 | 52 | Interfaz Direcciones INT01 | 5d | 2010-05-06 | 2010-05-12 |  | 9d |  |
| 197 | 53 | ABM Enfermedades / Centros Salud | 2d | 2010-05-06 | 2010-05-07 |  | 24d |  |
| 198 | 54 | Listados Iniciales | 1d | 2010-05-06 | 2010-05-06 |  | 25d |  |
| 199 | 55 | Listado de Usuarios y Perfiles | 1d | 2010-05-06 | 2010-05-06 |  | 1d | 0d |
| 200 | 56 | Interface con sistema de comunicaciones (ISC01, ISC02, ISC03) | 5d | 2010-05-06 | 2010-05-12 |  | 21d |  |
| 202 | 57 | Arquitectura General / Configuracion de Ambientes | 15d | 2010-05-06 | 2010-05-26 |  | 11d |  |

| ID | WBS | Task | Duration | Start | Finish | Total slack |
| --- | --- | --- | --- | --- | --- | --- |
| 203 | 58 | **Tareas IT Sobre Nuestra Empresa** | 19d | 2010-05-06 | 2010-06-01 |  |
| 204 | 58.1 | Compra Equipos Necesarios | 3d | 2010-05-06 | 2010-05-10 | 16d |
| 205 | 58.2 | **Infraestructura** | 8d | 2010-05-06 | 2010-05-17 |  |
| 206 | 58.2.1 | Preparacion de ambiente en servidores | 1d | 2010-05-06 | 2010-05-06 | 7d |
| 207 | 58.2.2 | Instalacion y configuracion de Servidor Dev | 3d | 2010-05-06 | 2010-05-10 | 5d |
| 208 | 58.2.3 | Instalacion y Configuracion de Servidor Usos Multiples | 5d | 2010-05-06 | 2010-05-12 | 3d |
| 209 | 58.2.4 | **Redes** | 3d | 2010-05-06 | 2010-05-10 | 5d |
| 210 | 58.2.4.1 | Configuracion del FW | 3d | 2010-05-06 | 2010-05-10 | 5d |
| 211 | 58.3 | Instalacion de las pcs de usuario | 5d | 2010-05-06 | 2010-05-12 | 14d |
