# Casos Uso

Schedule from MS Project, 2010-05-06 to 2010-10-01, costs in $.
Hexacta

## Calendars

- Standard: Mon-Fri 08:00-12:00, 13:00-17:00; Sat-Sun off.

## Resources

| Resource | Rate |
| --- | --- |
| Programador Jr 1 | 18.75 |
| Programador Jr 2 | 18.75 |
| Programador Sr 1 | 31.25 |
| Programador Sr 2 | 31.25 |
| Tester | 18.75 |
| IT 1 | 25 |
| Arquitecto | 43.75 |
| Prog SSr 1 |  |

## Schedule

| ID | WBS | Task | Duration | Start | Finish | Predecessors | Total slack | Free slack | Constraint | Resources | Work | Cost |
| --- | --- | --- | --- | --- | --- | --- | --- | --- | --- | --- | --- | --- |
| 1 | 1 | Integracion con el Sistema STARS (Lectura Datos) | 5d | 2010-06-04 | 2010-06-10 | 236 | 13d | 0d |  | Programador Sr 1; Programador Sr 2 | 80h | 2,500 |
| 2 | 2 | Modulo Seguridad que Oculta Info Llamado | 3d | 2010-06-11 | 2010-06-15 | 1 | 78d |  |  | Programador Sr 2; Programador Sr 1 | 48h | 1,500 |
| 3 | 3 | **(GEN01) Identificacion y Autenticacion** | 4d | 2010-06-11 | 2010-06-16 | 1 | 65d | 5d |  |  | 48h | 450 |
| 4 | 3.1 | Autenticacion | 2d | 2010-06-11 | 2010-06-14 |  | 66d | 1d | start no earlier than 2010-06-10 | Programador Jr 1 | 16h | 300 |
| 5 | 3.2 | Interfaz Inicio Sesion | 3d | 2010-06-11 | 2010-06-15 |  | 65d | 0d | start no earlier than 2010-06-08 | Prog SSr 1 | 24h |  |
| 6 | 3.3 | Testing Id y Aut | 1d | 2010-06-16 | 2010-06-16 | 5, 4 | 65d |  |  | Tester | 8h | 150 |
| 7 | 4 | **(GEN02) Gestion General de Registros** | 18d | 2010-06-11 | 2010-07-06 | 1 | 63d |  |  |  | 64h | 1,500 |
| 8 | 4.1 | ABM Registro | 1d | 2010-06-24 | 2010-06-24 |  | 69d | 6d | start no earlier than 2010-06-11 | Programador Jr 2 | 8h | 150 |
| 9 | 4.2 | Buscar registro | 1d | 2010-06-25 | 2010-06-25 |  | 68d | 5d | start no earlier than 2010-06-25 | Programador Jr 2 | 8h | 150 |
| 10 | 4.3 | Copiar registro | 1d | 2010-06-11 | 2010-06-11 |  | 76d | 15d | start no earlier than 2010-06-10 | Programador Jr 2 | 8h | 150 |
| 11 | 4.4 | Interfaz ABM Registro | 3d | 2010-06-28 | 2010-06-30 |  | 65d | 2d | start no earlier than 2010-06-28 | Programador Sr 2 | 24h | 750 |
| 12 | 4.5 | Testing Registros | 2d | 2010-07-05 | 2010-07-06 | 11, 9, 8, 10 | 63d |  | start no earlier than 2010-07-05 | Tester | 16h | 300 |
| 13 | 5 | **(USR01) Determinacion del servicio de atencion** | 13d | 2010-08-16 | 2010-09-01 | 94, 40 | 11d | 0d |  |  | 40h | 750 |
| 14 | 5.1 | Capturar la Comunicación???? | 1d | 2010-08-16 | 2010-08-16 |  | 20d | 11d | start no earlier than 2010-08-16 | Programador Jr 1 | 8h | 150 |
| 15 | 5.2 | Determinar el tipo de servicio | 1d | 2010-08-26 | 2010-08-26 |  | 12d | 3d | start no earlier than 2010-08-26 | Programador Jr 1 | 8h | 150 |
| 16 | 5.3 | Lista de Espera | 1d | 2010-08-19 | 2010-08-19 |  | 17d | 8d | start no earlier than 2010-08-19 | Programador Jr 1 | 8h | 150 |
| 17 | 5.4 | Determinar conjunto de operadores adecuados al tipo de solicitud | 1d | 2010-08-30 | 2010-08-30 |  | 10d | 1d | start no earlier than 2010-08-30 | Programador Jr 2 | 8h | 150 |
| 18 | 5.5 | Testing Servicio Atencion | 1d | 2010-09-01 | 2010-09-01 | 14, 15, 16, 17 | 11d |  | start no earlier than 2010-09-01 | Tester | 8h | 150 |
| 19 | 6 | **(USR02) Agenda** | 14d | 2010-07-09 | 2010-07-28 | 3, 90 | 43d | 11d |  |  | 120h | 2,850 |
| 20 | 6.1 | Selección de una agenda | 2d | 2010-07-22 | 2010-07-23 |  | 44d | 1d | start no earlier than 2010-07-22 | Programador Jr 1 | 16h | 300 |
| 21 | 6.2 | ABM citas sobre la agenda | 1d | 2010-07-15 | 2010-07-15 |  | 50d | 7d | start no earlier than 2010-07-15 | Programador Jr 1 | 8h | 150 |
| 22 | 6.3 | Interfaz de la Agenda | 3d | 2010-07-12 | 2010-07-14 |  | 51d | 8d | start no earlier than 2010-07-12 | Programador Jr 1 | 24h | 450 |
| 23 | 6.4 | Integracion con Stars - Llamada desde Agenda | 6d | 2010-07-13 | 2010-07-20 |  | 47d | 4d | start no earlier than 2010-07-13 | Programador Sr 1 | 48h | 1,500 |
| 24 | 6.5 | Asignar pacientes a cita | 1d | 2010-07-09 | 2010-07-09 |  | 54d | 11d | start no earlier than 2010-07-08 | Programador Jr 1 | 8h | 150 |
| 25 | 6.6 | Testing Agenda | 2d | 2010-07-27 | 2010-07-28 | 20, 21, 22, 23, 24 | 43d |  | start no earlier than 2010-07-27 | Tester | 16h | 300 |

| ID | WBS | Task | Duration | Start | Finish | Predecessors | Total slack | Free slack | Constraint | Resources | Work | Cost |
| --- | --- | --- | --- | --- | --- | --- | --- | --- | --- | --- | --- | --- |
| 26 | 7 | **(USR03) Rellamada** | 8d | 2010-08-16 | 2010-08-25 | 40, 72 | 27d |  |  |  | 24h | 150 |
| 27 | 7.1 | Rellamada | 2d | 2010-08-16 | 2010-08-17 |  | 30d | 5d | start no earlier than 2010-08-16 | Prog SSr 1 | 16h |  |
| 28 | 7.2 | Testing Rellamada | 1d | 2010-08-25 | 2010-08-25 | 27 | 27d |  | start no earlier than 2010-08-25 | Tester | 8h | 150 |
| 29 | 8 | **(USR04) Consulta** | 6d | 2010-06-14 | 2010-06-21 | 1 | 10d | 0d |  |  | 72h | 1,750 |
| 30 | 8.1 | **Tratar Consulta** | 2d | 2010-06-14 | 2010-06-15 |  | 14d | 4d |  |  | 16h | 300 |
| 31 | 8.1.1 | Ajornar Consulta | 1d | 2010-06-15 | 2010-06-15 |  | 14d |  | start no earlier than 2010-06-15 | Programador Jr 2 | 8h | 150 |
| 32 | 8.1.2 | Transferir consulta | 1d | 2010-06-14 | 2010-06-14 |  | 15d |  | start no earlier than 2010-06-14 | Programador Jr 2 | 8h | 150 |
| 33 | 8.2 | Modulo Envio de Correo | 2d | 2010-06-15 | 2010-06-16 |  | 13d | 3d | start no earlier than 2010-06-15 | Programador Jr 1 | 16h | 300 |
| 34 | 8.3 | Modulo Envio SMS | 4d | 2010-06-16 | 2010-06-21 |  | 10d | 0d | start no earlier than 2010-06-16 | Programador Sr 1 | 32h | 1,000 |
| 35 | 8.4 | Inclusion en Campaña de Seguimiento | 1d | 2010-06-18 | 2010-06-18 |  | 11d | 1d | start no earlier than 2010-06-18 | Programador Jr 2 | 8h | 150 |
| 36 | 9 | Testing Consulta | 3d | 2010-06-22 | 2010-06-24 | 30, 33, 34, 35 | 71d |  |  | Tester | 24h | 450 |
| 37 | 10 | **(USR05) Consejo Salud** | 5d | 2010-08-23 | 2010-08-27 | 78, 85 | 25d |  |  |  | 24h | 450 |
| 38 | 10.1 | Consejo Salud | 2d | 2010-08-23 | 2010-08-24 |  | 27d | 2d | start no earlier than 2010-08-19 | Programador Jr 2 | 16h | 300 |
| 39 | 10.2 | Testing Consejo Salud | 1d | 2010-08-27 | 2010-08-27 | 38 | 25d |  | start no earlier than 2010-08-27 | Tester | 8h | 150 |
| 40 | 11 | **(USR06) Gestionar Consulta pendiente** | 5d | 2010-08-05 | 2010-08-11 | 29 | 24d | 1d |  |  | 16h | 300 |
| 41 | 11.1 | Priorizacion de la Lista de Consultas | 1d | 2010-08-05 | 2010-08-05 |  | 25d | 3d | start no earlier than 2010-08-05 | Programador Jr 1 | 8h | 150 |
| 42 | 11.2 | Testing USR06 | 1d | 2010-08-11 | 2010-08-11 | 41 | 24d |  | start no earlier than 2010-08-11 | Tester | 8h | 150 |
| 43 | 12 | **(USR07) Programacion de cita previa** | 12d | 2010-08-11 | 2010-08-26 | 85, 94 | 26d |  |  |  | 24h | 150 |
| 44 | 12.1 | Realizar Citación (Interface con Sistema de citación AP) | 2d | 2010-08-11 | 2010-08-12 |  | 33d | 9d | start no earlier than 2010-08-11 | Prog SSr 1 | 16h |  |
| 45 | 12.2 | Testing USR07 | 1d | 2010-08-26 | 2010-08-26 | 44 | 26d |  | start no earlier than 2010-08-26 | Tester | 8h | 150 |
| 46 | 13 | **(USR08) Gestiones sobre la TSI** | 17d | 2010-08-11 | 2010-09-02 | 94, 85, 29, 1 | -36d | 0d |  |  | 48h | 900 |
| 47 | 13.1 | Verificacion Documentacion Necesaria | 1d | 2010-08-11 | 2010-08-11 |  | -21d | 0d | start no earlier than 2010-08-11 | Programador Jr 1 | 8h | 150 |
| 48 | 13.2 | Enviar Gestion (Interface con sistema RCA) | 2d | 2010-08-24 | 2010-08-25 |  | -31d | 0d | start no earlier than 2010-08-24 | Programador Jr 1 | 16h | 300 |
| 49 | 13.3 | Cierre automatico de la consulta por paso de tiempo | 1d | 2010-08-18 | 2010-08-18 |  | -26d | 0d | start no earlier than 2010-08-18 | Programador Jr 1 | 8h | 150 |
| 50 | 13.4 | Guardar LOG gestion TSI | 1d | 2010-08-11 | 2010-08-11 |  | -21d | 0d | start no earlier than 2010-08-05 | Programador Jr 2 | 8h | 150 |
| 51 | 13.5 | Testing | 1d | 2010-09-02 | 2010-09-02 | 47, 48, 49, 50 | -36d | 0d | start no earlier than 2010-09-02 | Tester | 8h | 150 |

| ID | WBS | Task | Duration | Start | Finish | Predecessors | Total slack | Free slack | Constraint | Resources | Work | Cost |
| --- | --- | --- | --- | --- | --- | --- | --- | --- | --- | --- | --- | --- |
| 52 | 14 | **(USR09) Servicio de traduccion** | 22d | 2010-08-02 | 2010-08-31 | 85 | 23d |  |  |  | 88h | 1,800 |
| 53 | 14.1 | Contactar Servicio Externo de Traduccion | 3d | 2010-08-19 | 2010-08-23 |  | 25d | 4d | start no earlier than 2010-08-19 | Prog SSr 1 | 24h |  |
| 54 | 14.2 | Enlace Comunicacion Multiconferencia | 4d | 2010-08-02 | 2010-08-05 |  | 39d | 16d | start no earlier than 2010-07-27 | Programador Sr 2 | 32h | 1,000 |
| 55 | 14.3 | Modulo monitorización de servicio | 2d | 2010-08-11 | 2010-08-12 |  | 32d | 11d | start no earlier than 2010-08-11 | Programador Sr 2 | 16h | 500 |
| 56 | 14.4 | Testing | 2d | 2010-08-30 | 2010-08-31 | 53, 54, 55 | 23d |  | start no earlier than 2010-08-30 | Tester | 16h | 300 |
| 57 | 15 | **(USR10) Informacion Sanitaria General** | 2d | 2010-09-10 | 2010-09-13 | 85, 94, 201 | 14d |  |  |  | 16h | 300 |
| 58 | 15.1 | Guardar Informacion Ciudadano | 1d | 2010-09-10 | 2010-09-10 |  | 14d | 0d | start no earlier than 2010-09-07 | Programador Jr 2 | 8h | 150 |
| 59 | 15.2 | Testing | 1d | 2010-09-13 | 2010-09-13 | 58 | 14d |  | start no earlier than 2010-09-13 | Tester | 8h | 150 |
| 60 | 16 | **(USR11) Seguimiento de Patologias** | 17d | 2010-08-13 | 2010-09-06 | 19, 40 | 19d |  |  |  | 56h | 750 |
| 61 | 16.1 | Buscar Campañas Abiertas | 1d | 2010-08-13 | 2010-08-13 |  | 31d | 14d | start no earlier than 2010-08-13 | Programador Jr 2 | 8h | 150 |
| 62 | 16.2 | **Gestionar Seguimiento** | 10d | 2010-08-13 | 2010-08-26 |  | 24d | 5d |  |  | 24h | 300 |
| 63 | 16.2.1 | Visualizar Historial Pacientes | 1d | 2010-08-13 | 2010-08-13 |  | 31d | 14d | start no earlier than 2010-08-13 | Prog SSr 1 | 8h |  |
| 64 | 16.2.2 | Llamada al Paciente | 2d | 2010-08-25 | 2010-08-26 |  | 22d |  | start no earlier than 2010-08-25 | Programador Jr 2 | 16h | 300 |
| 65 | 16.3 | Desligar paciente de campaña | 1d | 2010-08-27 | 2010-08-27 |  | 21d | 4d | start no earlier than 2010-08-27 | Prog SSr 1 | 8h |  |
| 66 | 16.4 | Testing | 2d | 2010-09-03 | 2010-09-06 | 61, 63, 62, 65 | 19d |  | start no earlier than 2010-09-03 | Tester | 16h | 300 |
| 67 | 17 | **(USR12) Encuestas** | 17d | 2010-07-02 | 2010-07-26 | 154 | 49d |  |  |  | 72h | 1,550 |
| 68 | 17.1 | Interfaz de Encuestas | 3d | 2010-07-20 | 2010-07-22 |  | 49d | 0d | start no earlier than 2010-07-20 | Programador Jr 2 | 24h | 450 |
| 69 | 17.2 | Contacto con Encuestado | 2d | 2010-07-02 | 2010-07-05 |  | 62d | 13d | start no earlier than 2010-06-16 | Programador Sr 2 | 16h | 500 |
| 70 | 17.3 | ABM Formulario De Encuesta | 2d | 2010-07-02 | 2010-07-05 |  | 51d | 13d | start no earlier than 2010-06-16 | Programador Jr 2 | 16h | 300 |
| 71 | 17.4 | Testing | 2d | 2010-07-23 | 2010-07-26 | 68, 69, 70 | 49d |  | start no earlier than 2010-07-19 | Tester | 16h | 300 |
| 72 | 18 | **(USR13) Buscar Consultas** | 15d | 2010-07-09 | 2010-07-29 | 90 | 43d | 11d |  |  | 48h | 900 |
| 73 | 18.1 | **Operativo de Busqueda** | 15d | 2010-07-09 | 2010-07-29 |  | 43d |  |  |  | 48h | 900 |
| 74 | 18.1.1 | Buscar según distintos criterios | 3d | 2010-07-26 | 2010-07-28 |  | 41d | 0d | start no earlier than 2010-07-26 | Programador Jr 2 | 24h | 450 |
| 75 | 18.1.2 | Filtrar resultados de la busqueda según permisos del usuario | 1d | 2010-07-09 | 2010-07-09 |  | 56d | 13d | start no earlier than 2010-07-06 | Programador Jr 2 | 8h | 150 |
| 76 | 18.1.3 | Acotar resultados si los mismos sobrepasan el parametro configurable "n" | 1d | 2010-07-16 | 2010-07-16 |  | 51d | 8d | start no earlier than 2010-07-16 | Programador Jr 2 | 8h | 150 |
| 77 | 18.1.4 | Testing | 1d | 2010-07-29 | 2010-07-29 | 74, 75, 76 | 43d |  | start no earlier than 2010-07-28 | Tester | 8h | 150 |

| ID | WBS | Task | Duration | Start | Finish | Predecessors | Total slack | Free slack | Constraint | Resources | Work | Cost |
| --- | --- | --- | --- | --- | --- | --- | --- | --- | --- | --- | --- | --- |
| 78 | 19 | **(USR14) Hacer Uso de Documentos** | 25d | 2010-07-19 | 2010-08-20 | 29 | 19d | 0d |  |  | 96h | 1,800 |
| 79 | 19.1 | Creación y uso de Guias Interrogatorio | 2d | 2010-08-09 | 2010-08-10 |  | 25d |  | start no earlier than 2010-08-09 | Programador Jr 1 | 16h | 300 |
| 80 | 19.2 | Creación y uso Fichas Tematicas | 2d | 2010-08-12 | 2010-08-13 |  | 20d | 3d | start no earlier than 2010-08-12 | Programador Jr 1 | 16h | 300 |
| 81 | 19.3 | Creación y uso de Recursos | 2d | 2010-07-19 | 2010-07-20 |  | 40d | 21d | start no earlier than 2010-07-19 | Programador Jr 1 | 16h | 300 |
| 82 | 19.4 | Búsqueda y selección de documentos | 2d | 2010-07-27 | 2010-07-28 |  | 32d | 15d | start no earlier than 2010-07-27 | Programador Jr 1 | 16h | 300 |
| 83 | 19.5 | Apertura documentos | 2d | 2010-07-29 | 2010-07-30 |  | 30d | 13d | start no earlier than 2010-07-29 | Programador Jr 1 | 16h | 300 |
| 84 | 19.6 | Testing | 2d | 2010-08-19 | 2010-08-20 | 70, 80, 81, 82, 83 | 19d |  | start no earlier than 2010-08-19 | Tester | 16h | 300 |
| 85 | 20 | **(USR15) Cerrar consulta y dar respuesta al ciudadano** | 25d | 2010-06-28 | 2010-07-30 | 29 | -15d | 0d |  |  | 40h | 750 |
| 86 | 20.1 | Clasificar Finalizacion de Consulta | 2d | 2010-06-28 | 2010-06-29 |  | 7d |  | start no earlier than 2010-06-28 | Programador Jr 1 | 16h | 300 |
| 87 | 20.2 | Adición de motivo de cierre a la consulta | 1d | 2010-07-19 | 2010-07-19 |  | -7d | 0d | start no earlier than 2010-07-19 | Programador Jr 2 | 8h | 150 |
| 88 | 20.3 | Creación de clasificaciones ad-hoc | 1d | 2010-07-23 | 2010-07-23 |  | -11d | 0d | start no earlier than 2010-07-23 | Programador Jr 2 | 8h | 150 |
| 89 | 20.4 | Testing | 1d | 2010-07-30 | 2010-07-30 | 86, 87, 88 | -15d | 0d | start no earlier than 2010-07-30 | Tester | 8h | 150 |
| 90 | 21 | **(USR16) Visualizar Consulta** | 7d | 2010-06-30 | 2010-07-08 | 29 | 49d | 0d |  |  | 40h | 750 |
| 91 | 21.1 | Mostrar datos generales de la consulta | 2d | 2010-07-06 | 2010-07-07 |  | 49d | 0d | start no earlier than 2010-06-30 | Programador Jr 1 | 16h | 300 |
| 92 | 21.2 | Mostrar datos según el documento elegido | 2d | 2010-06-30 | 2010-07-01 |  | 53d | 4d | start no earlier than 2010-06-30 | Programador Jr 1 | 16h | 300 |
| 93 | 21.3 | Testing | 1d | 2010-07-08 | 2010-07-08 | 91, 92 | 49d |  | start no earlier than 2010-07-01 | Tester | 8h | 150 |
| 94 | 22 | **(USR17) Crear/Transferir Consulta** | 36d | 2010-06-22 | 2010-08-10 | 29 | -22d | 0d |  |  | 48h | 900 |
| 95 | 22.1 | Crear Consulta | 2d | 2010-06-22 | 2010-06-23 |  | 10d |  | start no earlier than 2010-06-21 | Programador Jr 1 | 16h | 300 |
| 96 | 22.2 | Copiar consulta | 1d | 2010-06-23 | 2010-06-23 |  | 10d |  | start no earlier than 2010-06-23 | Programador Jr 2 | 8h | 150 |
| 97 | 22.3 | **Transferir Consulta** | 1d | 2010-08-06 | 2010-08-06 |  | -22d | 0d |  |  | 8h | 150 |
| 98 | 22.3.1 | Localizar a otro operador del mismo perfil | 1d | 2010-08-06 | 2010-08-06 |  | -22d | 0d | start no earlier than 2010-08-06 | Programador Jr 1 | 8h | 150 |
| 99 | 22.4 | Testing | 2d | 2010-08-09 | 2010-08-10 | 95, 96, 98 | -22d | 0d | start no earlier than 2010-07-15 | Tester | 16h | 300 |
| 100 | 23 | **(ADM01) Mantenimiento del Entorno, clasif y prioridades** | 51d | 2010-06-04 | 2010-08-13 | 236 | -22d | 0d |  |  | 160h | 3,700 |
| 101 | 23.1 | Módulo de edición de parametros grales de la aplicación | 4d | 2010-07-29 | 2010-08-03 |  | -16d | 0d | start no earlier than 2010-07-29 | Programador Sr 1 | 32h | 1,000 |
| 102 | 23.2 | Módulo edición listas de clasificaciones (Códigos internos) | 3d | 2010-08-04 | 2010-08-06 |  | -19d | 0d | start no earlier than 2010-08-04 | Programador Sr 1 | 24h | 750 |

| ID | WBS | Task | Duration | Start | Finish | Predecessors | Total slack | Free slack | Constraint | Resources | Work | Cost |
| --- | --- | --- | --- | --- | --- | --- | --- | --- | --- | --- | --- | --- |
| 103 | 23.3 | **Módulo mantenimiento de la lista de espera** | 4d | 2010-06-04 | 2010-06-09 |  | 23d |  |  |  | 24h | 150 |
| 104 | 23.3.1 | ABM de la lista de espera | 1d | 2010-06-04 | 2010-06-04 |  | 26d |  | start no earlier than 2010-06-03 | Programador Jr 1 | 8h | 150 |
| 105 | 23.3.2 | Módulo de gestión de prioridades sobre la lista de espera | 2d | 2010-06-08 | 2010-06-09 |  | 23d |  | start no earlier than 2010-06-08 | Prog SSr 1 | 16h |  |
| 106 | 23.4 | **Módulo mantenimiento de lineas de servicio** | 2d | 2010-06-04 | 2010-06-07 |  | 25d |  |  |  | 16h | 300 |
| 107 | 23.4.1 | ABM lineas de servicio | 1d | 2010-06-04 | 2010-06-04 |  | 26d |  |  | Programador Jr 2 | 8h | 150 |
| 108 | 23.4.2 | ABM servicios para una linea seleccionada | 1d | 2010-06-07 | 2010-06-07 |  | 25d |  | start no earlier than 2010-06-07 | Programador Jr 1 | 8h | 150 |
| 109 | 23.5 | **Módulo mantenimiento agendas** | 15d | 2010-06-07 | 2010-06-25 |  | 11d |  |  |  | 24h | 450 |
| 110 | 23.5.1 | Asignar operadores a agenda | 1d | 2010-06-08 | 2010-06-08 |  | 24d |  | start no earlier than 2010-06-08 | Programador Jr 2 | 8h | 150 |
| 111 | 23.5.2 | ABM de usuarios de la agenda | 1d | 2010-06-25 | 2010-06-25 |  | 11d |  | start no earlier than 2010-06-25 | Programador Jr 1 | 8h | 150 |
| 112 | 23.5.3 | ABM citas de la agenda | 1d | 2010-06-07 | 2010-06-07 |  | 25d |  | start no earlier than 2010-06-07 | Programador Jr 2 | 8h | 150 |
| 113 | 23.6 | **Módulo mantenimiento BBDD** | 3d | 2010-08-09 | 2010-08-11 |  | -22d | 0d |  |  | 24h | 750 |
| 114 | 23.6.1 | Módulo comprobación de formato de archivo | 1d | 2010-08-09 | 2010-08-09 |  | -20d | 0d | start no earlier than 2010-08-09 | Programador Sr 1 | 8h | 250 |
| 115 | 23.6.2 | Módulo actualización de BBDD | 2d | 2010-08-10 | 2010-08-11 |  | -22d | 0d | start no earlier than 2010-08-10 | Programador Sr 1 | 16h | 500 |
| 116 | 23.7 | Testing | 2d | 2010-08-12 | 2010-08-13 | 102, 101, 103, 106, 109, 113 | -22d | 0d |  | Tester | 16h | 300 |
| 117 | 24 | **(ADM02) Extraccion de estadisticas y listados** | 6d | 2010-08-16 | 2010-08-23 | 100 | 21d | 1d |  |  | 64h | 1,400 |
| 118 | 24.1 | Listados De Administración | 2d | 2010-08-16 | 2010-08-17 |  | 22d | 3d | start no earlier than 2010-08-16 | Programador Sr 1 | 16h | 500 |
| 119 | 24.2 | **Listados Comunes** | 5d | 2010-08-16 | 2010-08-20 |  | 21d | 0d |  |  | 40h | 750 |
| 120 | 24.2.1 | Detalle de estado de finalización consulta/acción | 1d | 2010-08-18 | 2010-08-18 |  | 21d |  | start no earlier than 2010-08-18 | Programador Jr 2 | 8h | 150 |
| 121 | 24.2.2 | Listado de clasificaciones | 1d | 2010-08-16 | 2010-08-16 |  | 25d |  | start no earlier than 2010-06-29 | Programador Jr 2 | 8h | 150 |
| 122 | 24.2.3 | Listados de incidencias en las comunicaciones | 1d | 2010-08-19 | 2010-08-19 |  | 20d |  | start no earlier than 2010-08-19 | Programador Jr 2 | 8h | 150 |
| 123 | 24.2.4 | Ratios por usuario | 1d | 2010-08-20 | 2010-08-20 |  | 19d |  | start no earlier than 2010-08-20 | Programador Jr 2 | 8h | 150 |
| 124 | 24.2.5 | Finales de servicio | 1d | 2010-08-17 | 2010-08-17 |  | 22d |  | start no earlier than 2010-08-17 | Programador Jr 1 | 8h | 150 |
| 125 | 24.3 | Testing | 1d | 2010-08-23 | 2010-08-23 | 118, 119 | 21d |  | start no earlier than 2010-08-23 | Tester | 8h | 150 |
| 126 | 25 | **(ADM03) Mantenimiento de documentos** | 6d | 2010-08-31 | 2010-09-07 | 134 | 16d | 0d |  |  | 48h | 1,100 |
| 127 | 25.1 | Creación y edición de documentos | 2d | 2010-09-06 | 2010-09-07 | 131, 132, 133 | 16d |  | start no earlier than 2010-09-06 | Programador Sr 2 | 16h | 500 |
| 128 | 25.2 | Borrado de documentos | 1d | 2010-09-06 | 2010-09-06 |  | 15d |  | start no earlier than 2010-09-06 | Programador Jr 2 | 8h | 150 |
| 129 | 25.3 | Clasificación de documentos | 1d | 2010-08-31 | 2010-08-31 |  | 19d |  | start no earlier than 2010-08-31 | Programador Jr 2 | 8h | 150 |
| 130 | 25.4 | Búsqueda de documentos | 2d | 2010-09-06 | 2010-09-07 |  | 14d |  | start no earlier than 2010-09-06 | Programador Jr 1 | 16h | 300 |
| 131 | 26 | (ADM04) Mantenimiento de Recursos | 3d | 2010-08-23 | 2010-08-25 | 78 | 19d | 0d | start no earlier than 2010-08-02 | Programador Sr 2 | 24h | 750 |
| 132 | 27 | (ADM05) Mantenimiento de guias de interrogatorio | 3d | 2010-08-30 | 2010-09-01 | 134, 78 | 16d | 2d | start no earlier than 2010-08-30 | Prog SSr 1 | 24h |  |
| 133 | 28 | (ADM06) Mantenimiento de Fichas tematicas | 3d | 2010-08-30 | 2010-09-01 | 134, 78 | 18d | 2d | start no earlier than 2010-08-27 | Programador Sr 1 | 24h | 750 |

| ID | WBS | Task | Type | Duration | Start | Finish | Predecessors | Total slack | Free slack | Constraint | Resources | Work | Cost |
| --- | --- | --- | --- | --- | --- | --- | --- | --- | --- | --- | --- | --- | --- |
| 134 | 29 | **(ADM07) Mantenimiento de relaciones sobre guias de interrogatorio y fichas tematicas** |  | 2d | 2010-08-26 | 2010-08-27 | 131 | 18d | 0d |  |  | 16h | 150 |
| 135 | 29.1 | Adición de documentos a fichas temáticas |  | 1d | 2010-08-27 | 2010-08-27 |  | 16d |  | start no earlier than 2010-08-27 | Programador Jr 2 | 8h | 150 |
| 136 | 29.2 | Adición de documentos a guias de interrogatorio |  | 1d | 2010-08-26 | 2010-08-26 |  | 17d |  | start no earlier than 2010-08-26 | Prog SSr 1 | 8h |  |
| 137 | 30 | **(ADM08) Mantenimiento de encuestas** |  | 14d | 2010-07-02 | 2010-07-21 | 154 | 52d |  |  |  | 64h | 1,200 |
| 138 | 30.1 | **Mantenimiento Indice de Encuestas** |  | 3d | 2010-07-12 | 2010-07-14 |  | 57d |  |  |  | 24h | 450 |
| 139 | 30.1.1 | Mantener Ediciones |  | 2d | 2010-07-12 | 2010-07-13 |  | 56d |  | start no earlier than 2010-07-12 | Programador Jr 2 | 16h | 300 |
| 140 | 30.1.2 | Cierre de ediciones |  | 1d | 2010-07-14 | 2010-07-14 |  | 55d |  | start no earlier than 2010-07-14 | Programador Jr 2 | 8h | 150 |
| 141 | 30.2 | Asignación de formulario a encuesta |  | 1d | 2010-07-16 | 2010-07-16 |  | 53d |  | start no earlier than 2010-07-16 | Programador Jr 1 | 8h | 150 |
| 142 | 30.3 | Asignación de operadores a encuesta |  | 1d | 2010-07-02 | 2010-07-02 |  | 65d |  | start no earlier than 2010-07-02 | Programador Jr 1 | 8h | 150 |
| 143 | 30.4 | **Asignación lista de encuestados** |  | 11d | 2010-07-07 | 2010-07-21 |  | 52d |  |  |  | 16h | 300 |
| 144 | 30.4.1 | Alta, baja de encuestados |  | 1d | 2010-07-07 | 2010-07-07 |  | 60d |  | start no earlier than 2010-07-07 | Programador Jr 2 | 8h | 150 |
| 145 | 30.4.2 | Asignación automática en base a un archivo de texto |  | 1d | 2010-07-21 | 2010-07-21 |  | 50d |  | start no earlier than 2010-07-21 | Programador Jr 1 | 8h | 150 |
| 146 | 30.5 | Publicar Encuestas |  | 1d | 2010-07-15 | 2010-07-15 |  | 54d |  | start no earlier than 2010-07-15 | Programador Jr 2 | 8h | 150 |
| 147 | 31 | **(ADM09) Mantenimiento de seguimiento de patologias** |  | 6d | 2010-08-16 | 2010-08-23 | 100 | 24d | 1d |  |  | 48h | 950 |
| 148 | 31.1 | Mantenimiento Indice de campañas de seguimiento |  | 2d | 2010-08-16 | 2010-08-17 |  | 26d |  | start no earlier than 2010-08-16 | Programador Sr 2 | 16h | 500 |
| 149 | 31.2 | Asignación de formulario a campaña de seguimiento |  | 1d | 2010-08-20 | 2010-08-20 |  | 23d |  | start no earlier than 2010-08-20 | Programador Jr 1 | 8h | 150 |
| 150 | 31.3 | Asignación de operadores a campaña de seguimiento |  | 1d | 2010-08-23 | 2010-08-23 |  | 22d |  | start no earlier than 2010-08-23 | Programador Jr 1 | 8h | 150 |
| 151 | 31.4 | Asignación de listas de pacientes |  | 1d | 2010-08-18 | 2010-08-18 |  | 25d |  | start no earlier than 2010-08-18 | Prog SSr 1 | 8h |  |
| 152 | 31.5 | Activación/ Desactivación de campañas |  | 1d | 2010-08-17 | 2010-08-17 |  | 26d |  | start no earlier than 2010-08-17 | Programador Jr 2 | 8h | 150 |
| 153 | 32 | Testing ADM 3 al 9 | manual | 3d | 2010-08-16 | 2010-08-18 |  |  |  |  | Tester | 24h | 450 |
| 154 | 33 | **(ADM10) Creacion de formularios de encuesta y seguimiento** |  | 20d | 2010-06-04 | 2010-07-01 | 236 | 51d | 0d |  |  | 40h | 650 |
| 155 | 33.1 | Mantener Indice de Encuesta |  | 2d | 2010-06-28 | 2010-06-29 |  | 50d | 1d | start no earlier than 2010-06-28 | Programador Sr 1 | 16h | 500 |
| 156 | 33.2 | Crear y Editar Encuestas |  | 2d | 2010-06-04 | 2010-06-07 |  | 66d | 17d |  | Prog SSr 1 | 16h |  |
| 157 | 33.3 | Testing Creacion Formularios Enc y Seg |  | 1d | 2010-07-01 | 2010-07-01 | 155, 156 | 51d |  | start no earlier than 2010-07-01 | Tester | 8h | 150 |

| ID | WBS | Task | Duration | Start | Finish | Predecessors | Total slack | Free slack | Constraint | Resources | Work | Cost |
| --- | --- | --- | --- | --- | --- | --- | --- | --- | --- | --- | --- | --- |
| 158 | 34 | **(ADM11) Mantenimiento de usuarios, perfiles y permisos** | 9d | 2010-06-16 | 2010-06-28 | 1 | 61d | 7d |  |  | 64h | 1,400 |
| 159 | 34.1 | Mantenimiento Opciones Funcionales | 2d | 2010-06-16 | 2010-06-17 |  | 66d | 8d | start no earlier than 2010-06-16 | Programador Sr 2 | 16h | 500 |
| 160 | 34.2 | **Mantener Perfiles Trabajo** | 3d | 2010-06-16 | 2010-06-18 |  | 67d | 7d |  |  | 24h | 450 |
| 161 | 34.2.1 | Alta, modificación de perfiles | 1d | 2010-06-18 | 2010-06-18 |  | 65d |  | start no earlier than 2010-06-18 | Programador Jr 1 | 8h | 150 |
| 162 | 34.2.2 | ABM de opciones funcionales a perfil | 1d | 2010-06-16 | 2010-06-16 |  | 67d |  | start no earlier than 2010-06-16 | Programador Jr 2 | 8h | 150 |
| 163 | 34.2.3 | Adición de responsabilidades a opciones funcionales | 1d | 2010-06-17 | 2010-06-17 |  | 66d |  | start no earlier than 2010-06-17 | Programador Jr 2 | 8h | 150 |
| 164 | 34.3 | **Mantener Usuarios** | 8d | 2010-06-17 | 2010-06-28 |  | 61d | 1d |  |  | 24h | 450 |
| 165 | 34.3.1 | Creación/gestion de usuarios | 1d | 2010-06-17 | 2010-06-17 |  | 66d |  | start no earlier than 2010-06-17 | Programador Jr 1 | 8h | 150 |
| 166 | 34.3.2 | Asiganción de perfil a usuario | 1d | 2010-06-21 | 2010-06-21 |  | 64d |  | start no earlier than 2010-06-21 | Programador Jr 2 | 8h | 150 |
| 167 | 34.3.3 | Asignación de agendas a usuario | 1d | 2010-06-28 | 2010-06-28 |  | 59d |  | start no earlier than 2010-06-28 | Programador Jr 2 | 8h | 150 |
| 168 | 35 | Testing Mantenimiento Usuarios | 1d | 2010-06-30 | 2010-06-30 | 159, 160, 164 | 67d |  | start no earlier than 2010-06-30 | Tester | 8h | 150 |
| 169 | 36 | **(ADM12) Listado de acciones proactivas** | 16d | 2010-08-25 | 2010-09-15 | 117, 147 | 12d |  |  |  | 136h | 4,050 |
| 170 | 36.1 | Módulo de elaboraciónde informes de estado de campaña de seguimiento | 3d | 2010-08-25 | 2010-08-27 |  | 21d | 9d | start no earlier than 2010-08-25 | Programador Sr 1 | 24h | 750 |
| 171 | 36.2 | Módulo de elaboración de informes de estado de encuesta | 3d | 2010-08-26 | 2010-08-30 |  | 20d | 10d | start no earlier than 2010-08-26 | Programador Sr 2 | 24h | 750 |
| 172 | 36.3 | Módulo de elaboración de informes de ediciones de encuestas | 3d | 2010-09-02 | 2010-09-06 |  | 15d | 3d | start no earlier than 2010-09-02 | Programador Sr 1 | 24h | 750 |
| 173 | 36.4 | Módulo de elaboración de listados de campañas de seguimiento | 3d | 2010-09-08 | 2010-09-10 |  | 11d | 1d | start no earlier than 2010-09-08 | Programador Sr 2 | 24h | 750 |
| 174 | 36.5 | Módulo de elaboración de listados de información de encuestas | 3d | 2010-09-09 | 2010-09-13 |  | 10d | 0d | start no earlier than 2010-09-09 | Programador Sr 1 | 24h | 750 |
| 175 | 36.6 | Testing Listados Proactivas | 2d | 2010-09-14 | 2010-09-15 | 170, 171, 172, 173, 174 | 12d |  | start no earlier than 2010-09-10 | Tester | 16h | 300 |
| 176 | 37 | **(ADM13) Listados de documentos** | 3d | 2010-09-08 | 2010-09-10 | 117, 126 | 15d |  |  |  | 32h | 600 |
| 177 | 37.1 | Elaboración de listado de configuración | 1d | 2010-09-08 | 2010-09-08 |  | 16d | 1d | start no earlier than 2010-09-07 | Programador Jr 1 | 8h | 150 |
| 178 | 37.2 | Elaboración de listado de uso | 1d | 2010-09-08 | 2010-09-08 |  | 16d | 1d | start no earlier than 2010-09-06 | Programador Jr 2 | 8h | 150 |
| 179 | 37.3 | Elaboración de listado de asociaciones | 1d | 2010-09-09 | 2010-09-09 |  | 13d | 0d | start no earlier than 2010-09-09 | Programador Jr 2 | 8h | 150 |
| 180 | 37.4 | Testing Listado Docs | 1d | 2010-09-10 | 2010-09-10 | 177, 178, 179 | 15d |  | start no earlier than 2010-09-10 | Tester | 8h | 150 |
| 181 | 38 | **(ADM14) Listado sobre consultas** | 16d | 2010-08-31 | 2010-09-21 | 117, 29 | 8d |  |  |  | 144h | 3,300 |
| 182 | 38.1 | Módulo de obtención de listados de consulta por ciudadano | 2d | 2010-09-13 | 2010-09-14 |  | 9d | 3d | start no earlier than 2010-09-13 | Prog SSr 1 | 16h |  |
| 183 | 38.2 | Módulo de obtención de listados de consultas con cierre principal | 2d | 2010-08-31 | 2010-09-01 |  | 18d | 3d | start no earlier than 2010-08-31 | Programador Sr 2 | 16h | 500 |
| 184 | 38.3 | Módulo de obtención de listados de consulta con cierre secundario | 2d | 2010-09-02 | 2010-09-03 |  | 16d | 1d | start no earlier than 2010-09-02 | Programador Sr 2 | 16h | 500 |
| 185 | 38.4 | Módulo de obtención de listados de consulta por motivo de cierre | 2d | 2010-09-09 | 2010-09-10 |  | 11d | 5d | start no earlier than 2010-09-09 | Prog SSr 1 | 16h |  |
| 186 | 38.5 | Módulo de obtención de listado de resumen de consultas por servicio | 2d | 2010-09-16 | 2010-09-17 |  | 6d | 0d | start no earlier than 2010-09-16 | Programador Sr 1 | 16h | 500 |
| 187 | 38.6 | Módulo de obtención de listado de consultas por área geográfica | 2d | 2010-09-13 | 2010-09-14 |  | 9d | 0d | start no earlier than 2010-09-13 | Programador Sr 2 | 16h | 500 |
| 188 | 38.7 | Módulo de obtención de listado de consultas por usuario | 2d | 2010-09-14 | 2010-09-15 |  | 8d | 0d | start no earlier than 2010-09-14 | Programador Sr 1 | 16h | 500 |
| 189 | 38.8 | Módulo de obtención de listado de consultas pendientes | 2d | 2010-09-15 | 2010-09-16 |  | 7d | 0d | start no earlier than 2010-09-15 | Programador Sr 2 | 16h | 500 |
| 190 | 38.9 | Testing Listado Consultas | 2d | 2010-09-20 | 2010-09-21 | 182, 183, 184, 185, 186, 187, 188, 189 | 8d |  | start no earlier than 2010-09-20 | Tester | 16h | 300 |

| ID | WBS | Task | Duration | Start | Finish | Predecessors | Total slack | Free slack | Constraint | Resources | Work | Cost |
| --- | --- | --- | --- | --- | --- | --- | --- | --- | --- | --- | --- | --- |
| 191 | 39 | **(ADM15) Mantener Asignaciones TSI** | 47d | 2010-07-15 | 2010-09-17 | 100, 46 | 0d |  |  |  | 96h | 2,300 |
| 192 | 39.1 | **Módulo de envío de datos a CatSalut** | 3d | 2010-07-23 | 2010-07-27 |  |  |  |  |  | 80h | 2,000 |
| 193 | 39.1.1 | Recolección de datos de operaciones TSI pendientes | 3d | 2010-08-02 | 2010-08-04 |  | 40d |  | start no earlier than 2010-08-02 | Programador Jr 1 | 24h | 450 |
| 194 | 39.1.2 | Migración de los datos a archivo TXT | 2d | 2010-07-29 | 2010-07-30 |  | 43d |  | start no earlier than 2010-07-29 | Programador Jr 2 | 16h | 300 |
| 195 | 39.1.3 | Interface de comunicación con CatSalut | 5d | 2010-07-15 | 2010-07-21 |  | 50d |  | start no earlier than 2010-07-15 | Programador Sr 2 | 40h | 1,250 |
| 196 | 39.2 | Testing TSI | 2d | 2010-09-16 | 2010-09-17 | 192 | 8d |  | start no earlier than 2010-09-16 | Tester | 16h | 300 |
| 197 | 40 | **(ADM16) Asignar documentos a acciones** | 11d | 2010-09-08 | 2010-09-22 | 126 | 7d |  |  |  | 24h | 550 |
| 198 | 40.1 | Creación/eliminación de asociaciones | 1d | 2010-09-13 | 2010-09-13 |  | 11d | 4d | start no earlier than 2010-09-13 | Programador Jr 2 | 8h | 150 |
| 199 | 40.2 | Cadicidad de asociaciones | 1d | 2010-09-08 | 2010-09-08 |  | 16d | 9d | start no earlier than 2010-09-07 | Programador Sr 1 | 8h | 250 |
| 200 | 40.3 | Testing Asignacion Docs a Acciones | 1d | 2010-09-22 | 2010-09-22 | 198, 199 | 7d |  | start no earlier than 2010-09-22 | Tester | 8h | 150 |
| 201 | 41 | **(INT01) Direcciones de farmacias, CAP y otra informacion breve** | 6d | 2010-09-02 | 2010-09-09 | 13, 78, 100 | 8d | 0d |  |  | 24h | 450 |
| 202 | 41.1 | Trabajo con listas de resultados | 2d | 2010-09-02 | 2010-09-03 |  | 11d | 3d | start no earlier than 2010-09-01 | Programador Jr 1 | 16h | 300 |
| 203 | 41.2 | Testing Dirs | 1d | 2010-09-09 | 2010-09-09 | 202 | 8d |  | start no earlier than 2010-09-09 | Tester | 8h | 150 |
| 204 | 42 | **(SIS01) Trazabilidad y registro de uso** | 32d | 2010-06-21 | 2010-08-03 | 1 | 43d |  |  |  | 128h | 3,300 |
| 205 | 42.1 | Control Acceso a Consultas | 2d | 2010-06-22 | 2010-06-23 |  | 68d | 27d | start no earlier than 2010-06-22 | Programador Sr 1 | 16h | 500 |
| 206 | 42.2 | Control Acceso a Encuestas | 2d | 2010-07-06 | 2010-07-07 |  | 58d | 17d | start no earlier than 2010-07-06 | Programador Sr 2 | 16h | 500 |
| 207 | 42.3 | Control General Acceso al Sistema | 2d | 2010-06-24 | 2010-06-25 |  | 66d | 25d | start no earlier than 2010-06-24 | Programador Sr 1 | 16h | 500 |
| 208 | 42.4 | Control Acceso a Campañas de Seguimiento | 2d | 2010-06-21 | 2010-06-23 |  | 68.5d | 27.5d | start no earlier than 2010-06-21 | Programador Sr 2 | 16h | 500 |
| 209 | 42.5 | Control Acceso a Documentos | 2d | 2010-07-08 | 2010-07-09 |  | 56d | 15d | start no earlier than 2010-07-08 | Programador Sr 2 | 16h | 500 |
| 210 | 42.6 | Control Acceso a Recursos Internos | 2d | 2010-06-21 | 2010-06-24 |  | 67d | 26d |  | Programador Sr 2 | 16h | 500 |
| 211 | 42.7 | Historial de Consultas | 2d | 2010-07-29 | 2010-07-30 |  | 41d | 0d | start no earlier than 2010-06-17 | Prog SSr 1 | 16h |  |
| 212 | 42.8 | Testing Trazabilidad / Registro | 2d | 2010-08-02 | 2010-08-03 | 205, 206, 207, 208, 209, 210, 211 | 43d |  | start no earlier than 2010-06-30 | Tester | 16h | 300 |
| 213 | 43 | **(ISC01) Transferir info, comunicacion a STARS** | 6d | 2010-06-16 | 2010-06-23 | 1 | 72d |  |  |  | 48h |  |
| 214 | 43.1 | Recibir información del sistema de comunicaciones | 6d | 2010-06-16 | 2010-06-23 |  | 70d |  | start no earlier than 2010-06-16 | Prog SSr 1 | 48h |  |

| ID | WBS | Task | Duration | Start | Finish | Predecessors | Total slack | Free slack | Constraint | Resources | Work | Cost |
| --- | --- | --- | --- | --- | --- | --- | --- | --- | --- | --- | --- | --- |
| 215 | 44 | **(ISC02) Iniciar llamada desde STARS** | 13d | 2010-07-21 | 2010-08-06 | 1 | 40d |  |  |  | 56h | 1,650 |
| 216 | 44.1 | Lanzamiento de petición de comunicación | 6d | 2010-07-21 | 2010-07-28 |  | 44d | 6d | start no earlier than 2010-07-21 | Programador Sr 1 | 48h | 1,500 |
| 217 | 44.2 | Testing Inicio Llamada STARS | 1d | 2010-08-06 | 2010-08-06 | 216 | 40d |  | start no earlier than 2010-08-06 | Tester | 8h | 150 |
| 218 | 45 | **(ISC03) Informacion encuesta** | 1d | 2010-07-08 | 2010-07-08 | 154 | 61d |  |  |  | 8h | 150 |
| 219 | 45.1 | Activación actividad de encuesta | 1d | 2010-07-08 | 2010-07-08 |  | 61d |  | start no earlier than 2010-07-08 | Programador Jr 2 | 8h | 150 |
| 220 | 46 | ABM Consultas | 1d | 2010-06-22 | 2010-06-22 | 29 | 67d | 64d | start no earlier than 2010-06-22 | Programador Jr 2 | 8h | 150 |
| 221 | 47 | ABM Usuarios | 1d | 2010-06-24 | 2010-06-24 | 3 | 67d | 11d | start no earlier than 2010-06-24 | Programador Jr 1 | 8h | 150 |
| 222 | 48 | Proteccion de Acceso | 3d | 2010-07-12 | 2010-07-14 | 221 | 57d |  | start no earlier than 2010-07-12 | Programador Sr 2 | 24h | 750 |
| 223 | 49 | ABM Fichas / Guias / Recursos | 3d | 2010-08-27 | 2010-08-31 | 131 | 19d | 16d | start no earlier than 2010-08-27 | Programador Jr 1 | 24h | 450 |
| 224 | 50 | ABM Cuestionarios | 1d | 2010-07-05 | 2010-07-05 | 154 | 60d | 57d | start no earlier than 2010-07-05 | Programador Jr 1 | 8h | 150 |
| 225 | 51 | Interfaz General | 20d | 2010-06-24 | 2010-07-21 | 1 | 47d |  | start no earlier than 2010-06-24 | Prog SSr 1 | 160h |  |
| 226 | 52 | Interfaz Para Usuario Avanzado | 5d | 2010-08-18 | 2010-08-24 | 100 | 25d |  | start no earlier than 2010-08-18 | Programador Sr 1 | 40h | 1,250 |
| 227 | 53 | Interfaz de Listados para ADM02 | 5d | 2010-09-02 | 2010-09-08 | 117 | 12d |  | start no earlier than 2010-09-02 | Prog SSr 1 | 40h |  |
| 228 | 54 | Interfaz Mantenimiento Usuarios y Perfiles | 5d | 2010-07-22 | 2010-07-28 | 158 | 44d |  | start no earlier than 2010-07-22 | Programador Sr 2 | 40h | 1,250 |
| 229 | 55 | Interfaz Direcciones INT01 | 5d | 2010-09-15 | 2010-09-21 | 201 | 5d |  | start no earlier than 2010-09-15 | Prog SSr 1 | 40h |  |
| 230 | 56 | ABM Enfermedades / Centros Salud | 2d | 2010-09-10 | 2010-09-13 | 201 | 10d | 7d | start no earlier than 2010-09-08 | Programador Jr 1 | 16h | 300 |
| 231 | 57 | Listado de Usuarios y Perfiles | 1d | 2010-07-08 | 2010-07-08 | 158 | 61d |  | start no earlier than 2010-07-08 | Programador Jr 1 | 8h | 150 |
| 232 | 58 | Interface con sistema de comunicaciones (ISC01, ISC02, ISC03) | 9d | 2010-06-30 | 2010-07-12 | 1 | 56d |  | start no earlier than 2010-06-30 | Programador Sr 1 | 72h | 2,250 |
| 233 | 59 | Testing ABMs Varios | 4d | 2010-09-23 | 2010-09-28 | 220, 221, 223, 224, 230 | 3d |  | start no earlier than 2010-09-23 | Tester | 32h | 600 |
| 234 | 60 | Testing Interfaces Varias | 3d | 2010-09-29 | 2010-10-01 | 225, 226, 227, 228, 229, 232 | 0d |  | start no earlier than 2010-09-29 | Tester | 24h | 450 |
| 236 | 61 | Arquitectura General / Configuracion Ambientes | 15d | 2010-05-14 | 2010-06-03 | 241 | 13d | 0d |  | Arquitecto | 120h | 5,250 |
| 237 | 62 | **Tareas IT Sobre Nuestra Empresa** | 24d | 2010-05-06 | 2010-06-08 |  | 15d |  |  |  | 176h | 4,000 |
| 238 | 62.1 | Compra Equipos Necesarios | 2d | 2010-05-06 | 2010-05-07 |  | 101d | 0d | start no earlier than 2010-05-06 | Programador Jr 1; Programador Jr 2 | 32h | 600 |
| 239 | 62.2 | **Infraestructura** | 11d | 2010-05-06 | 2010-05-20 |  | 15d | 10d |  |  | 88h | 2,200 |
| 240 | 62.2.1 | Preparacion de Ambientes en servidores | 2d | 2010-05-06 | 2010-05-07 |  | 98d |  | start no earlier than 2010-05-06 | IT 1 | 16h | 400 |
| 241 | 62.2.2 | Instalacion y Configuracion de Servidor DEV | 4d | 2010-05-10 | 2010-05-13 |  | 13d | 0d | start no earlier than 2010-05-10 | IT 1 | 32h | 800 |
| 242 | 62.2.3 | Instalacion y Configuracion de Servidores de Usos Multiples | 5d | 2010-05-14 | 2010-05-20 |  | 89d |  | start no earlier than 2010-05-14 | IT 1 | 40h | 1,000 |

| ID | WBS | Task | Duration | Start | Finish | Predecessors | Total slack | Constraint | Resources | Work | Cost |
| --- | --- | --- | --- | --- | --- | --- | --- | --- | --- | --- | --- |
| 243 | 62.3 | **Redes** | 3d | 2010-06-04 | 2010-06-08 | 239 | 83d |  |  | 24h | 600 |
| 244 | 62.3.1 | Configuracion del FW | 3d | 2010-06-04 | 2010-06-08 |  | 79d | start no earlier than 2010-06-04 | IT 1 | 24h | 600 |
| 245 | 62.4 | Instalacion de pcs nuevos usuarios | 2d | 2010-05-10 | 2010-05-11 | 238 | 101d | start no earlier than 2010-05-07 | Programador Jr 1; Programador Jr 2 | 32h | 600 |
