# Casos Uso

Schedule from MS Project, 2010-05-06 to 2010-09-01, costs in $.
Hexacta

## Calendars

- Standard: Mon-Fri 08:00-12:00, 13:00-17:00; Sat-Sun off.

## Resources

| Resource | Rate |
| --- | --- |
| Programador Jr 1 | 18.75 |
| Programador Jr 2 | 18.75 |
| Programador Sr 1 | 31.25 |
| Programador Sr 2 | 31.25 |
| Tester | 18.75 |
| IT 1 | 25 |
| Arquitecto | 43.75 |
| Prog SSr 1 |  |
| Prog SSr 2 |  |

## Schedule

| ID | WBS | Task | Duration | Start | Finish | Predecessors | Total slack | Free slack | Constraint | Resources | Work | Cost |
| --- | --- | --- | --- | --- | --- | --- | --- | --- | --- | --- | --- | --- |
| 1 | 1 | Integracion con el Sistema STARS (Lectura Datos) | 4d | 2010-06-02 | 2010-06-07 | 236 | 21d | 0d |  | Programador Sr 1; Programador Sr 2 | 64h | 2,000 |
| 2 | 2 | Modulo Seguridad que Oculta Info Llamado | 1.5d | 2010-06-08 | 2010-06-09 | 1 | 60.5d |  |  | Programador Sr 2; Programador Sr 1 | 24h | 750 |
| 3 | 3 | **(GEN01) Identificacion y Autenticacion** | 4d | 2010-06-08 | 2010-06-11 | 1 | 45d | 0d |  |  | 48h | 150 |
| 4 | 3.1 | Autenticacion | 2d | 2010-06-08 | 2010-06-09 |  | 44d | 1d |  | Prog SSr 1 | 16h |  |
| 5 | 3.2 | Interfaz Inicio Sesion | 3d | 2010-06-08 | 2010-06-10 |  | 43d | 0d |  | Prog SSr 2 | 24h |  |
| 6 | 3.3 | Testing Id y Aut | 1d | 2010-06-11 | 2010-06-11 | 5, 4 | 43d |  |  | Tester | 8h | 150 |
| 7 | 4 | **(GEN02) Gestion General de Registros** | 10d | 2010-06-08 | 2010-06-21 | 1 | 52d |  |  |  | 64h | 750 |
| 8 | 4.1 | ABM Registro | 1d | 2010-06-10 | 2010-06-10 |  | 53d | 5d | start no earlier than 2010-06-10 | Programador Jr 1 | 8h | 150 |
| 9 | 4.2 | Buscar registro | 1d | 2010-06-11 | 2010-06-14 |  | 51.5d | 3.5d | start no earlier than 2010-06-11 | Programador Jr 1 | 8h | 150 |
| 10 | 4.3 | Copiar registro | 1d | 2010-06-08 | 2010-06-08 |  | 55d | 7d | start no earlier than 2010-06-07 | Programador Jr 1 | 8h | 150 |
| 11 | 4.4 | Interfaz ABM Registro | 3d | 2010-06-15 | 2010-06-17 |  | 48d | 0d |  | Prog SSr 2 | 24h |  |
| 12 | 4.5 | Testing Registros | 2d | 2010-06-18 | 2010-06-21 | 11, 9, 8, 10 | 48d |  |  | Tester | 16h | 300 |
| 13 | 5 | **(USR01) Determinacion del servicio de atencion** | 7d | 2010-07-29 | 2010-08-06 | 94, 40 | 7d | 1d |  |  | 40h | 750 |
| 14 | 5.1 | Capturar la Comunicación???? | 1d | 2010-07-29 | 2010-07-29 |  | 11d | 5d | start no earlier than 2010-07-26 | Programador Jr 1 | 8h | 150 |
| 15 | 5.2 | Determinar el tipo de servicio | 1d | 2010-08-02 | 2010-08-02 |  | 14d | 1d | start no earlier than 2010-08-02 | Programador Jr 1 | 8h | 150 |
| 16 | 5.3 | Lista de Espera | 1d | 2010-08-03 | 2010-08-03 |  | 13d | 0d | start no earlier than 2010-08-03 | Programador Jr 1 | 8h | 150 |
| 17 | 5.4 | Determinar conjunto de operadores adecuados al tipo de solicitud | 1d | 2010-07-30 | 2010-07-30 |  | 10d | 4d | start no earlier than 2010-07-30 | Programador Jr 2 | 8h | 150 |
| 18 | 5.5 | Testing Servicio Atencion | 1d | 2010-08-06 | 2010-08-06 | 14, 15, 16, 17 | 6d |  | start no earlier than 2010-08-06 | Tester | 8h | 150 |
| 19 | 6 | **(USR02) Agenda** | 15d | 2010-06-30 | 2010-07-20 | 3, 90 | 27d | 3d |  |  | 104h | 1,050 |
| 20 | 6.1 | Selección de una agenda | 1d | 2010-07-02 | 2010-07-02 |  | 33d | 10d | start no earlier than 2010-07-02 | Programador Jr 1 | 8h | 150 |
| 21 | 6.2 | ABM citas sobre la agenda | 1d | 2010-07-01 | 2010-07-01 |  | 34d | 11d | start no earlier than 2010-07-01 | Programador Jr 2 | 8h | 150 |
| 22 | 6.3 | Interfaz de la Agenda | 2d | 2010-06-30 | 2010-07-01 |  | 34d | 11d | start no earlier than 2010-06-29 | Programador Jr 1 | 16h | 300 |
| 23 | 6.4 | Integracion con Stars - Llamada desde Agenda | 3d | 2010-07-14 | 2010-07-16 |  | 23d | 0d | start no earlier than 2010-07-14 | Prog SSr 1; Prog SSr 2 | 48h |  |
| 24 | 6.5 | Asignar pacientes a cita | 1d | 2010-06-30 | 2010-06-30 |  | 35d | 12d | start no earlier than 2010-06-30 | Programador Jr 2 | 8h | 150 |
| 25 | 6.6 | Testing Agenda | 2d | 2010-07-19 | 2010-07-20 | 20, 21, 22, 23, 24 | 23d |  |  | Tester | 16h | 300 |

| ID | WBS | Task | Duration | Start | Finish | Predecessors | Total slack | Free slack | Constraint | Resources | Work | Cost |
| --- | --- | --- | --- | --- | --- | --- | --- | --- | --- | --- | --- | --- |
| 26 | 7 | **(USR03) Rellamada** | 2d | 2010-07-27 | 2010-07-28 | 40, 72 | 25d |  |  |  | 16h | 150 |
| 27 | 7.1 | Rellamada | 1d | 2010-07-27 | 2010-07-27 |  | 21d | 0d | start no earlier than 2010-07-27 | Prog SSr 2 | 8h |  |
| 28 | 7.2 | Testing Rellamada | 1d | 2010-07-28 | 2010-07-28 | 27 | 21d |  |  | Tester | 8h | 150 |
| 29 | 8 | **(USR04) Consulta** | 5d | 2010-06-08 | 2010-06-14 | 1 | 18d | 1d |  |  | 48h | 300 |
| 30 | 8.1 | **Tratar Consulta** | 3.5d | 2010-06-08 | 2010-06-11 |  | 19.5d | 1.5d |  |  | 8h | 150 |
| 31 | 8.1.1 | Ajornar Consulta | 0.5d | 2010-06-11 | 2010-06-11 |  | 20.5d |  | start no earlier than 2010-06-11 | Programador Jr 1 | 4h | 75 |
| 32 | 8.1.2 | Transferir consulta | 0.5d | 2010-06-08 | 2010-06-08 |  | 22.5d |  |  | Programador Jr 2 | 4h | 75 |
| 33 | 8.2 | Modulo Envio de Correo | 2d | 2010-06-10 | 2010-06-11 |  | 20d | 1d |  | Prog SSr 1 | 16h |  |
| 34 | 8.3 | Modulo Envio SMS | 2d | 2010-06-11 | 2010-06-14 |  | 18d | 0d |  | Prog SSr 2 | 16h |  |
| 35 | 8.4 | Inclusion en Campaña de Seguimiento | 1d | 2010-06-09 | 2010-06-09 |  | 22d | 3d | start no earlier than 2010-06-09 | Programador Jr 1 | 8h | 150 |
| 36 | 9 | Testing Consulta | 2d | 2010-06-15 | 2010-06-16 | 30, 33, 34, 35 | 51d |  |  | Tester | 16h | 300 |
| 37 | 10 | **(USR05) Consejo Salud** | 5d | 2010-07-23 | 2010-07-29 | 78, 85 | 24d |  |  |  | 24h | 150 |
| 38 | 10.1 | Consejo Salud | 2d | 2010-07-23 | 2010-07-26 |  | 22d | 2d | start no earlier than 2010-07-19 | Prog SSr 1 | 16h |  |
| 39 | 10.2 | Testing Consejo Salud | 1d | 2010-07-29 | 2010-07-29 | 38 | 20d |  | start no earlier than 2010-07-29 | Tester | 8h | 150 |
| 40 | 11 | **(USR06) Gestionar Consulta pendiente** | 5d | 2010-07-19 | 2010-07-23 | 29 | 15d | 0d |  |  | 16h | 150 |
| 41 | 11.1 | Priorizacion de la Lista de Consultas | 1d | 2010-07-19 | 2010-07-19 |  | 14d | 3d |  | Prog SSr 2 | 8h |  |
| 42 | 11.2 | Testing USR06 | 1d | 2010-07-23 | 2010-07-23 | 41 | 14d |  | start no earlier than 2010-07-23 | Tester | 8h | 150 |
| 43 | 12 | **(USR07) Programacion de cita previa** | 4d | 2010-08-10 | 2010-08-13 | 85, 94 | 13d |  |  |  | 24h | 150 |
| 44 | 12.1 | Realizar Citación (Interface con Sistema de citación AP) | 2d | 2010-08-10 | 2010-08-11 |  | 10d | 0d | start no earlier than 2010-08-10 | Prog SSr 1 | 16h |  |
| 45 | 12.2 | Testing USR07 | 1d | 2010-08-13 | 2010-08-13 | 44 | 9d |  | start no earlier than 2010-08-13 | Tester | 8h | 150 |
| 46 | 13 | **(USR08) Gestiones sobre la TSI** | 13d | 2010-07-30 | 2010-08-17 | 94, 85, 29, 1 | -23d | 0d |  |  | 40h | 750 |
| 47 | 13.1 | Verificacion Documentacion Necesaria | 1d | 2010-07-30 | 2010-07-30 |  | -12d | 0d | start no earlier than 2010-07-30 | Programador Jr 1 | 8h | 150 |
| 48 | 13.2 | Enviar Gestion (Interface con sistema RCA) | 1d | 2010-08-11 | 2010-08-11 |  | -17d | 0d | start no earlier than 2010-08-11 | Programador Jr 1 | 8h | 150 |
| 49 | 13.3 | Cierre automatico de la consulta por paso de tiempo | 1d | 2010-08-10 | 2010-08-10 |  | -16d | 0d | start no earlier than 2010-08-10 | Programador Jr 1 | 8h | 150 |
| 50 | 13.4 | Guardar LOG gestion TSI | 1d | 2010-08-13 | 2010-08-16 |  | -19.5d | 0d |  | Programador Jr 1 | 8h | 150 |
| 51 | 13.5 | Testing | 1d | 2010-08-17 | 2010-08-17 | 47, 48, 49, 50 | -23d | 0d | start no earlier than 2010-08-17 | Tester | 8h | 150 |

| ID | WBS | Task | Duration | Start | Finish | Predecessors | Total slack | Free slack | Constraint | Resources | Work | Cost |
| --- | --- | --- | --- | --- | --- | --- | --- | --- | --- | --- | --- | --- |
| 52 | 14 | **(USR09) Servicio de traduccion** | 9.5d | 2010-06-29 | 2010-07-12 | 85 | 37d |  |  |  | 72h | 2,050 |
| 53 | 14.1 | Contactar Servicio Externo de Traduccion | 2d | 2010-07-05 | 2010-07-06 |  | 35d | 2d | start no earlier than 2010-07-05 | Programador Sr 2 | 16h | 500 |
| 54 | 14.2 | Enlace Comunicacion Multiconferencia | 3d | 2010-06-29 | 2010-07-02 |  | 37.5d | 4.5d | start no earlier than 2010-06-29 | Programador Sr 2 | 24h | 750 |
| 55 | 14.3 | Modulo monitorización de servicio | 2d | 2010-07-07 | 2010-07-08 |  | 33d | 0d | start no earlier than 2010-07-07 | Programador Sr 2 | 16h | 500 |
| 56 | 14.4 | Testing | 2d | 2010-07-09 | 2010-07-12 | 53, 54, 55 | 33d |  |  | Tester | 16h | 300 |
| 57 | 15 | **(USR10) Informacion Sanitaria General** | 2d | 2010-08-17 | 2010-08-18 | 85, 94, 201 | 10d |  |  |  | 16h | 300 |
| 58 | 15.1 | Guardar Informacion Ciudadano | 1d | 2010-08-17 | 2010-08-17 |  | 6d | 0d |  | Programador Jr 2 | 8h | 150 |
| 59 | 15.2 | Testing | 1d | 2010-08-18 | 2010-08-18 | 58 | 6d |  | start no earlier than 2010-08-17 | Tester | 8h | 150 |
| 60 | 16 | **(USR11) Seguimiento de Patologias** | 12d | 2010-07-26 | 2010-08-10 | 19, 40 | 16d |  |  |  | 56h | 1,050 |
| 61 | 16.1 | Buscar Campañas Abiertas | 1d | 2010-07-29 | 2010-07-29 |  | 18d | 6d | start no earlier than 2010-07-29 | Programador Jr 2 | 8h | 150 |
| 62 | 16.2 | **Gestionar Seguimiento** | 7d | 2010-07-26 | 2010-08-03 |  | 19d | 3d |  |  | 24h | 450 |
| 63 | 16.2.1 | Visualizar Historial Pacientes | 2d | 2010-07-26 | 2010-07-27 |  | 20d | 8d | start no earlier than 2010-07-19 | Programador Jr 2 | 16h | 300 |
| 64 | 16.2.2 | Llamada al Paciente | 1d | 2010-08-03 | 2010-08-03 |  | 15d |  | start no earlier than 2010-08-03 | Programador Jr 2 | 8h | 150 |
| 65 | 16.3 | Desligar paciente de campaña | 1d | 2010-07-28 | 2010-07-28 |  | 19d | 7d | start no earlier than 2010-07-28 | Programador Jr 2 | 8h | 150 |
| 66 | 16.4 | Testing | 2d | 2010-08-09 | 2010-08-10 | 61, 63, 62, 65 | 12d |  | start no earlier than 2010-08-09 | Tester | 16h | 300 |
| 67 | 17 | **(USR12) Encuestas** | 25.5d | 2010-06-08 | 2010-07-13 | 154 | 36d |  |  |  | 56h | 1,050 |
| 68 | 17.1 | Interfaz de Encuestas | 3d | 2010-07-08 | 2010-07-12 |  | 32d | 0d | start no earlier than 2010-07-08 | Programador Jr 2 | 24h | 450 |
| 69 | 17.2 | Contacto con Encuestado | 2d | 2010-06-09 | 2010-06-11 |  | 53.5d | 21.5d | start no earlier than 2010-06-09 | Programador Jr 2 | 16h | 300 |
| 70 | 17.3 | ABM Formulario De Encuesta | 1d | 2010-06-08 | 2010-06-09 |  | 37.5d | 23.5d | start no earlier than 2010-06-08 | Programador Jr 2 | 8h | 150 |
| 71 | 17.4 | Testing | 1d | 2010-07-13 | 2010-07-13 | 68, 69, 70 | 32d |  |  | Tester | 8h | 150 |
| 72 | 18 | **(USR13) Buscar Consultas** | 10d | 2010-07-02 | 2010-07-15 | 90 | 32d | 7d |  |  | 48h | 900 |
| 73 | 18.1 | **Operativo de Busqueda** | 10d | 2010-07-02 | 2010-07-15 |  | 32d |  |  |  | 48h | 900 |
| 74 | 18.1.1 | Buscar según distintos criterios | 3d | 2010-07-05 | 2010-07-07 |  | 33d | 5d |  | Programador Jr 2 | 24h | 450 |
| 75 | 18.1.2 | Filtrar resultados de la busqueda según permisos del usuario | 1d | 2010-07-02 | 2010-07-02 |  | 36d | 8d | start no earlier than 2010-07-02 | Programador Jr 2 | 8h | 150 |
| 76 | 18.1.3 | Acotar resultados si los mismos sobrepasan el parametro configurable "n" | 1d | 2010-07-14 | 2010-07-14 |  | 28d | 0d | start no earlier than 2010-07-14 | Programador Jr 2 | 8h | 150 |
| 77 | 18.1.4 | Testing | 1d | 2010-07-15 | 2010-07-15 | 74, 75, 76 | 28d |  |  | Tester | 8h | 150 |

| ID | WBS | Task | Duration | Start | Finish | Predecessors | Total slack | Free slack | Constraint | Resources | Work | Cost |
| --- | --- | --- | --- | --- | --- | --- | --- | --- | --- | --- | --- | --- |
| 78 | 19 | **(USR14) Hacer Uso de Documentos** | 14d | 2010-07-05 | 2010-07-22 | 29 | 12d | 0d |  |  | 88h | 1,650 |
| 79 | 19.1 | Creación y uso de Guias Interrogatorio | 2d | 2010-07-05 | 2010-07-06 |  | 20d |  | start no earlier than 2010-07-05 | Programador Jr 1 | 16h | 300 |
| 80 | 19.2 | Creación y uso Fichas Tematicas | 2d | 2010-07-07 | 2010-07-08 |  | 16d | 8d | start no earlier than 2010-07-07 | Programador Jr 1 | 16h | 300 |
| 81 | 19.3 | Creación y uso de Recursos | 2d | 2010-07-12 | 2010-07-13 |  | 13d | 5d | start no earlier than 2010-07-12 | Programador Jr 1 | 16h | 300 |
| 82 | 19.4 | Búsqueda y selección de documentos | 2d | 2010-07-14 | 2010-07-15 |  | 11d | 3d | start no earlier than 2010-07-14 | Programador Jr 1 | 16h | 300 |
| 83 | 19.5 | Apertura documentos | 1d | 2010-07-19 | 2010-07-20 |  | 8.5d | 0.5d | start no earlier than 2010-07-19 | Programador Jr 1 | 8h | 150 |
| 84 | 19.6 | Testing | 2d | 2010-07-21 | 2010-07-22 | 70, 80, 81, 82, 83 | 6.5d |  | start no earlier than 2010-07-21 | Tester | 16h | 300 |
| 85 | 20 | **(USR15) Cerrar consulta y dar respuesta al ciudadano** | 9d | 2010-06-16 | 2010-06-28 | 29 | 11d | 0.5d |  |  | 40h | 850 |
| 86 | 20.1 | Clasificar Finalizacion de Consulta | 2d | 2010-06-24 | 2010-06-25 |  | 11d | 0d | start no earlier than 2010-06-24 | Programador Jr 2 | 16h | 300 |
| 87 | 20.2 | Adición de motivo de cierre a la consulta | 1d | 2010-06-16 | 2010-06-16 |  | 18d | 7d | start no earlier than 2010-06-16 | Programador Jr 2 | 8h | 150 |
| 88 | 20.3 | Creación de clasificaciones ad-hoc | 1d | 2010-06-23 | 2010-06-24 |  | 12.5d | 1.5d | start no earlier than 2010-06-23 | Programador Sr 1 | 8h | 250 |
| 89 | 20.4 | Testing | 1d | 2010-06-28 | 2010-06-28 | 86, 87, 88 | 11d |  | start no earlier than 2010-06-25 | Tester | 8h | 150 |
| 90 | 21 | **(USR16) Visualizar Consulta** | 7d | 2010-06-21 | 2010-06-29 | 29 | 37d | 0d |  |  | 40h | 750 |
| 91 | 21.1 | Mostrar datos generales de la consulta | 2d | 2010-06-21 | 2010-06-22 |  | 37d | 4d | start no earlier than 2010-06-21 | Programador Jr 2 | 16h | 300 |
| 92 | 21.2 | Mostrar datos según el documento elegido | 2d | 2010-06-23 | 2010-06-25 |  | 34.5d | 1d | start no earlier than 2010-06-23 | Programador Jr 1 | 16h | 300 |
| 93 | 21.3 | Testing | 1d | 2010-06-29 | 2010-06-29 | 91, 92 | 33d |  | start no earlier than 2010-06-29 | Tester | 8h | 150 |
| 94 | 22 | **(USR17) Crear/Transferir Consulta** | 12d | 2010-07-13 | 2010-07-28 | 29 | -11d | 0d |  |  | 40h | 450 |
| 95 | 22.1 | Crear Consulta | 2d | 2010-07-15 | 2010-07-16 |  | -4d | 0d | start no earlier than 2010-07-15 | Programador Jr 2 | 16h | 300 |
| 96 | 22.2 | Copiar consulta | 1d | 2010-07-27 | 2010-07-27 |  | -8d | 0d | start no earlier than 2010-07-27 | Prog SSr 1 | 8h |  |
| 97 | 22.3 | **Transferir Consulta** | 1d | 2010-07-13 | 2010-07-13 |  | -1d | 0d |  |  | 8h |  |
| 98 | 22.3.1 | Localizar a otro operador del mismo perfil | 1d | 2010-07-13 | 2010-07-13 |  | -1d | 0d | start no earlier than 2010-07-08 | Prog SSr 1 | 8h |  |
| 99 | 22.4 | Testing | 1d | 2010-07-28 | 2010-07-28 | 95, 96, 98 | -8d | 0d |  | Tester | 8h | 150 |
| 100 | 23 | **(ADM01) Mantenimiento del Entorno, clasif y prioridades** | 17.5d | 2010-06-02 | 2010-06-25 | 236 | 14.5d | 0d |  |  | 152h | 3,550 |
| 101 | 23.1 | Módulo de edición de parametros grales de la aplicación | 4d | 2010-06-11 | 2010-06-23 |  | 17.5d | 0d |  | Programador Sr 2 | 32h | 1,000 |
| 102 | 23.2 | Módulo edición listas de clasificaciones (Códigos internos) | 3d | 2010-06-10 | 2010-06-15 |  | 20.5d | 6d |  | Programador Sr 1 | 24h | 750 |

| ID | WBS | Task | Duration | Start | Finish | Predecessors | Total slack | Free slack | Constraint | Resources | Work | Cost |
| --- | --- | --- | --- | --- | --- | --- | --- | --- | --- | --- | --- | --- |
| 103 | 23.3 | **Módulo mantenimiento de la lista de espera** | 2d | 2010-06-03 | 2010-06-04 |  | 27d | 12.5d |  |  | 16h | 150 |
| 104 | 23.3.1 | ABM de la lista de espera | 1d | 2010-06-03 | 2010-06-03 |  | 31d |  | start no earlier than 2010-06-03 | Programador Jr 1 | 8h | 150 |
| 105 | 23.3.2 | Módulo de gestión de prioridades sobre la lista de espera | 1d | 2010-06-04 | 2010-06-04 |  | 27d |  |  | Prog SSr 2 | 8h |  |
| 106 | 23.4 | **Módulo mantenimiento de lineas de servicio** | 2d | 2010-06-02 | 2010-06-03 |  | 28d | 13.5d |  |  | 16h | 300 |
| 107 | 23.4.1 | ABM lineas de servicio | 1d | 2010-06-02 | 2010-06-02 |  | 29d |  |  | Programador Jr 2 | 8h | 150 |
| 108 | 23.4.2 | ABM servicios para una linea seleccionada | 1d | 2010-06-03 | 2010-06-03 |  | 28d |  |  | Programador Jr 2 | 8h | 150 |
| 109 | 23.5 | **Módulo mantenimiento agendas** | 14.5d | 2010-06-02 | 2010-06-22 |  | 15.5d | 1d |  |  | 24h | 300 |
| 110 | 23.5.1 | Asignar operadores a agenda | 1d | 2010-06-04 | 2010-06-04 |  | 30d |  |  | Prog SSr 1 | 8h |  |
| 111 | 23.5.2 | ABM de usuarios de la agenda | 1d | 2010-06-21 | 2010-06-22 |  | 15.5d |  | start no earlier than 2010-06-21 | Programador Jr 1 | 8h | 150 |
| 112 | 23.5.3 | ABM citas de la agenda | 1d | 2010-06-02 | 2010-06-02 |  | 32d |  |  | Programador Jr 1 | 8h | 150 |
| 113 | 23.6 | **Módulo mantenimiento BBDD** | 2d | 2010-06-09 | 2010-06-11 |  | 22.5d | 8d |  |  | 24h | 750 |
| 114 | 23.6.1 | Módulo comprobación de formato de archivo | 1d | 2010-06-09 | 2010-06-10 |  | 23.5d |  |  | Programador Sr 1 | 8h | 250 |
| 115 | 23.6.2 | Módulo actualización de BBDD | 2d | 2010-06-09 | 2010-06-11 |  | 25.5d |  |  | Programador Sr 2 | 16h | 500 |
| 116 | 23.7 | Testing | 2d | 2010-06-23 | 2010-06-25 | 102, 101, 103, 106, 109, 113 | 17.5d |  |  | Tester | 16h | 300 |
| 117 | 24 | **(ADM02) Extraccion de estadisticas y listados** | 24.5d | 2010-06-28 | 2010-07-30 | 100 | 15d | 0d |  |  | 64h | 1,300 |
| 118 | 24.1 | Listados De Administración | 2d | 2010-07-28 | 2010-07-29 |  | 14d | 0d | start no earlier than 2010-07-28 | Prog SSr 1 | 16h |  |
| 119 | 24.2 | **Listados Comunes** | 13.5d | 2010-06-28 | 2010-07-15 |  | 25d | 10d |  |  | 40h | 1,150 |
| 120 | 24.2.1 | Detalle de estado de finalización consulta/acción | 1d | 2010-07-13 | 2010-07-14 |  | 22.5d |  | start no earlier than 2010-07-13 | Programador Sr 1 | 8h | 250 |
| 121 | 24.2.2 | Listado de clasificaciones | 1d | 2010-06-29 | 2010-06-29 |  | 33d |  | start no earlier than 2010-06-29 | Programador Jr 2 | 8h | 150 |
| 122 | 24.2.3 | Listados de incidencias en las comunicaciones | 1d | 2010-07-12 | 2010-07-13 |  | 23.5d |  | start no earlier than 2010-07-12 | Programador Sr 1 | 8h | 250 |
| 123 | 24.2.4 | Ratios por usuario | 1d | 2010-07-15 | 2010-07-15 |  | 21d |  | start no earlier than 2010-07-15 | Programador Sr 2 | 8h | 250 |
| 124 | 24.2.5 | Finales de servicio | 1d | 2010-06-28 | 2010-06-29 |  | 33.5d |  | start no earlier than 2010-06-28 | Programador Sr 1 | 8h | 250 |
| 125 | 24.3 | Testing | 1d | 2010-07-30 | 2010-07-30 | 118, 119 | 14d |  |  | Tester | 8h | 150 |
| 126 | 25 | **(ADM03) Mantenimiento de documentos** | 15d | 2010-08-03 | 2010-08-23 | 134 | 5d | 0d |  |  | 48h | 1,500 |
| 127 | 25.1 | Creación y edición de documentos | 2d | 2010-08-20 | 2010-08-23 | 131, 132, 133 | 1d |  | start no earlier than 2010-08-19 | Programador Sr 2 | 16h | 500 |
| 128 | 25.2 | Borrado de documentos | 1d | 2010-08-09 | 2010-08-10 |  | 10.5d |  | start no earlier than 2010-08-09 | Programador Sr 2 | 8h | 250 |
| 129 | 25.3 | Clasificación de documentos | 1d | 2010-08-03 | 2010-08-03 |  | 15d |  |  | Programador Sr 2 | 8h | 250 |
| 130 | 25.4 | Búsqueda de documentos | 2d | 2010-08-04 | 2010-08-06 |  | 12.5d |  |  | Programador Sr 2 | 16h | 500 |
| 131 | 26 | (ADM04) Mantenimiento de Recursos | 2d | 2010-07-26 | 2010-07-27 | 78 | 7d | 0d | start no earlier than 2010-07-26 | Programador Sr 2 | 16h | 500 |
| 132 | 27 | (ADM05) Mantenimiento de guias de interrogatorio | 2d | 2010-08-18 | 2010-08-19 | 134, 78 | 1d | 0d | start no earlier than 2010-08-18 | Programador Sr 2 | 16h | 500 |
| 133 | 28 | (ADM06) Mantenimiento de Fichas tematicas | 2d | 2010-08-16 | 2010-08-17 | 134, 78 | 3d | 2d |  | Programador Sr 2 | 16h | 500 |

| ID | WBS | Task | Type | Duration | Start | Finish | Predecessors | Total slack | Free slack | Constraint | Resources | Work | Cost |
| --- | --- | --- | --- | --- | --- | --- | --- | --- | --- | --- | --- | --- | --- |
| 134 | 29 | **(ADM07) Mantenimiento de relaciones sobre guias de interrogatorio y fichas tematicas** |  | 4d | 2010-07-28 | 2010-08-02 | 131 | 8d | 0d |  |  | 16h | 300 |
| 135 | 29.1 | Adición de documentos a fichas temáticas |  | 1d | 2010-08-02 | 2010-08-02 |  | 4d |  | start no earlier than 2010-08-02 | Programador Jr 2 | 8h | 150 |
| 136 | 29.2 | Adición de documentos a guias de interrogatorio |  | 1d | 2010-07-28 | 2010-07-28 |  | 7d |  | start no earlier than 2010-07-26 | Programador Jr 1 | 8h | 150 |
| 137 | 30 | **(ADM08) Mantenimiento de encuestas** |  | 12.5d | 2010-06-07 | 2010-06-23 | 154 | 50.5d |  |  |  | 56h | 750 |
| 138 | 30.1 | **Mantenimiento Indice de Encuestas** |  | 1d | 2010-06-07 | 2010-06-07 |  | 62d |  |  |  | 16h |  |
| 139 | 30.1.1 | Mantener Ediciones |  | 1d | 2010-06-07 | 2010-06-07 |  | 58d |  | start no earlier than 2010-06-07 | Prog SSr 1 | 8h |  |
| 140 | 30.1.2 | Cierre de ediciones |  | 1d | 2010-06-07 | 2010-06-07 |  | 58d |  | start no earlier than 2010-06-07 | Prog SSr 2 | 8h |  |
| 141 | 30.2 | Asignación de formulario a encuesta |  | 1d | 2010-06-07 | 2010-06-07 |  | 58d |  | start no earlier than 2010-06-04 | Programador Jr 2 | 8h | 150 |
| 142 | 30.3 | Asignación de operadores a encuesta |  | 1d | 2010-06-22 | 2010-06-23 |  | 46.5d |  | start no earlier than 2010-06-22 | Programador Jr 1 | 8h | 150 |
| 143 | 30.4 | **Asignación lista de encuestados** |  | 2d | 2010-06-14 | 2010-06-15 |  | 56d |  |  |  | 16h | 300 |
| 144 | 30.4.1 | Alta, baja de encuestados |  | 1d | 2010-06-14 | 2010-06-14 |  | 53d |  | start no earlier than 2010-06-14 | Programador Jr 2 | 8h | 150 |
| 145 | 30.4.2 | Asignación automática en base a un archivo de texto |  | 1d | 2010-06-15 | 2010-06-15 |  | 52d |  | start no earlier than 2010-06-15 | Programador Jr 2 | 8h | 150 |
| 146 | 30.5 | Publicar Encuestas |  | 1d | 2010-06-14 | 2010-06-15 |  | 52.5d |  | start no earlier than 2010-06-14 | Programador Jr 1 | 8h | 150 |
| 147 | 31 | **(ADM09) Mantenimiento de seguimiento de patologias** |  | 10.5d | 2010-06-25 | 2010-07-09 | 100 | 34d | 17d |  |  | 40h | 1,050 |
| 148 | 31.1 | Mantenimiento Indice de campañas de seguimiento |  | 1d | 2010-07-09 | 2010-07-09 |  | 30d |  | start no earlier than 2010-07-09 | Programador Sr 2 | 8h | 250 |
| 149 | 31.2 | Asignación de formulario a campaña de seguimiento |  | 1d | 2010-06-25 | 2010-06-28 |  | 39.5d |  | start no earlier than 2010-06-25 | Programador Sr 1 | 8h | 250 |
| 150 | 31.3 | Asignación de operadores a campaña de seguimiento |  | 1d | 2010-06-28 | 2010-06-28 |  | 39d |  | start no earlier than 2010-06-28 | Programador Jr 2 | 8h | 150 |
| 151 | 31.4 | Asignación de listas de pacientes |  | 1d | 2010-07-09 | 2010-07-09 |  | 30d |  | start no earlier than 2010-07-09 | Programador Jr 1 | 8h | 150 |
| 152 | 31.5 | Activación/ Desactivación de campañas |  | 1d | 2010-06-25 | 2010-06-28 |  | 39.5d |  | start no earlier than 2010-06-24 | Programador Sr 2 | 8h | 250 |
| 153 | 32 | Testing ADM 3 al 9 | manual | 3d | 2010-08-02 | 2010-08-04 |  |  |  |  | Tester | 24h | 450 |
| 154 | 33 | **(ADM10) Creacion de formularios de encuesta y seguimiento** |  | 3d | 2010-06-02 | 2010-06-04 | 236 | 43d | 0d |  |  | 40h | 150 |
| 155 | 33.1 | Mantener Indice de Encuesta |  | 2d | 2010-06-02 | 2010-06-03 |  | 39d | 0d |  | Prog SSr 2 | 16h |  |
| 156 | 33.2 | Crear y Editar Encuestas |  | 2d | 2010-06-02 | 2010-06-03 |  | 37.5d | 0d |  | Prog SSr 1 | 16h |  |
| 157 | 33.3 | Testing Creacion Formularios Enc y Seg |  | 1d | 2010-06-04 | 2010-06-04 | 155, 156 | 42d |  |  | Tester | 8h | 150 |

| ID | WBS | Task | Duration | Start | Finish | Predecessors | Total slack | Free slack | Constraint | Resources | Work | Cost |
| --- | --- | --- | --- | --- | --- | --- | --- | --- | --- | --- | --- | --- |
| 158 | 34 | **(ADM11) Mantenimiento de usuarios, perfiles y permisos** | 4.5d | 2010-06-15 | 2010-06-21 | 1 | 44.5d | 17.5d |  |  | 64h | 900 |
| 159 | 34.1 | Mantenimiento Opciones Funcionales | 2d | 2010-06-15 | 2010-06-16 |  | 43d | 3d | start no earlier than 2010-06-15 | Prog SSr 1 | 16h |  |
| 160 | 34.2 | **Mantener Perfiles Trabajo** | 3d | 2010-06-15 | 2010-06-18 |  | 45.5d | 1.5d |  |  | 24h | 450 |
| 161 | 34.2.1 | Alta, modificación de perfiles | 1d | 2010-06-17 | 2010-06-18 |  | 41.5d |  | start no earlier than 2010-06-17 | Programador Jr 1 | 8h | 150 |
| 162 | 34.2.2 | ABM de opciones funcionales a perfil | 1d | 2010-06-15 | 2010-06-16 |  | 43.5d |  | start no earlier than 2010-06-15 | Programador Jr 1 | 8h | 150 |
| 163 | 34.2.3 | Adición de responsabilidades a opciones funcionales | 1d | 2010-06-16 | 2010-06-17 |  | 42.5d |  | start no earlier than 2010-06-16 | Programador Jr 1 | 8h | 150 |
| 164 | 34.3 | **Mantener Usuarios** | 2.5d | 2010-06-17 | 2010-06-21 |  | 44.5d | 0.5d |  |  | 24h | 450 |
| 165 | 34.3.1 | Creación/gestion de usuarios | 1d | 2010-06-17 | 2010-06-17 |  | 42d |  | start no earlier than 2010-06-17 | Programador Jr 2 | 8h | 150 |
| 166 | 34.3.2 | Asiganción de perfil a usuario | 1d | 2010-06-18 | 2010-06-18 |  | 41d |  | start no earlier than 2010-06-18 | Programador Jr 2 | 8h | 150 |
| 167 | 34.3.3 | Asignación de agendas a usuario | 1d | 2010-06-18 | 2010-06-21 |  | 40.5d |  | start no earlier than 2010-06-18 | Programador Jr 1 | 8h | 150 |
| 168 | 35 | Testing Mantenimiento Usuarios | 1d | 2010-06-22 | 2010-06-22 | 159, 160, 164 | 50d |  | start no earlier than 2010-06-22 | Tester | 8h | 150 |
| 169 | 36 | **(ADM12) Listado de acciones proactivas** | 7d | 2010-08-04 | 2010-08-12 | 117, 147 | 14d |  |  |  | 96h | 1,500 |
| 170 | 36.1 | Módulo de elaboraciónde informes de estado de campaña de seguimiento | 2d | 2010-08-04 | 2010-08-05 |  | 13d | 0d | start no earlier than 2010-08-04 | Prog SSr 1 | 16h |  |
| 171 | 36.2 | Módulo de elaboración de informes de estado de encuesta | 2d | 2010-08-04 | 2010-08-05 |  | 13d | 0d | start no earlier than 2010-08-04 | Programador Jr 2 | 16h | 300 |
| 172 | 36.3 | Módulo de elaboración de informes de ediciones de encuestas | 2d | 2010-08-04 | 2010-08-05 |  | 13d | 0d | start no earlier than 2010-08-04 | Programador Jr 1 | 16h | 300 |
| 173 | 36.4 | Módulo de elaboración de listados de campañas de seguimiento | 2d | 2010-08-06 | 2010-08-09 |  | 11d | 0d | start no earlier than 2010-08-06 | Programador Jr 1 | 16h | 300 |
| 174 | 36.5 | Módulo de elaboración de listados de información de encuestas | 2d | 2010-08-06 | 2010-08-09 |  | 11d | 0d | start no earlier than 2010-08-06 | Programador Jr 2 | 16h | 300 |
| 175 | 36.6 | Testing Listados Proactivas | 2d | 2010-08-11 | 2010-08-12 | 170, 171, 172, 173, 174 | 13d |  | start no earlier than 2010-08-11 | Tester | 16h | 300 |
| 176 | 37 | **(ADM13) Listados de documentos** | 4d | 2010-08-24 | 2010-08-27 | 117, 126 | 3d |  |  |  | 32h | 450 |
| 177 | 37.1 | Elaboración de listado de configuración | 1d | 2010-08-24 | 2010-08-24 |  | 1d |  | start no earlier than 2010-08-24 | Programador Jr 1 | 8h | 150 |
| 178 | 37.2 | Elaboración de listado de uso | 1d | 2010-08-24 | 2010-08-24 |  | 1d |  | start no earlier than 2010-08-24 | Programador Jr 2 | 8h | 150 |
| 179 | 37.3 | Elaboración de listado de asociaciones | 1d | 2010-08-24 | 2010-08-24 |  | 1d |  | start no earlier than 2010-08-24 | Prog SSr 1 | 8h |  |
| 180 | 37.4 | Testing Listado Docs | 1d | 2010-08-27 | 2010-08-27 | 177, 178, 179 | 3d |  | start no earlier than 2010-08-27 | Tester | 8h | 150 |
| 181 | 38 | **(ADM14) Listado sobre consultas** | 5d | 2010-08-02 | 2010-08-06 | 117, 29 | 18d |  |  |  | 80h | 1,300 |
| 182 | 38.1 | Módulo de obtención de listados de consulta por ciudadano | 1d | 2010-08-02 | 2010-08-02 |  | 16d | 1d | start no earlier than 2010-08-02 | Prog SSr 1 | 8h |  |
| 183 | 38.2 | Módulo de obtención de listados de consultas con cierre principal | 1d | 2010-08-02 | 2010-08-02 |  | 16d | 1d | start no earlier than 2010-08-02 | Prog SSr 2 | 8h |  |
| 184 | 38.3 | Módulo de obtención de listados de consulta con cierre secundario | 1d | 2010-08-02 | 2010-08-02 |  | 16d | 2d | start no earlier than 2010-08-02 | Programador Sr 1 | 8h | 250 |
| 185 | 38.4 | Módulo de obtención de listados de consulta por motivo de cierre | 1d | 2010-08-02 | 2010-08-02 |  | 16d | 1d | start no earlier than 2010-08-02 | Programador Sr 2 | 8h | 250 |
| 186 | 38.5 | Módulo de obtención de listado de resumen de consultas por servicio | 1d | 2010-08-03 | 2010-08-03 |  | 15d | 1d | start no earlier than 2010-08-03 | Programador Sr 1 | 8h | 250 |
| 187 | 38.6 | Módulo de obtención de listado de consultas por área geográfica | 1d | 2010-08-03 | 2010-08-03 |  | 15d | 0d | start no earlier than 2010-08-03 | Prog SSr 2 | 8h |  |
| 188 | 38.7 | Módulo de obtención de listado de consultas por usuario | 1d | 2010-08-03 | 2010-08-03 |  | 15d | 0d | start no earlier than 2010-08-03 | Prog SSr 1 | 8h |  |
| 189 | 38.8 | Módulo de obtención de listado de consultas pendientes | 1d | 2010-08-04 | 2010-08-04 |  | 14d | 0d | start no earlier than 2010-08-04 | Programador Sr 1 | 8h | 250 |
| 190 | 38.9 | Testing Listado Consultas | 2d | 2010-08-05 | 2010-08-06 | 182, 183, 184, 185, 186, 187, 188, 189 | 17d |  | start no earlier than 2010-08-04 | Tester | 16h | 300 |

| ID | WBS | Task | Duration | Start | Finish | Predecessors | Total slack | Free slack | Constraint | Resources | Work | Cost |
| --- | --- | --- | --- | --- | --- | --- | --- | --- | --- | --- | --- | --- |
| 191 | 39 | **(ADM15) Mantener Asignaciones TSI** | 25d? | 2010-07-16 | 2010-08-19 | 100, 46 | 0d |  |  |  | 72h | 1,850 |
| 192 | 39.1 | **Módulo de envío de datos a CatSalut** | 3d | 2010-07-23 | 2010-07-27 |  |  |  |  |  | 64h | 1,700 |
| 193 | 39.1.1 | Recolección de datos de operaciones TSI pendientes | 1d | 2010-07-16 | 2010-07-16 |  | 29d |  | start no earlier than 2010-07-16 | Programador Jr 1 | 8h | 150 |
| 194 | 39.1.2 | Migración de los datos a archivo TXT | 2d | 2010-07-19 | 2010-07-20 |  | 27d |  | start no earlier than 2010-07-19 | Programador Jr 2 | 16h | 300 |
| 195 | 39.1.3 | Interface de comunicación con CatSalut | 5d | 2010-07-19 | 2010-07-23 |  | 24d |  | start no earlier than 2010-07-19 | Programador Sr 2 | 40h | 1,250 |
| 196 | 39.2 | Testing TSI | 1d? | 2010-08-19 | 2010-08-19 | 192 | 8d |  | start no earlier than 2010-08-19 | Tester | 8h | 150 |
| 197 | 40 | **(ADM16) Asignar documentos a acciones** | 3d | 2010-08-24 | 2010-08-26 | 126 | 4d |  |  |  | 24h | 400 |
| 198 | 40.1 | Creación/eliminación de asociaciones | 1d | 2010-08-24 | 2010-08-24 |  | 1d | 0d | start no earlier than 2010-08-24 | Prog SSr 2 | 8h |  |
| 199 | 40.2 | Cadicidad de asociaciones | 1d | 2010-08-24 | 2010-08-24 |  | 1d | 0d | start no earlier than 2010-08-24 | Programador Sr 1 | 8h | 250 |
| 200 | 40.3 | Testing Asignacion Docs a Acciones | 1d | 2010-08-26 | 2010-08-26 | 198, 199 | 4d |  | start no earlier than 2010-08-26 | Tester | 8h | 150 |
| 201 | 41 | **(INT01) Direcciones de farmacias, CAP y otra informacion breve** | 5d | 2010-08-10 | 2010-08-16 | 13, 78, 100 | 4d | 0d |  |  | 24h | 450 |
| 202 | 41.1 | Trabajo con listas de resultados | 2d | 2010-08-10 | 2010-08-11 |  | 5d | 0d | start no earlier than 2010-08-10 | Programador Jr 2 | 16h | 300 |
| 203 | 41.2 | Testing Dirs | 1d | 2010-08-16 | 2010-08-16 | 202 | 3d |  | start no earlier than 2010-08-16 | Tester | 8h | 150 |
| 204 | 42 | **(SIS01) Trazabilidad y registro de uso** | 13d? | 2010-06-14 | 2010-06-30 | 1 | 45d |  |  |  | 112h | 3,150 |
| 205 | 42.1 | Control Acceso a Consultas | 2d | 2010-06-15 | 2010-06-17 |  | 49.5d | 8.5d |  | Programador Sr 1 | 16h | 500 |
| 206 | 42.2 | Control Acceso a Encuestas | 2d | 2010-06-21 | 2010-06-23 |  | 45.5d | 4.5d | start no earlier than 2010-06-21 | Programador Sr 1 | 16h | 500 |
| 207 | 42.3 | Control General Acceso al Sistema | 2d | 2010-06-17 | 2010-06-21 |  | 47.5d | 6.5d |  | Programador Sr 1 | 16h | 500 |
| 208 | 42.4 | Control Acceso a Campañas de Seguimiento | 2d | 2010-06-17 | 2010-06-18 |  | 48d | 7d |  | Programador Sr 2 | 16h | 500 |
| 209 | 42.5 | Control Acceso a Documentos | 2d | 2010-06-23 | 2010-06-29 |  | 41.5d | 0.5d |  | Programador Sr 2 | 16h | 500 |
| 210 | 42.6 | Control Acceso a Recursos Internos | 2d | 2010-06-16 | 2010-06-22 |  | 46.5d | 5.5d |  | Programador Sr 2 | 16h | 500 |
| 211 | 42.7 | Historial de Consultas | 1d | 2010-06-14 | 2010-06-14 |  | 52d | 11d | start no earlier than 2010-06-14 | Prog SSr 1 | 8h |  |
| 212 | 42.8 | Testing Trazabilidad / Registro | 1d? | 2010-06-30 | 2010-06-30 | 205, 206, 207, 208, 209, 210, 211 | 44d |  | start no earlier than 2010-06-30 | Tester | 8h | 150 |
| 213 | 43 | **(ISC01) Transferir info, comunicacion a STARS** | 3d | 2010-06-21 | 2010-06-23 | 1 | 50d |  |  |  | 48h |  |
| 214 | 43.1 | Recibir información del sistema de comunicaciones | 3d | 2010-06-21 | 2010-06-23 |  | 46d |  |  | Prog SSr 1; Prog SSr 2 | 48h |  |

| ID | WBS | Task | Duration | Start | Finish | Predecessors | Total slack | Free slack | Constraint | Resources | Work | Cost |
| --- | --- | --- | --- | --- | --- | --- | --- | --- | --- | --- | --- | --- |
| 215 | 44 | **(ISC02) Iniciar llamada desde STARS** | 4d | 2010-06-28 | 2010-07-01 | 1 | 44d |  |  |  | 56h | 150 |
| 216 | 44.1 | Lanzamiento de petición de comunicación | 3d | 2010-06-28 | 2010-06-30 |  | 40d | 0d |  | Prog SSr 1; Prog SSr 2 | 48h |  |
| 217 | 44.2 | Testing Inicio Llamada STARS | 1d | 2010-07-01 | 2010-07-01 | 216 | 43d |  | start no earlier than 2010-07-01 | Tester | 8h | 150 |
| 218 | 45 | **(ISC03) Informacion encuesta** | 1d | 2010-06-23 | 2010-06-23 | 154 | 50d |  |  |  | 8h | 150 |
| 219 | 45.1 | Activación actividad de encuesta | 1d | 2010-06-23 | 2010-06-23 |  | 46d |  | start no earlier than 2010-06-23 | Programador Jr 2 | 8h | 150 |
| 220 | 46 | ABM Consultas | 1d | 2010-06-28 | 2010-06-29 | 29 | 38.5d | 37.5d | start no earlier than 2010-06-28 | Programador Jr 1 | 8h | 150 |
| 221 | 47 | ABM Usuarios | 1d | 2010-06-25 | 2010-06-28 | 3 | 39.5d | 9.5d |  | Programador Jr 1 | 8h | 150 |
| 222 | 48 | Proteccion de Acceso | 3d | 2010-07-12 | 2010-07-14 | 221 | 31d |  | start no earlier than 2010-07-12 | Programador Sr 2 | 24h | 750 |
| 223 | 49 | ABM Fichas / Guias / Recursos | 3d | 2010-07-28 | 2010-07-30 | 131 | 19d |  | start no earlier than 2010-07-28 | Prog SSr 2 | 24h |  |
| 224 | 50 | ABM Cuestionarios | 1d | 2010-06-07 | 2010-06-07 | 154 | 54d | 53d | start no earlier than 2010-06-07 | Programador Jr 1 | 8h | 150 |
| 225 | 51 | Interfaz General | 13d | 2010-06-17 | 2010-07-13 | 1 | 32d |  |  | Prog SSr 1; Prog SSr 2 | 192h |  |
| 226 | 52 | Interfaz Para Usuario Avanzado | 5d | 2010-07-19 | 2010-07-23 | 100 | 21d |  | start no earlier than 2010-07-19 | Programador Sr 1 | 40h | 1,250 |
| 227 | 53 | Interfaz de Listados para ADM02 | 5d | 2010-08-04 | 2010-08-10 | 117 | 9d |  | start no earlier than 2010-08-04 | Prog SSr 2 | 40h |  |
| 228 | 54 | Interfaz Mantenimiento Usuarios y Perfiles | 5d | 2010-07-20 | 2010-07-26 | 158 | 20d |  | start no earlier than 2010-07-20 | Prog SSr 2 | 40h |  |
| 229 | 55 | Interfaz Direcciones INT01 | 5d | 2010-08-17 | 2010-08-23 | 201 | 3d |  | start no earlier than 2010-08-13 | Prog SSr 2 | 40h |  |
| 230 | 56 | ABM Enfermedades / Centros Salud | 2d | 2010-08-18 | 2010-08-19 | 201 | 5d |  | start no earlier than 2010-08-18 | Programador Jr 2 | 16h | 300 |
| 231 | 57 | Listado de Usuarios y Perfiles | 1d | 2010-07-15 | 2010-07-15 | 158 | 30d |  | start no earlier than 2010-07-15 | Programador Sr 1 | 8h | 250 |
| 232 | 58 | Interface con sistema de comunicaciones (ISC01, ISC02, ISC03) | 9d | 2010-06-29 | 2010-07-12 | 1 | 30.5d |  | start no earlier than 2010-06-29 | Programador Sr 1 | 72h | 2,250 |
| 233 | 59 | Testing ABMs Varios | 4d | 2010-08-20 | 2010-08-25 | 220, 221, 223, 224, 230 | 1d |  |  | Tester | 32h | 600 |
| 234 | 60 | Testing Interfaces Varias | 3d | 2010-08-30 | 2010-09-01 | 225, 226, 227, 228, 229, 232 | 0d |  | start no earlier than 2010-08-30 | Tester | 24h | 450 |
| 236 | 61 | Arquitectura General / Configuracion Ambientes | 15d | 2010-05-12 | 2010-06-01 | 241 | 24d | 0d |  | Arquitecto | 120h | 5,250 |
| 237 | 62 | **Tareas IT Sobre Nuestra Empresa** | 24d | 2010-05-06 | 2010-06-08 |  | 22d |  |  |  | 160h | 3,600 |
| 238 | 62.1 | Compra Equipos Necesarios | 1.5d | 2010-05-06 | 2010-05-07 |  | 77d | 0d | start no earlier than 2010-05-06 | Programador Jr 1; Programador Jr 2 | 24h | 450 |
| 239 | 62.2 | **Infraestructura** | 9d | 2010-05-06 | 2010-05-18 |  | 22d | 12d |  |  | 72h | 1,800 |
| 240 | 62.2.1 | Preparacion de Ambientes en servidores | 1d | 2010-05-06 | 2010-05-06 |  | 77d |  | start no earlier than 2010-05-06 | IT 1 | 8h | 200 |
| 241 | 62.2.2 | Instalacion y Configuracion de Servidor DEV | 3d | 2010-05-07 | 2010-05-11 |  | 24d | 0d |  | IT 1 | 24h | 600 |
| 242 | 62.2.3 | Instalacion y Configuracion de Servidores de Usos Multiples | 5d | 2010-05-12 | 2010-05-18 |  | 69d |  | start no earlier than 2010-05-11 | IT 1 | 40h | 1,000 |

| ID | WBS | Task | Duration | Start | Finish | Predecessors | Total slack | Constraint | Resources | Work | Cost |
| --- | --- | --- | --- | --- | --- | --- | --- | --- | --- | --- | --- |
| 243 | 62.3 | **Redes** | 3d | 2010-06-04 | 2010-06-08 | 239 | 61d |  |  | 24h | 600 |
| 244 | 62.3.1 | Configuracion del FW | 3d | 2010-06-04 | 2010-06-08 |  | 57d | start no earlier than 2010-06-04 | IT 1 | 24h | 600 |
| 245 | 62.4 | Instalacion de pcs nuevos usuarios | 2.5d | 2010-05-07 | 2010-05-11 | 238 | 77d | start no earlier than 2010-05-07 | Programador Jr 1; Programador Jr 2 | 40h | 750 |
