# Casos Uso

Schedule from MS Project, 2010-05-06 to 2010-06-18.
Hexacta

## Calendars

- Standard: Mon-Fri 08:00-12:00, 13:00-17:00; Sat-Sun off.

## Resources

| Resource |
| --- |
| Usr |

## Schedule

| ID | WBS | Task | Duration | Start | Finish | Predecessors | Total slack | Free slack |
| --- | --- | --- | --- | --- | --- | --- | --- | --- |
| 1 | 1 | Integracion con el Sistema STARS (Lectura Datos) | 5d | 2010-06-03 | 2010-06-09 | 199 | 0d |  |
| 2 | 2 | Modulo Seguridad que Oculta Info Llamado | 3d | 2010-06-10 | 2010-06-14 | 1 | 4d |  |
| 3 | 3 | **(GEN01) Identificacion y Autenticacion** | 1d | 2010-06-10 | 2010-06-10 | 1 | 3d | 0d |
| 4 | 3.1 | Autenticacion | 1d | 2010-06-10 | 2010-06-10 |  | 3d |  |
| 5 | 3.2 | Interfaz Inicio Sesion | 1d | 2010-06-10 | 2010-06-10 |  | 3d |  |
| 6 | 4 | **(GEN02) Gestion General de Registros** | 2d | 2010-06-10 | 2010-06-11 | 1 | 5d |  |
| 7 | 4.1 | ABM Registro | 1d | 2010-06-10 | 2010-06-10 |  | 6d |  |
| 8 | 4.2 | Buscar registro | 1d | 2010-06-10 | 2010-06-10 |  | 6d |  |
| 9 | 4.3 | Copiar registro | 1d | 2010-06-10 | 2010-06-10 |  | 6d |  |
| 10 | 4.4 | Interfaz ABM Registro | 2d | 2010-06-10 | 2010-06-11 |  | 5d |  |
| 11 | 5 | **(USR01) Determinacion del servicio de atencion** | 1d? | 2010-06-14 | 2010-06-14 | 74, 31 | 2d | 0d |
| 12 | 5.1 | Capturar la Comunicación???? | 1d? | 2010-06-14 | 2010-06-14 |  | 2d |  |
| 13 | 5.2 | Determinar el tipod e servicio | 1d? | 2010-06-14 | 2010-06-14 |  | 2d |  |
| 14 | 5.3 | Lista de Espera | 1d? | 2010-06-14 | 2010-06-14 |  | 2d |  |
| 15 | 5.4 | Determinar conjunto de operadores adecuados al tipo de solicitud | 1d? | 2010-06-14 | 2010-06-14 |  | 2d |  |
| 16 | 6 | **(USR02) Agenda** | 1d? | 2010-06-14 | 2010-06-14 | 3, 71 | 2d | 0d |
| 17 | 6.1 | Selección de una agenda | 1d? | 2010-06-14 | 2010-06-14 |  | 2d |  |
| 18 | 6.2 | ABM citas sobre la agenda | 1d? | 2010-06-14 | 2010-06-14 |  | 2d |  |
| 19 | 6.3 | Interfaz de la Agenda | 1d? | 2010-06-14 | 2010-06-14 |  | 2d |  |
| 20 | 6.4 | Integracion con Stars - Llamada desde Agenda | 1d? | 2010-06-14 | 2010-06-14 |  | 2d |  |
| 21 | 6.5 | Asignar pacientes a cita | 1d? | 2010-06-14 | 2010-06-14 |  | 2d |  |
| 22 | 7 | (USR03) Rellamada | 1d? | 2010-06-15 | 2010-06-15 | 31, 56 | 3d |  |
| 23 | 8 | **(USR04) Consulta** | 1d? | 2010-06-10 | 2010-06-10 | 1 | 0d |  |
| 24 | 8.1 | **Tratar Consulta** | 1d? | 2010-06-10 | 2010-06-10 |  | 0d |  |
| 25 | 8.1.1 | Ajornar Consulta | 1d? | 2010-06-10 | 2010-06-10 |  | 0d |  |
| 26 | 8.1.2 | Transferir consulta | 1d? | 2010-06-10 | 2010-06-10 |  | 0d |  |
| 27 | 8.2 | Modulo Envio de Correo | 1d? | 2010-06-10 | 2010-06-10 |  | 0d |  |
| 28 | 8.3 | Modulo Envio SMS | 1d? | 2010-06-10 | 2010-06-10 |  | 0d |  |
| 29 | 8.4 | Inclusion en Campaña de Seguimiento | 1d? | 2010-06-10 | 2010-06-10 |  | 0d |  |
| 30 | 9 | (USR05) Consejo Salud | 1d? | 2010-06-14 | 2010-06-14 | 61, 67 | 4d |  |

| ID | WBS | Task | Duration | Start | Finish | Predecessors | Total slack | Free slack |
| --- | --- | --- | --- | --- | --- | --- | --- | --- |
| 31 | 10 | **(USR06) Gestionar Consulta pendiente** | 1d? | 2010-06-11 | 2010-06-11 | 23 | 2d | 0d |
| 32 | 10.1 | Priorizacion de la Lista de Consultas | 1d? | 2010-06-11 | 2010-06-11 |  | 2d |  |
| 33 | 11 | **(USR07) Programacion de cita previa** | 1d? | 2010-06-14 | 2010-06-14 | 67, 74 | 4d |  |
| 34 | 11.1 | Realizar Citación (Interface con Sistema de citación AP) | 1d? | 2010-06-14 | 2010-06-14 |  | 4d |  |
| 35 | 12 | **(USR08) Gestiones sobre la TSI** | 1d? | 2010-06-14 | 2010-06-14 | 74, 67, 23, 1 | 3d | 0d |
| 36 | 12.1 | Verificacion Documentacion Necesaria | 1d? | 2010-06-14 | 2010-06-14 |  | 3d |  |
| 37 | 12.2 | Enviar Gestion (Interface con sistema RCA) | 1d? | 2010-06-14 | 2010-06-14 |  | 3d |  |
| 38 | 12.3 | Cierre automatico de la consulta por paso de tiempo | 1d? | 2010-06-14 | 2010-06-14 |  | 3d |  |
| 39 | 12.4 | Guardar LOG gestion TSI????? | 1d? | 2010-06-14 | 2010-06-14 |  | 3d |  |
| 40 | 13 | **(USR09) Servicio de traduccion** | 1d? | 2010-06-14 | 2010-06-14 | 67 | 4d |  |
| 41 | 13.1 | Contactar Servicio Externo de Traduccion | 1d? | 2010-06-14 | 2010-06-14 |  | 4d |  |
| 42 | 13.2 | Enlace Comunicacion Multiconferencia | 1d? | 2010-06-14 | 2010-06-14 |  | 4d |  |
| 43 | 13.3 | Modulo monitorización de servicio | 1d? | 2010-06-14 | 2010-06-14 |  | 4d |  |
| 44 | 14 | **(USR10) Informacion Sanitaria General** | 1d? | 2010-06-16 | 2010-06-16 | 67, 74, 170 | 2d |  |
| 45 | 14.1 | Guardar Informacion Ciudadano | 1d? | 2010-06-16 | 2010-06-16 |  | 2d |  |
| 46 | 15 | **(USR11) Seguimiento de Patologias** | 1d? | 2010-06-15 | 2010-06-15 | 16, 31 | 2d | 0d |
| 47 | 15.1 | Buscar Campañas Abiertas | 1d? | 2010-06-15 | 2010-06-15 |  | 2d |  |
| 48 | 15.2 | **Gestionar Seguimiento** | 1d? | 2010-06-15 | 2010-06-15 |  | 2d |  |
| 49 | 15.2.1 | Visualizar Historial Pacientes | 1d? | 2010-06-15 | 2010-06-15 |  | 2d |  |
| 50 | 15.2.2 | Llamada al Paciente | 1d? | 2010-06-15 | 2010-06-15 |  | 2d |  |
| 51 | 15.3 | Desligar paciente de campaña | 1d? | 2010-06-15 | 2010-06-15 |  | 2d |  |
| 52 | 16 | **(USR12) Encuestas** | 1d? | 2010-06-04 | 2010-06-04 | 130 | 9d | 3d |
| 53 | 16.1 | Interfaz de Encuestas | 1d? | 2010-06-04 | 2010-06-04 |  | 9d |  |
| 54 | 16.2 | Contacto con Encuestado | 1d? | 2010-06-04 | 2010-06-04 |  | 9d |  |
| 55 | 16.3 | ABM Formulario De Encuesta | 1d? | 2010-06-04 | 2010-06-04 |  | 9d |  |

| ID | WBS | Task | Duration | Start | Finish | Predecessors | Total slack | Free slack |
| --- | --- | --- | --- | --- | --- | --- | --- | --- |
| 56 | 17 | **(USR13) Buscar Consultas** | 1d? | 2010-06-14 | 2010-06-14 | 71 | 3d | 0d |
| 57 | 17.1 | **Operativo de Busqueda** | 1d? | 2010-06-14 | 2010-06-14 |  | 3d |  |
| 58 | 17.1.1 | Buscar según distintos criterios | 1d? | 2010-06-14 | 2010-06-14 |  | 3d |  |
| 59 | 17.1.2 | Filtrar resultados de la busqueda según permisos del usuario | 1d? | 2010-06-14 | 2010-06-14 |  | 3d |  |
| 60 | 17.1.3 | Acotar resultados si los mismos sobrepasan el parametro configurable "n" | 1d? | 2010-06-14 | 2010-06-14 |  | 3d |  |
| 61 | 18 | **(USR14) Hacer Uso de Documentos** | 1d? | 2010-06-11 | 2010-06-11 | 23 | 0d |  |
| 62 | 18.1 | Creación y uso de Guias Interrogatorio | 1d? | 2010-06-11 | 2010-06-11 |  | 0d |  |
| 63 | 18.2 | Creación y uso Fichas Tematicas | 1d? | 2010-06-11 | 2010-06-11 |  | 0d |  |
| 64 | 18.3 | Creación y uso de Recursos | 1d? | 2010-06-11 | 2010-06-11 |  | 0d |  |
| 65 | 18.4 | Búsqueda y selección de documentos | 1d? | 2010-06-11 | 2010-06-11 |  | 0d |  |
| 66 | 18.5 | Apertura documentos | 1d? | 2010-06-11 | 2010-06-11 |  | 0d |  |
| 67 | 19 | **(USR15) Cerrar consulta y dar respuesta al ciudadano** | 1d? | 2010-06-11 | 2010-06-11 | 23 | 3d | 0d |
| 68 | 19.1 | Clasificar Finalizacion de Consulta | 1d? | 2010-06-11 | 2010-06-11 |  | 3d |  |
| 69 | 19.2 | Adición de motivo de cierre a la consulta | 1d? | 2010-06-11 | 2010-06-11 |  | 3d |  |
| 70 | 19.3 | Creación de clasificaciones ad-hoc | 1d? | 2010-06-11 | 2010-06-11 |  | 3d |  |
| 71 | 20 | **(USR16) Visualizar Consulta** | 1d? | 2010-06-11 | 2010-06-11 | 23 | 2d | 0d |
| 72 | 20.1 | Mostrar datos generales de la consulta | 1d? | 2010-06-11 | 2010-06-11 |  | 2d |  |
| 73 | 20.2 | Mostrar datos según el documento elegido | 1d? | 2010-06-11 | 2010-06-11 |  | 2d |  |
| 74 | 21 | **(USR17) Crear/Transferir Consulta** | 1d? | 2010-06-11 | 2010-06-11 | 23 | 2d | 0d |
| 75 | 21.1 | Crear Consulta | 1d? | 2010-06-11 | 2010-06-11 |  | 2d |  |
| 76 | 21.2 | Copiar consulta | 1d? | 2010-06-11 | 2010-06-11 |  | 2d |  |
| 77 | 21.3 | **Transferir Consulta** | 1d? | 2010-06-11 | 2010-06-11 |  | 2d |  |
| 78 | 21.3.1 | Localizar a otro operador del mismo perfil | 1d? | 2010-06-11 | 2010-06-11 |  | 2d |  |
| 79 | 22 | **(ADM01) Mantenimiento del Entorno, clasif y prioridades** | 1d? | 2010-06-03 | 2010-06-03 | 199 | 9d | 0d |
| 80 | 22.1 | Módulo de edición de parametros grales de la aplicación | 1d? | 2010-06-03 | 2010-06-03 |  | 9d |  |
| 81 | 22.2 | Módulo edición listas de clasificaciones (Códigos internos) | 1d? | 2010-06-03 | 2010-06-03 |  | 9d |  |

| ID | WBS | Task | Duration | Start | Finish | Predecessors | Total slack | Free slack |
| --- | --- | --- | --- | --- | --- | --- | --- | --- |
| 82 | 22.3 | **Módulo mantenimiento de la lista de espera** | 1d? | 2010-06-03 | 2010-06-03 |  | 9d |  |
| 83 | 22.3.1 | ABM de la lista de espera | 1d? | 2010-06-03 | 2010-06-03 |  | 9d |  |
| 84 | 22.3.2 | Módulo de gestión de prioridades sobre la lista de espera | 1d? | 2010-06-03 | 2010-06-03 |  | 9d |  |
| 85 | 22.4 | **Módulo mantenimiento de lineas de servicio** | 1d? | 2010-06-03 | 2010-06-03 |  | 9d |  |
| 86 | 22.4.1 | ABM lineas de servicio | 1d? | 2010-06-03 | 2010-06-03 |  | 9d |  |
| 87 | 22.4.2 | ABM servicios para una linea seleccionada | 1d? | 2010-06-03 | 2010-06-03 |  | 9d |  |
| 88 | 22.5 | **Módulo mantenimiento agendas** | 1d? | 2010-06-03 | 2010-06-03 |  | 9d |  |
| 89 | 22.5.1 | Asignar operadores a agenda | 1d? | 2010-06-03 | 2010-06-03 |  | 9d |  |
| 90 | 22.5.2 | ABM de usuarios de la agenda | 1d? | 2010-06-03 | 2010-06-03 |  | 9d |  |
| 91 | 22.5.3 | ABM citas de la agenda | 1d? | 2010-06-03 | 2010-06-03 |  | 9d |  |
| 92 | 22.6 | **Módulo mantenimiento BBDD** | 1d? | 2010-06-03 | 2010-06-03 |  | 9d |  |
| 93 | 22.6.1 | Módulo comprobación de formato de archivo | 1d? | 2010-06-03 | 2010-06-03 |  | 9d |  |
| 94 | 22.6.2 | Módulo actualización de BBDD | 1d? | 2010-06-03 | 2010-06-03 |  | 9d |  |
| 95 | 23 | **(ADM02) Extraccion de estadisticas y listados** | 1d? | 2010-06-04 | 2010-06-04 | 79 | 9d | 0d |
| 96 | 23.1 | Listados De Administración | 1d? | 2010-06-04 | 2010-06-04 |  | 9d |  |
| 97 | 23.2 | **Listados Comunes** | 1d? | 2010-06-04 | 2010-06-04 |  | 9d |  |
| 98 | 23.2.1 | Detalle de estado de finalización consulta/acción | 1d? | 2010-06-04 | 2010-06-04 |  | 9d |  |
| 99 | 23.2.2 | Listado de clasificaciones | 1d? | 2010-06-04 | 2010-06-04 |  | 9d |  |
| 100 | 23.2.3 | Listados de incidencias en las comunicaciones | 1d? | 2010-06-04 | 2010-06-04 |  | 9d |  |
| 101 | 23.2.4 | Ratios por usuario | 1d? | 2010-06-04 | 2010-06-04 |  | 9d |  |
| 102 | 23.2.5 | Finales de servicio | 1d? | 2010-06-04 | 2010-06-04 |  | 9d |  |
| 103 | 24 | **(ADM03) Mantenimiento de documentos** | 2d? | 2010-06-16 | 2010-06-17 | 111 | 0d |  |
| 104 | 24.1 | Creación y edición de documentos | 1d? | 2010-06-17 | 2010-06-17 | 108, 109, 110 | 0d |  |
| 105 | 24.2 | Borrado de documentos | 1d? | 2010-06-16 | 2010-06-16 |  | 1d |  |
| 106 | 24.3 | Clasificación de documentos | 1d? | 2010-06-16 | 2010-06-16 |  | 1d |  |
| 107 | 24.4 | Búsqueda de documentos | 1d? | 2010-06-16 | 2010-06-16 |  | 1d |  |
| 108 | 25 | (ADM04) Mantenimiento de Recursos | 1d? | 2010-06-14 | 2010-06-14 | 61 | 0d |  |
| 109 | 26 | (ADM05) Mantenimiento de guias de interrogatorio | 1d? | 2010-06-16 | 2010-06-16 | 111, 61 | 0d |  |
| 110 | 27 | (ADM06) Mantenimiento de Fichas tematicas | 1d? | 2010-06-16 | 2010-06-16 | 111, 61 | 0d |  |

| ID | WBS | Task | Duration | Start | Finish | Predecessors | Total slack | Free slack |
| --- | --- | --- | --- | --- | --- | --- | --- | --- |
| 111 | 28 | **(ADM07) Mantenimiento de relaciones sobre guias de interrogatorio y fichas tematicas** | 1d? | 2010-06-15 | 2010-06-15 | 108 | 0d |  |
| 112 | 28.1 | Adición de documentos a fichas temáticas | 1d? | 2010-06-15 | 2010-06-15 |  | 0d |  |
| 113 | 28.2 | Adición de documentos a guias de interrogatorio | 1d? | 2010-06-15 | 2010-06-15 |  | 0d |  |
| 114 | 29 | **(ADM08) Mantenimiento de encuestas** | 1d? | 2010-06-04 | 2010-06-04 | 130 | 10d |  |
| 115 | 29.1 | **Mantenimiento Indice de Encuestas** | 1d? | 2010-06-04 | 2010-06-04 |  | 10d |  |
| 116 | 29.1.1 | Mantener Ediciones | 1d? | 2010-06-04 | 2010-06-04 |  | 10d |  |
| 117 | 29.1.2 | Cierre de ediciones | 1d? | 2010-06-04 | 2010-06-04 |  | 10d |  |
| 118 | 29.2 | Asignación de formulario a encuesta | 1d? | 2010-06-04 | 2010-06-04 |  | 10d |  |
| 119 | 29.3 | Asignación de operadores a encuesta | 1d? | 2010-06-04 | 2010-06-04 |  | 10d |  |
| 120 | 29.4 | **Asignación lista de encuestados** | 1d? | 2010-06-04 | 2010-06-04 |  | 10d |  |
| 121 | 29.4.1 | Alta, baja de encuestados | 1d? | 2010-06-04 | 2010-06-04 |  | 10d |  |
| 122 | 29.4.2 | Asignación automática en base a un archivo de texto | 1d? | 2010-06-04 | 2010-06-04 |  | 10d |  |
| 123 | 29.5 | Publicar Encuestas | 1d? | 2010-06-04 | 2010-06-04 |  | 10d |  |
| 124 | 30 | **(ADM09) Mantenimiento de seguimiento de patologias** | 1d? | 2010-06-04 | 2010-06-04 | 79 | 9d | 0d |
| 125 | 30.1 | Mantenimiento Indice de campañas de seguimiento | 1d? | 2010-06-04 | 2010-06-04 |  | 9d |  |
| 126 | 30.2 | Asignación de formulario a campaña de seguimiento | 1d? | 2010-06-04 | 2010-06-04 |  | 9d |  |
| 127 | 30.3 | Asignación de operadores a campaña de seguimiento | 1d? | 2010-06-04 | 2010-06-04 |  | 9d |  |
| 128 | 30.4 | Asignación de listas de pacientes | 1d? | 2010-06-04 | 2010-06-04 |  | 9d |  |
| 129 | 30.5 | Activación/ Desactivación de campañas | 1d? | 2010-06-04 | 2010-06-04 |  | 9d |  |
| 130 | 31 | **(ADM10) Creacion de formularios de encuesta y seguimiento** | 1d? | 2010-06-03 | 2010-06-03 | 199 | 9d | 0d |
| 131 | 31.1 | Mantener Indice de Encuesta | 1d? | 2010-06-03 | 2010-06-03 |  | 9d |  |
| 132 | 31.2 | Crear y Editar Encuestas | 1d? | 2010-06-03 | 2010-06-03 |  | 9d |  |
| 133 | 32 | **(ADM11) Mantenimiento de usuarios, perfiles y permisos** | 1d? | 2010-06-10 | 2010-06-10 | 1 | 5d | 0d |
| 134 | 32.1 | Mantenimiento Opciones Funcionales | 1d? | 2010-06-10 | 2010-06-10 |  | 5d |  |

| ID | WBS | Task | Duration | Start | Finish | Predecessors | Total slack |
| --- | --- | --- | --- | --- | --- | --- | --- |
| 135 | 32.2 | **Mantener Perfiles Trabajo** | 1d? | 2010-06-10 | 2010-06-10 |  | 5d |
| 136 | 32.2.1 | Alta, modificación de perfiles | 1d? | 2010-06-10 | 2010-06-10 |  | 5d |
| 137 | 32.2.2 | ABM de opciones funcionales a perfil | 1d? | 2010-06-10 | 2010-06-10 |  | 5d |
| 138 | 32.2.3 | Adición de responsabilidades a opciones funcionales | 1d? | 2010-06-10 | 2010-06-10 |  | 5d |
| 139 | 32.3 | **Mantener Usuarios** | 1d? | 2010-06-10 | 2010-06-10 |  | 5d |
| 140 | 32.3.1 | Creación/gestion de usuarios | 1d? | 2010-06-10 | 2010-06-10 |  | 5d |
| 141 | 32.3.2 | Asiganción de perfil a usuario | 1d? | 2010-06-10 | 2010-06-10 |  | 5d |
| 142 | 32.3.3 | Asignación de agendas a usuario | 1d? | 2010-06-10 | 2010-06-10 |  | 5d |
| 143 | 33 | **(ADM12) Listado de acciones proactivas** | 1d? | 2010-06-07 | 2010-06-07 | 95, 124 | 9d |
| 144 | 33.1 | Módulo de elaboraciónde informes de estado de campaña de seguimiento | 1d? | 2010-06-07 | 2010-06-07 |  | 9d |
| 145 | 33.2 | Módulo de elaboración de informes de estado de encuesta | 1d? | 2010-06-07 | 2010-06-07 |  | 9d |
| 146 | 33.3 | Módulo de elaboración de informes de ediciones de encuestas | 1d? | 2010-06-07 | 2010-06-07 |  | 9d |
| 147 | 33.4 | Módulo de elaboración de listados de campañas de seguimiento | 1d? | 2010-06-07 | 2010-06-07 |  | 9d |
| 148 | 33.5 | Módulo de elaboración de listados de información de encuestas | 1d? | 2010-06-07 | 2010-06-07 |  | 9d |
| 149 | 34 | **(ADM13) Listados de documentos** | 1d? | 2010-06-18 | 2010-06-18 | 95, 103 | 0d |
| 150 | 34.1 | Elaboración de listado de configuración | 1d? | 2010-06-18 | 2010-06-18 |  | 0d |
| 151 | 34.2 | Elaboración de listado de uso | 1d? | 2010-06-18 | 2010-06-18 |  | 0d |
| 152 | 34.3 | Elaboración de listado de asociaciones | 1d? | 2010-06-18 | 2010-06-18 |  | 0d |
| 153 | 35 | **(ADM14) Listado sobre consultas** | 1d? | 2010-06-11 | 2010-06-11 | 95, 23 | 5d |
| 154 | 35.1 | Módulo de obtención de listados de consulta por ciudadano | 1d? | 2010-06-11 | 2010-06-11 |  | 5d |
| 155 | 35.2 | Módulo de obtención de listados de consultas con cierre principal | 1d? | 2010-06-11 | 2010-06-11 |  | 5d |
| 156 | 35.3 | Módulo de obtención de listados de consulta con cierre secundario | 1d? | 2010-06-11 | 2010-06-11 |  | 5d |
| 157 | 35.4 | Módulo de obtención de listados de consulta por motivo de cierre | 1d? | 2010-06-11 | 2010-06-11 |  | 5d |
| 158 | 35.5 | Módulo de obtención de listado de resumen de consultas por servicio | 1d? | 2010-06-11 | 2010-06-11 |  | 5d |
| 159 | 35.6 | Módulo de obtención de listado de consultas por área geográfica | 1d? | 2010-06-11 | 2010-06-11 |  | 5d |
| 160 | 35.7 | Módulo de obtención de listado de consultas por usuario | 1d? | 2010-06-11 | 2010-06-11 |  | 5d |
| 161 | 35.8 | Módulo de obtención de listado de consultas pendientes | 1d? | 2010-06-11 | 2010-06-11 |  | 5d |

| ID | WBS | Task | Duration | Start | Finish | Predecessors | Total slack | Free slack |
| --- | --- | --- | --- | --- | --- | --- | --- | --- |
| 162 | 36 | **(ADM15) Mantener Asignaciones TSI** | 1d? | 2010-06-15 | 2010-06-15 | 79, 35 | 3d |  |
| 163 | 36.1 | **Módulo de envío de datos a CatSalut** | 1d? | 2010-06-15 | 2010-06-15 |  | 3d |  |
| 164 | 36.1.1 | Recolección de datos de operaciones TSI pendientes | 1d? | 2010-06-15 | 2010-06-15 |  | 3d |  |
| 165 | 36.1.2 | Migración de los datos a archivo TXT | 1d? | 2010-06-15 | 2010-06-15 |  | 3d |  |
| 166 | 36.1.3 | Interface de comunicación con CatSalut | 1d? | 2010-06-15 | 2010-06-15 |  | 3d |  |
| 167 | 37 | **(ADM16) Asignar documentos a acciones** | 1d? | 2010-06-18 | 2010-06-18 | 103 | 0d |  |
| 168 | 37.1 | Creación/eliminación de asociaciones | 1d? | 2010-06-18 | 2010-06-18 |  | 0d |  |
| 169 | 37.2 | Cadicidad de asociaciones | 1d? | 2010-06-18 | 2010-06-18 |  | 0d |  |
| 170 | 38 | **(INT01) Direcciones de farmacias, CAP y otra informacion breve** | 1d? | 2010-06-15 | 2010-06-15 | 11, 61, 79 | 2d | 0d |
| 171 | 38.1 | Trabajo con listas de resultados | 1d? | 2010-06-15 | 2010-06-15 |  | 2d |  |
| 172 | 39 | **(SIS01) Trazabilidad y registro de uso** | 5d? | 2010-06-10 | 2010-06-16 | 1 | 2d |  |
| 173 | 39.1 | Control Acceso a Consultas | 1d? | 2010-06-11 | 2010-06-11 | 23 | 5d |  |
| 174 | 39.2 | Control Acceso a Encuestas | 1d? | 2010-06-10 | 2010-06-10 | 52 | 6d |  |
| 175 | 39.3 | Control General Acceso al Sistema | 1d? | 2010-06-11 | 2010-06-11 | 133 | 5d |  |
| 176 | 39.4 | Control Acceso a Campañas de Seguimiento | 1d? | 2010-06-16 | 2010-06-16 | 46 | 2d |  |
| 177 | 39.5 | Control Acceso a Documentos | 1d? | 2010-06-14 | 2010-06-14 | 61 | 4d |  |
| 178 | 39.6 | Control Acceso a Recursos Internos | 1d? | 2010-06-10 | 2010-06-10 |  | 6d |  |
| 179 | 39.7 | Historial de Consultas | 1d? | 2010-06-10 | 2010-06-10 |  | 6d |  |
| 180 | 40 | **(ISC01) Transferir info, comunicacion a STARS** | 1d? | 2010-06-10 | 2010-06-10 | 1 | 6d |  |
| 181 | 40.1 | Recibir información del sistema de comunicaciones | 1d? | 2010-06-10 | 2010-06-10 |  | 6d |  |
| 182 | 41 | **(ISC02) Iniciar llamada desde STARS** | 1d? | 2010-06-10 | 2010-06-10 | 1 | 6d |  |
| 183 | 41.1 | Lanzamiento de petición de comunicación | 1d? | 2010-06-10 | 2010-06-10 |  | 6d |  |
| 184 | 42 | **(ISC03) Informacion encuesta** | 1d? | 2010-06-04 | 2010-06-04 | 130 | 10d |  |
| 185 | 42.1 | Activación actividad de encuesta | 1d? | 2010-06-04 | 2010-06-04 |  | 10d |  |
| 186 | 43 | ABM Consultas | 1d? | 2010-06-11 | 2010-06-11 | 23 | 5d |  |
| 187 | 44 | ABM Usuarios | 1d? | 2010-06-11 | 2010-06-11 | 3 | 4d | 0d |
| 188 | 45 | Proteccion de Acceso | 1d? | 2010-06-14 | 2010-06-14 | 187 | 4d |  |
| 189 | 46 | ABM Fichas / Guias / Recursos | 1d? | 2010-06-15 | 2010-06-15 | 108 | 3d |  |
| 190 | 47 | ABM Cuestionarios | 1d? | 2010-06-04 | 2010-06-04 | 130 | 10d |  |
| 191 | 48 | Interfaz General | 1d? | 2010-06-10 | 2010-06-10 | 1 | 6d |  |
| 192 | 49 | Interfaz Para Usuario Avanzado | 1d? | 2010-06-04 | 2010-06-04 | 79 | 10d |  |
| 193 | 50 | Interfaz de Listados para ADM02 | 1d? | 2010-06-07 | 2010-06-07 | 95 | 9d |  |
| 194 | 51 | Interfaz Mantenimiento Usuarios y Perfiles | 1d? | 2010-06-11 | 2010-06-11 | 133 | 5d |  |
| 195 | 52 | Interfaz Direcciones INT01 | 1d? | 2010-06-16 | 2010-06-16 | 170 | 2d |  |
| 196 | 53 | ABM Enfermedades / Centros Salud | 1d? | 2010-06-16 | 2010-06-16 | 170 | 2d |  |
| 197 | 54 | Listado de Usuarios y Perfiles | 1d? | 2010-06-11 | 2010-06-11 | 133 | 5d |  |
| 198 | 55 | Interface con sistema de comunicaciones (ISC01, ISC02, ISC03) | 1d? | 2010-06-10 | 2010-06-10 | 1 | 6d |  |
| 199 | 56 | Arquitectura General / Configuracion Ambientes | 15d | 2010-05-13 | 2010-06-02 | 200 | 0d |  |

| ID | WBS | Task | Duration | Start | Finish | Total slack |
| --- | --- | --- | --- | --- | --- | --- |
| 200 | 57 | **Tareas IT Sobre Nuestra Empresa** | 5d | 2010-05-06 | 2010-05-12 | 0d |
| 201 | 57.1 | Compra Equipos Necesarios | 3d | 2010-05-06 | 2010-05-10 | 2d |
| 202 | 57.2 | **Infraestructura** | 5d | 2010-05-06 | 2010-05-12 | 0d |
| 203 | 57.2.1 | Preparacion de Ambientes en servidores | 1d | 2010-05-06 | 2010-05-06 | 4d |
| 204 | 57.2.2 | Instalacion y Configuracion de Servidor DEV | 3d | 2010-05-06 | 2010-05-10 | 2d |
| 205 | 57.2.3 | Instalacion y Configuracion de Servidores de Usos Multiples | 5d | 2010-05-06 | 2010-05-12 | 0d |
| 206 | 57.3 | **Redes** | 3d | 2010-05-06 | 2010-05-10 | 2d |
| 207 | 57.3.1 | Configuracion del FW | 3d | 2010-05-06 | 2010-05-10 | 2d |
| 208 | 57.4 | Instalacion de pcs nuevos usuarios | 5d | 2010-05-06 | 2010-05-12 | 0d |
